# Year 3 Project Plan 7 30

How a schedule from MS Project changed from version to version. A marks actual dates.

## Version 1 (saved 2008-08-11)

Note of the change: Updated till 11 Aug 08

| ID | WBS | Task | Duration | Start | Finish | Predecessors | Complete | Total float | Constraint |
| --- | --- | --- | --- | --- | --- | --- | --- | --- | --- |
| 1 | 1 | **Milestone 1** | 40d? | 2008-07-14 A | 2008-09-08 |  | 61% | 0d |  |
| 2 | 1.1 | **caB2B_Y3_020Technology Stack Migration** | 25d? | 2008-07-14 A | 2008-08-18 |  | 90% | 15d |  |
| 3 | 1.1.1 | **Migrate to Jboss 4.0.5 GA** | 2d | 2008-07-14 A | 2008-07-15 A |  | 100% |  |  |
| 4 |  | Changes in existing codebase | 1d | 2008-07-14 A | 2008-07-14 A |  | 100% |  | start no earlier than 2008-07-14 |
| 5 |  | Changes in deployment process | 1d | 2008-07-15 A | 2008-07-15 A | 4 | 100% |  |  |
| 6 | 1.1.2 | **Migrate to EJB 3.0** | 13d | 2008-07-16 A | 2008-08-01 A |  | 100% |  |  |
| 7 |  | Understanding EJB 3.0 | 5d | 2008-07-16 A | 2008-07-22 A | 5 | 100% |  |  |
| 8 |  | Changes in existing codebase | 3d | 2008-07-23 A | 2008-07-25 A | 7 | 100% |  |  |
| 9 |  | Changes in deployment process | 1d | 2008-07-28 A | 2008-07-28 A | 8 | 100% |  |  |
| 10 |  | Testing and verifications | 4d | 2008-07-29 A | 2008-08-01 A | 9 | 100% |  |  |
| 11 |  | Reverting back EJB 3.0 changes | 3d | 2008-08-04 A | 2008-08-06 A | 6 | 100% |  |  |
| 12 |  | Query Module Release UI | 1d? | 2008-08-18 | 2008-08-18 | 84 |  | 15d |  |
| 13 |  | Query Module Release backend | 1d? | 2008-07-14 | 2008-07-14 |  |  | 27d |  |
| 14 | 1.2 | **Session Management of EJB (For user based expr and queries)** | 12d | 2008-08-07 A | 2008-08-25 |  | 60% | 0d |  |
| 15 |  | Understand stateful EJBs | 5d | 2008-08-07 A | 2008-08-25 | 13 | 60% | 0d |  |
| 16 | 1.3 | **caB2B_Y3_002-User based experiments** | 5d? | 2008-08-26 | 2008-09-01 | 14 |  | 0d |  |
| 17 |  | Requirement | 1d? | 2008-08-26 | 2008-08-26 |  |  | 0d |  |
| 18 |  | Design | 1d? | 2008-08-27 | 2008-08-27 | 17 |  | 0d |  |
| 19 | 1.3.3 | **Implementation** | 3d? | 2008-08-28 | 2008-09-01 |  |  | 0d |  |
| 20 |  | Saving experiments on user basis | 1d? | 2008-08-28 | 2008-08-28 | 18 |  | 0d |  |
| 21 |  | Changes needed at client-server interface to pass user info | 1d? | 2008-08-29 | 2008-08-29 | 20 |  | 0d |  |
| 22 |  | Fetch and display experiments based on user | 1d? | 2008-09-01 | 2008-09-01 | 21 |  | 0d |  |
| 23 | 1.4 | **caB2B_Y3_003-User based saved queries** | 5d? | 2008-09-02 | 2008-09-08 |  |  | 0d |  |
| 24 |  | Requirement | 1d? | 2008-09-02 | 2008-09-02 | 16 |  | 0d |  |
| 25 |  | Design | 1d? | 2008-09-03 | 2008-09-03 | 24 |  | 0d |  |
| 26 | 1.4.3 | **Implementation** | 3d? | 2008-09-04 | 2008-09-08 |  |  | 0d |  |
| 27 |  | Saving queries on user basis | 1d? | 2008-09-04 | 2008-09-04 | 25 |  | 0d |  |
| 28 |  | Changes needed at client-server interface to pass user info | 1d? | 2008-09-05 | 2008-09-05 | 27 |  | 0d |  |
| 29 |  | Fetch and display experiments based on user | 1d? | 2008-09-08 | 2008-09-08 | 28 |  | 0d |  |
| 30 | 1.5 | **caB2B_Y3_001-Automatic cache update between admin and cab2b server** | 20d? | 2008-07-14 | 2008-08-08 |  |  | 20d |  |
| 31 |  | Requirement | 1d? | 2008-07-14 | 2008-07-14 |  |  | 39d |  |
| 32 | 1.5.2 | **Investigation** | 1d? | 2008-07-14 | 2008-07-14 |  |  | 39d |  |
| 33 |  | Investigate Component | 1d? | 2008-07-14 | 2008-07-14 |  |  | 39d |  |
| 34 |  | Developing Prototype | 1d? | 2008-07-14 | 2008-07-14 |  |  | 39d |  |
| 35 |  | Design | 1d? | 2008-07-14 | 2008-07-14 |  |  | 39d |  |
| 36 | 1.5.3 | **Implementation** | 20d? | 2008-07-14 | 2008-08-08 |  |  | 20d |  |
| 37 |  | Separating out Implementation Deployment Unit | 1d? | 2008-07-14 | 2008-07-14 |  |  | 39d |  |
| 38 |  | Changes needed in Deployment Process | 1d? | 2008-08-08 | 2008-08-08 |  |  | 20d | finish no earlier than 2008-08-08 |
| 39 | 1.5.4 | **Representing grid user in caB2B** | 1d? | 2008-07-14 | 2008-07-14 |  |  | 39d |  |
| 40 |  | Investigating APIs needed | 1d? | 2008-07-14 | 2008-07-14 |  |  | 39d |  |
| 41 |  | Design to store user identity locally | 1d? | 2008-07-14 | 2008-07-14 |  |  | 39d |  |
| 42 |  | Design review by external parties | 1d? | 2008-07-14 | 2008-07-14 |  |  | 39d |  |
| 43 | 1.6 | **Schedular component + notification functionality** | 1d? | 2008-07-14 | 2008-07-14 |  |  | 39d |  |
| 44 | 1.6.1 | **Schedular** | 1d? | 2008-07-14 | 2008-07-14 |  |  | 39d |  |
| 45 |  | Investigate Component | 1d? | 2008-07-14 | 2008-07-14 |  |  | 39d |  |
| 46 |  | Developing Prototype | 1d? | 2008-07-14 | 2008-07-14 |  |  | 39d |  |
| 47 | 1.6.2 | **Notification** | 1d? | 2008-07-14 | 2008-07-14 |  |  | 39d |  |
| 48 |  | UI mockup | 1d? | 2008-07-14 | 2008-07-14 |  |  | 39d |  |
| 49 |  | UI implementation | 1d? | 2008-07-14 | 2008-07-14 |  |  | 39d |  |
| 50 |  | Backend Implementation | 1d? | 2008-07-14 | 2008-07-14 |  |  | 39d |  |
| 51 | 1.7 | **caB2B_Y3_004-Asynchronous execution of queries** | 1d? | 2008-07-14 | 2008-07-14 |  |  | 39d |  |
| 52 |  | Requirement | 1d? | 2008-07-14 | 2008-07-14 |  |  | 39d |  |
| 53 |  | Design | 1d? | 2008-07-14 | 2008-07-14 |  |  | 39d |  |
| 54 | 1.7.3 | **Implementation** | 1d? | 2008-07-14 | 2008-07-14 |  |  | 39d |  |
| 55 |  | Represent schedule | 1d? | 2008-07-14 | 2008-07-14 |  |  | 39d |  |
| 56 |  | Storing schedule and firing jobs | 1d? | 2008-07-14 | 2008-07-14 |  |  | 39d |  |
| 57 |  | Implementing job for query execution | 1d? | 2008-07-14 | 2008-07-14 |  |  | 39d |  |
| 58 | 1.8 | **caB2B_Y3_005-User to override the URLs** | 22d? | 2008-07-14 | 2008-08-12 |  |  | 18d |  |
| 59 |  | Requirement | 1d? | 2008-08-12 | 2008-08-12 | 91 |  | 18d |  |
| 60 | 1.8.2 | **Investigation** | 1d? | 2008-07-14 | 2008-07-14 |  |  | 39d |  |
| 61 |  | Investigate Component | 1d? | 2008-07-14 | 2008-07-14 |  |  | 39d |  |
| 62 |  | Developing Prototype | 1d? | 2008-07-14 | 2008-07-14 |  |  | 39d |  |
| 63 |  | Design | 1d? | 2008-07-14 | 2008-07-14 |  |  | 39d |  |
| 64 | 1.8.4 | **Implementation** | 20d? | 2008-07-14 | 2008-08-08 |  |  | 20d |  |
| 65 |  | Separating out Implementation Deployment Unit | 1d? | 2008-07-14 | 2008-07-14 |  |  | 39d |  |
| 66 |  | Changes needed in Deployment Process | 1d? | 2008-08-08 | 2008-08-08 |  |  | 20d | finish no earlier than 2008-08-08 |
| 67 | 1.9 | **caB2B_Y3_006-Home page experiments links functional + show all** | 12d | 2008-07-14 A | 2008-07-29 A |  | 100% |  |  |
| 68 |  | Requirement | 1d | 2008-07-14 A | 2008-07-14 A |  | 100% |  | start no earlier than 2008-07-14 |
| 69 |  | UI Mockups | 1d | 2008-07-15 A | 2008-07-15 A | 68 | 100% |  |  |
| 70 |  | Design | 1d | 2008-07-16 A | 2008-07-16 A | 69 | 100% |  |  |

| ID | WBS | Task | Duration | Start | Finish | Predecessors | Complete | Total float | Constraint |
| --- | --- | --- | --- | --- | --- | --- | --- | --- | --- |
| 71 | 1.9.4 | **Implementation** | 9d | 2008-07-17 A | 2008-07-29 A |  | 100% |  |  |
| 72 |  | Showing recent experiments | 2d | 2008-07-17 A | 2008-07-18 A | 70 | 100% |  |  |
| 73 |  | Making links in stack box funtional | 2d | 2008-07-21 A | 2008-07-22 A | 72 | 100% |  |  |
| 74 |  | Show All to display all experiments on right side | 3d | 2008-07-23 A | 2008-07-25 A | 73 | 100% |  |  |
| 75 |  | Click on any experiment from show all table to open experiment | 2d | 2008-07-28 A | 2008-07-29 A | 74 | 100% |  |  |
| 76 | 1.10 | **caB2B_Y3_007-Home page category links functional + show all** | 12d | 2008-07-30 A | 2008-08-14 A |  | 100% |  |  |
| 77 |  | Requirement | 1d | 2008-07-30 A | 2008-07-30 A | 67 | 100% |  |  |
| 78 |  | UI Mockups | 1d | 2008-07-31 A | 2008-07-31 A | 77 | 100% |  |  |
| 79 |  | Design | 1d | 2008-08-01 A | 2008-08-01 A | 78 | 100% |  |  |
| 80 | 1.10.4 | **Implementation** | 9d | 2008-08-04 A | 2008-08-14 A |  | 100% |  |  |
| 81 |  | Showing all categories | 2d | 2008-08-04 A | 2008-08-05 A | 79 | 100% |  |  |
| 82 |  | Clicking on category in stack box to open add limit page | 2d | 2008-08-06 A | 2008-08-07 A | 81 | 100% |  |  |
| 83 |  | Show All to display all categories on right side | 3d | 2008-08-08 A | 2008-08-12 A | 82 | 100% |  |  |
| 84 |  | Click on any category from show all table to open it in add limit page | 2d | 2008-08-13 A | 2008-08-14 A | 83 | 100% |  |  |
| 85 | 1.11 | **caB2B_Y3_008-Popular categories** | 16d? | 2008-07-28 A | 2008-08-19 |  | 73% | 14d |  |
| 86 |  | Requirement | 8d | 2008-07-28 A | 2008-08-06 A |  | 100% |  | start no earlier than 2008-07-28 |
| 87 |  | Design | 5d | 2008-08-07 A | 2008-08-14 | 86 | 60% | 14d | finish no earlier than 2008-08-14 |
| 88 | 1.11.3 | **Implementation** | 2d? | 2008-08-18 | 2008-08-19 |  |  | 14d |  |
| 89 |  | Calculating popularity | 1d? | 2008-08-18 | 2008-08-18 | 87 |  | 14d |  |
| 90 |  | Storing and using popularity | 1d? | 2008-08-19 | 2008-08-19 | 89 |  | 14d | finish no earlier than 2008-08-08 |
| 91 | 1.12 | **caB2B_Y3_009-Fixing the current washU services for index service** | 21d | 2008-07-14 A | 2008-08-11 |  | 76% | 18d |  |
| 92 |  | Learning service, discovery and metadata | 5d | 2008-07-14 | 2008-07-18 |  |  | 34d |  |
| 93 |  | Finding the cause | 5d | 2008-07-21 A | 2008-07-25 A | 92 | 100% |  |  |
| 94 |  | Investigating on fixes / solutions | 5d | 2008-07-28 A | 2008-08-01 A | 93 | 100% |  |  |
| 95 |  | Fixing Services | 6d | 2008-08-04 A | 2008-08-11 A | 94 | 100% |  |  |
| 96 | 1.13 | **Bugs** | 2d | 2008-08-07 A | 2008-08-08 A |  | 100% |  |  |
| 97 |  | Bug# 8070 | 2d | 2008-08-07 A | 2008-08-08 A |  | 100% |  | start no earlier than 2008-08-07 |
| 98 | 2 | **Milestone 2** | 15d? | 2008-07-14 | 2008-08-01 |  |  | 25d |  |
| 99 | 2.1 | **caB2B_Y3_010-Support WS enumerations data services** | 1d? | 2008-07-14 | 2008-07-14 |  |  | 39d |  |
| 100 |  | Requirement | 1d? | 2008-07-14 | 2008-07-14 |  |  | 39d |  |
| 101 | 2.1.2 | **Investigation** | 1d? | 2008-07-14 | 2008-07-14 |  |  | 39d |  |
| 102 |  | Investigate Component | 1d? | 2008-07-14 | 2008-07-14 |  |  | 39d |  |
| 103 |  | Developing Prototype | 1d? | 2008-07-14 | 2008-07-14 |  |  | 39d |  |
| 104 |  | Design | 1d? | 2008-07-14 | 2008-07-14 |  |  | 39d |  |
| 105 | 2.1.4 | **Implementation** | 1d? | 2008-07-14 | 2008-07-14 |  |  | 39d |  |
| 106 |  | Separating out Implementation Deployment Unit | 1d? | 2008-07-14 | 2008-07-14 |  |  | 39d |  |
| 107 |  | Changes needed in Deployment Process | 1d? | 2008-07-14 | 2008-07-14 |  |  | 39d |  |
| 108 | 2.2 | **caB2B_Y3_011-Need to revisit save / not save strategies-yet to clarify** | 1d? | 2008-07-14 | 2008-07-14 |  |  | 39d |  |
| 109 |  | Requirement | 1d? | 2008-07-14 | 2008-07-14 |  |  | 39d |  |
| 110 | 2.2.2 | **Investigation** | 1d? | 2008-07-14 | 2008-07-14 |  |  | 39d |  |
| 111 |  | Investigate Component | 1d? | 2008-07-14 | 2008-07-14 |  |  | 39d |  |
| 112 |  | Developing Prototype | 1d? | 2008-07-14 | 2008-07-14 |  |  | 39d |  |
| 113 |  | Design | 1d? | 2008-07-14 | 2008-07-14 |  |  | 39d |  |
| 114 | 2.2.4 | **Implementation** | 1d? | 2008-07-14 | 2008-07-14 |  |  | 39d |  |
| 115 |  | Separating out Implementation Deployment Unit | 1d? | 2008-07-14 | 2008-07-14 |  |  | 39d |  |
| 116 |  | Changes needed in Deployment Process | 1d? | 2008-07-14 | 2008-07-14 |  |  | 39d |  |
| 117 | 2.3 | **caB2B_Y3_012-Asynchronous of save data list** | 15d? | 2008-07-14 | 2008-08-01 |  |  | 25d |  |
| 118 |  | Requirement | 1d? | 2008-07-14 | 2008-07-14 |  |  | 39d |  |
| 119 | 2.3.2 | **Investigation** | 1d? | 2008-07-14 | 2008-07-14 |  |  | 39d |  |
| 120 |  | Investigate Component | 1d? | 2008-07-14 | 2008-07-14 |  |  | 39d |  |
| 121 |  | Developing Prototype | 1d? | 2008-07-14 | 2008-07-14 |  |  | 39d |  |
| 122 |  | Design | 1d? | 2008-07-14 | 2008-07-14 |  |  | 39d |  |
| 123 | 2.3.4 | **Implementation** | 15d? | 2008-07-14 | 2008-08-01 |  |  | 25d |  |
| 124 |  | Separating out Implementation Deployment Unit | 1d? | 2008-07-14 | 2008-07-14 |  |  | 39d |  |
| 125 |  | Changes needed in Deployment Process | 1d? | 2008-08-01 | 2008-08-01 |  |  | 25d | finish no earlier than 2008-08-01 |
| 126 | 2.4 | **caB2B_Y3_013-intermodel joins for a group like washU, NCICB , Intermodel joins with pair of service instances** | 1d? | 2008-07-14 | 2008-07-14 |  |  | 39d |  |
| 127 |  | Requirement | 1d? | 2008-07-14 | 2008-07-14 |  |  | 39d |  |
| 128 | 2.4.2 | **Investigation** | 1d? | 2008-07-14 | 2008-07-14 |  |  | 39d |  |
| 129 |  | Investigate Component | 1d? | 2008-07-14 | 2008-07-14 |  |  | 39d |  |
| 130 |  | Developing Prototype | 1d? | 2008-07-14 | 2008-07-14 |  |  | 39d |  |
| 131 |  | Design | 1d? | 2008-07-14 | 2008-07-14 |  |  | 39d |  |
| 132 | 2.4.4 | **Implementation** | 1d? | 2008-07-14 | 2008-07-14 |  |  | 39d |  |
| 133 |  | Separating out Implementation Deployment Unit | 1d? | 2008-07-14 | 2008-07-14 |  |  | 39d |  |
| 134 |  | Changes needed in Deployment Process | 1d? | 2008-07-14 | 2008-07-14 |  |  | 39d |  |
| 135 | 2.5 | **caB2B_Y3_014-Experiments with multiple datalists, edit expr to add data list with way to re-query (more likely)** | 1d? | 2008-07-14 | 2008-07-14 |  |  | 39d |  |
| 136 |  | Requirement | 1d? | 2008-07-14 | 2008-07-14 |  |  | 39d |  |
| 137 | 2.5.2 | **Investigation** | 1d? | 2008-07-14 | 2008-07-14 |  |  | 39d |  |
| 138 |  | Investigate Component | 1d? | 2008-07-14 | 2008-07-14 |  |  | 39d |  |
| 139 |  | Developing Prototype | 1d? | 2008-07-14 | 2008-07-14 |  |  | 39d |  |
| 140 |  | Design | 1d? | 2008-07-14 | 2008-07-14 |  |  | 39d |  |

| ID | WBS | Task | Duration | Start | Finish | Total float |
| --- | --- | --- | --- | --- | --- | --- |
| 141 | 2.5.4 | **Implementation** | 1d? | 2008-07-14 | 2008-07-14 | 39d |
| 142 |  | Separating out Implementation Deployment Unit | 1d? | 2008-07-14 | 2008-07-14 | 39d |
| 143 |  | Changes needed in Deployment Process | 1d? | 2008-07-14 | 2008-07-14 | 39d |
| 144 | 2.6 | **caB2B_Y3_015-Support for getting probe data from caArray. For CEL files no need to bring data back to cab2b server, just get the URL and send it to analytical service** | 1d? | 2008-07-14 | 2008-07-14 | 39d |
| 145 |  | Requirement | 1d? | 2008-07-14 | 2008-07-14 | 39d |
| 146 | 2.6.2 | **Investigation** | 1d? | 2008-07-14 | 2008-07-14 | 39d |
| 147 |  | Investigate Component | 1d? | 2008-07-14 | 2008-07-14 | 39d |
| 148 |  | Developing Prototype | 1d? | 2008-07-14 | 2008-07-14 | 39d |
| 149 |  | Design | 1d? | 2008-07-14 | 2008-07-14 | 39d |
| 150 | 2.6.4 | **Implementation** | 1d? | 2008-07-14 | 2008-07-14 | 39d |
| 151 |  | Separating out Implementation Deployment Unit | 1d? | 2008-07-14 | 2008-07-14 | 39d |
| 152 |  | Changes needed in Deployment Process | 1d? | 2008-07-14 | 2008-07-14 | 39d |
| 153 | 2.7 | **caB2B_Y3_016-Support basic analytical services (support for ICR services, if needed, do customizations)** | 1d? | 2008-07-14 | 2008-07-14 | 39d |
| 154 |  | Requirement | 1d? | 2008-07-14 | 2008-07-14 | 39d |
| 155 | 2.7.2 | **Investigation** | 1d? | 2008-07-14 | 2008-07-14 | 39d |
| 156 |  | Investigate Component | 1d? | 2008-07-14 | 2008-07-14 | 39d |
| 157 |  | Developing Prototype | 1d? | 2008-07-14 | 2008-07-14 | 39d |
| 158 |  | Design | 1d? | 2008-07-14 | 2008-07-14 | 39d |
| 159 | 2.7.4 | **Implementation** | 1d? | 2008-07-14 | 2008-07-14 | 39d |
| 160 |  | Separating out Implementation Deployment Unit | 1d? | 2008-07-14 | 2008-07-14 | 39d |
| 161 |  | Changes needed in Deployment Process | 1d? | 2008-07-14 | 2008-07-14 | 39d |
| 162 | 2.8 | **caB2B_Y3_017-Viewers for supported analytical services** | 1d? | 2008-07-14 | 2008-07-14 | 39d |
| 163 |  | Requirement | 1d? | 2008-07-14 | 2008-07-14 | 39d |
| 164 | 2.8.2 | **Investigation** | 1d? | 2008-07-14 | 2008-07-14 | 39d |
| 165 |  | Investigate Component | 1d? | 2008-07-14 | 2008-07-14 | 39d |
| 166 |  | Developing Prototype | 1d? | 2008-07-14 | 2008-07-14 | 39d |
| 167 |  | Design | 1d? | 2008-07-14 | 2008-07-14 | 39d |
| 168 | 2.8.4 | **Implementation** | 1d? | 2008-07-14 | 2008-07-14 | 39d |
| 169 |  | Separating out Implementation Deployment Unit | 1d? | 2008-07-14 | 2008-07-14 | 39d |
| 170 |  | Changes needed in Deployment Process | 1d? | 2008-07-14 | 2008-07-14 | 39d |
| 171 | 2.9 | **caB2B_Y3_018-Returning result of a federated query even if only one of the instances is failed** | 1d? | 2008-07-14 | 2008-07-14 | 39d |
| 172 |  | Requirement | 1d? | 2008-07-14 | 2008-07-14 | 39d |
| 173 | 2.9.2 | **Investigation** | 1d? | 2008-07-14 | 2008-07-14 | 39d |
| 174 |  | Investigate Component | 1d? | 2008-07-14 | 2008-07-14 | 39d |
| 175 |  | Developing Prototype | 1d? | 2008-07-14 | 2008-07-14 | 39d |
| 176 |  | Design | 1d? | 2008-07-14 | 2008-07-14 | 39d |
| 177 | 2.9.4 | **Implementation** | 1d? | 2008-07-14 | 2008-07-14 | 39d |
| 178 |  | Separating out Implementation Deployment Unit | 1d? | 2008-07-14 | 2008-07-14 | 39d |
| 179 |  | Changes needed in Deployment Process | 1d? | 2008-07-14 | 2008-07-14 | 39d |
| 180 | 2.10 | **caB2B_Y3_019-Intermodel joins with multiple attributes** | 1d? | 2008-07-14 | 2008-07-14 | 39d |
| 181 |  | Requirement | 1d? | 2008-07-14 | 2008-07-14 | 39d |
| 182 | 2.10.2 | **Investigation** | 1d? | 2008-07-14 | 2008-07-14 | 39d |
| 183 |  | Investigate Component | 1d? | 2008-07-14 | 2008-07-14 | 39d |
| 184 |  | Developing Prototype | 1d? | 2008-07-14 | 2008-07-14 | 39d |
| 185 |  | Design | 1d? | 2008-07-14 | 2008-07-14 | 39d |
| 186 | 2.10.4 | **Implementation** | 1d? | 2008-07-14 | 2008-07-14 | 39d |
| 187 |  | Separating out Implementation Deployment Unit | 1d? | 2008-07-14 | 2008-07-14 | 39d |
| 188 |  | Changes needed in Deployment Process | 1d? | 2008-07-14 | 2008-07-14 | 39d |
| 189 | 2.11 | **QA cycle** | 1d? | 2008-07-14 | 2008-07-14 | 39d |
| 190 |  | Writing testcases for new functionalities | 1d? | 2008-07-14 | 2008-07-14 | 39d |
| 191 |  | Build 1 for QA | 1d? | 2008-07-14 | 2008-07-14 | 39d |
| 192 |  | Testing Build 1 | 1d? | 2008-07-14 | 2008-07-14 | 39d |
| 193 |  | Fix bugs reported in Build 1 | 1d? | 2008-07-14 | 2008-07-14 | 39d |
| 194 |  | Demo to washU users | 1d? | 2008-07-14 | 2008-07-14 | 39d |
| 195 |  | Build 2 for QA | 1d? | 2008-07-14 | 2008-07-14 | 39d |
| 196 |  | Testing of Build 2 (by QA + washU users) | 1d? | 2008-07-14 | 2008-07-14 | 39d |
| 197 |  | Regression Testing | 1d? | 2008-07-14 | 2008-07-14 | 39d |
| 198 |  | Fix bugs reported in (Build 2 + regression testing) | 1d? | 2008-07-14 | 2008-07-14 | 39d |
| 199 | 2.12 | **Release Candidate 1** | 1d? | 2008-07-14 | 2008-07-14 | 39d |
| 200 |  | Release to QA + washU users for accepatance | 1d? | 2008-07-14 | 2008-07-14 | 39d |
| 201 |  | Verification of fixed bugs | 1d? | 2008-07-14 | 2008-07-14 | 39d |
| 202 |  | UAT by QA + washU users | 1d? | 2008-07-14 | 2008-07-14 | 39d |
| 203 |  | UAT bug fixing | 1d? | 2008-07-14 | 2008-07-14 | 39d |
| 204 | 2.13 | **Release activities** | 1d? | 2008-07-14 | 2008-07-14 | 39d |
| 205 |  | Updating washU servers | 1d? | 2008-07-14 | 2008-07-14 | 39d |
| 206 |  | Updating G-forge | 1d? | 2008-07-14 | 2008-07-14 | 39d |
| 207 |  | Updating website (cab2b.wustl.edu) | 1d? | 2008-07-14 | 2008-07-14 | 39d |
| 208 |  | Updating caBIG Tools Page | 1d? | 2008-07-14 | 2008-07-14 | 39d |
| 209 | 2.14 | **Documentation** | 1d? | 2008-07-14 | 2008-07-14 | 39d |
| 210 |  | Admin end user manual | 1d? | 2008-07-14 | 2008-07-14 | 39d |

| ID | WBS | Task | Duration | Start | Finish | Total float |
| --- | --- | --- | --- | --- | --- | --- |
| 211 |  | Admin design document | 1d? | 2008-07-14 | 2008-07-14 | 39d |
| 212 |  | Update design document | 1d? | 2008-07-14 | 2008-07-14 | 39d |
| 213 |  | Update end user manual update | 1d? | 2008-07-14 | 2008-07-14 | 39d |
| 214 | 2.15 | **Documentation Review** | 1d? | 2008-07-14 | 2008-07-14 | 39d |
| 215 |  | Review by NCICB Leads | 1d? | 2008-07-14 | 2008-07-14 | 39d |
| 216 |  | D&T Review | 1d? | 2008-07-14 | 2008-07-14 | 39d |
| 217 |  | Final Documentation | 1d? | 2008-07-14 | 2008-07-14 | 39d |

## Version 2 (saved 2008-08-13)

Note of the change: Updated Service URLs and Popular categories estimates

Last finish stays 2008-09-08. Complete tasks 26 → 28.

Added:

| ID | Task | Duration | Start | Finish | Predecessors | Resources |
| --- | --- | --- | --- | --- | --- | --- |
| 60 | UI mockups | 1d | 2008-08-13 A | 2008-08-13 A | 59 | Atul Jawale |
| 64 | Backend integration | 4d | 2008-08-22 | 2008-08-27 | 63 | Atul Jawale |

Removed: 60 Investigation; 61 Investigate Component; 62 Developing Prototype; 66 Changes needed in Deployment Process

Changed:

| ID | Task | Start | Finish | Duration | Complete | Total float | Predecessors | Other |
| --- | --- | --- | --- | --- | --- | --- | --- | --- |
| 1 | **Milestone 1** |  |  |  | 61% → 59% |  |  |  |
| 58 | **caB2B_Y3_005-User to override the URLs** | 2008-07-14 → 2008-08-12 A (+29d) | 2008-08-12 → 2008-08-27 (+15d) | 22d? → 11d | 0% → 18% | 18d → 8d |  |  |
| 59 | Requirement | 2008-08-12 A | 2008-08-12 A | 1d? → 1d | 0% → 100% | 18d → none |  | resources none → Atul Jawale |
| 61 | Design | 2008-07-14 → 2008-08-14 (+31d) | 2008-07-14 → 2008-08-14 (+31d) | 1d? → 1d |  | 39d → 8d | none → 60 | resources none → Atul Jawale |
| 62 | **Implementation** | 2008-07-14 → 2008-08-18 (+35d) | 2008-08-08 → 2008-08-27 (+19d) | 20d? → 8d |  | 20d → 8d | none → 61 |  |
| 63 | UI implementation | 2008-07-14 → 2008-08-18 (+35d) | 2008-07-14 → 2008-08-21 (+38d) | 1d? → 4d |  | 39d → 8d |  | was named Separating out Implementation Deployment Unit; resources none → Atul Jawale |
| 83 | **caB2B_Y3_008-Popular categories** |  | 2008-08-19 → 2008-08-22 (+3d) | 16d? → 19d | 73% → 67% | 14d → 11d |  |  |
| 85 | Design |  |  |  | 60% → 80% | 14d → 11d |  |  |
| 86 | **Implementation** |  | 2008-08-19 → 2008-08-22 (+3d) | 2d? → 5d |  | 14d → 11d |  |  |
| 87 | Calculating popularity |  | 2008-08-18 → 2008-08-19 (+1d) | 1d? → 2d |  | 14d → 11d |  |  |
| 88 | Storing and using popularity | 2008-08-19 → 2008-08-20 (+1d) | 2008-08-19 → 2008-08-22 (+3d) | 1d? → 3d |  | 14d → 11d |  |  |

## Version 3 (saved 2008-08-20)

Note of the change: Updated till 20 Aug

Last finish 2008-09-08 → 2008-09-16 (+8d). Complete tasks 28 → 32.

Added:

| ID | Task | Duration | Start | Finish |
| --- | --- | --- | --- | --- |
| 12 | **Query Module** | 12d | 2008-08-04 A | 2008-08-20 A |

Changed:

| ID | Task | Start | Finish | Duration | Complete | Total float | Predecessors | Other |
| --- | --- | --- | --- | --- | --- | --- | --- | --- |
| 1 | **Milestone 1** |  | 2008-09-08 → 2008-09-16 (+8d) | 40d? → 46d? | 59% → 63% |  |  |  |
| 2 | **caB2B_Y3_020Technology Stack Migration** |  | 2008-08-18 → 2008-08-20 A (+2d) | 25d? → 27d | 90% → 100% | 15d → none |  |  |
| 13 | Query Module Release UI | 2008-08-18 A | 2008-08-18 → 2008-08-20 A (+2d) | 1d? → 3d | 0% → 100% | 15d → none |  |  |
| 14 | Query Module Release backend changes | 2008-07-14 → 2008-08-04 A (+21d) | 2008-07-14 → 2008-08-20 A (+37d) | 1d? → 8d | 0% → 100% | 27d → none | none → 96 | was named Query Module Release backend; constraint none → start no earlier than 2008-08-04 |
| 15 | **Session Management of EJB (For user based expr and queries)** |  | 2008-08-25 → 2008-08-26 (+1d) | 12d → 13d |  | 0d → 5d |  |  |
| 16 | Understand stateful EJBs |  | 2008-08-25 → 2008-08-26 (+1d) |  |  | 0d → 5d |  |  |
| 17 | **caB2B_Y3_002-User based experiments** | 2008-08-26 → 2008-08-27 (+1d) | 2008-09-01 → 2008-09-02 (+1d) |  |  | 0d → 5d |  |  |
| 18 | Requirement | 2008-08-26 → 2008-08-27 (+1d) | 2008-08-26 → 2008-08-27 (+1d) |  |  | 0d → 5d |  |  |
| 19 | Design | 2008-08-27 → 2008-08-28 (+1d) | 2008-08-27 → 2008-08-28 (+1d) |  |  | 0d → 5d |  |  |
| 20 | **Implementation** | 2008-08-28 → 2008-08-29 (+1d) | 2008-09-01 → 2008-09-02 (+1d) |  |  | 0d → 5d |  |  |
| 21 | Saving experiments on user basis | 2008-08-28 → 2008-08-29 (+1d) | 2008-08-28 → 2008-08-29 (+1d) |  |  | 0d → 5d |  |  |
| 22 | Changes needed at client-server interface to pass user info | 2008-08-29 → 2008-09-01 (+3d) | 2008-08-29 → 2008-09-01 (+3d) |  |  | 0d → 5d |  |  |
| 23 | Fetch and display experiments based on user | 2008-09-01 → 2008-09-02 (+1d) | 2008-09-01 → 2008-09-02 (+1d) |  |  | 0d → 5d |  |  |
| 24 | **caB2B_Y3_003-User based saved queries** | 2008-09-02 → 2008-09-03 (+1d) | 2008-09-08 → 2008-09-09 (+1d) |  |  | 0d → 5d |  |  |
| 25 | Requirement | 2008-09-02 → 2008-09-03 (+1d) | 2008-09-02 → 2008-09-03 (+1d) |  |  | 0d → 5d |  |  |
| 26 | Design | 2008-09-03 → 2008-09-04 (+1d) | 2008-09-03 → 2008-09-04 (+1d) |  |  | 0d → 5d |  |  |
| 27 | **Implementation** | 2008-09-04 → 2008-09-05 (+1d) | 2008-09-08 → 2008-09-09 (+1d) |  |  | 0d → 5d |  |  |
| 28 | Saving queries on user basis | 2008-09-04 → 2008-09-05 (+1d) | 2008-09-04 → 2008-09-05 (+1d) |  |  | 0d → 5d |  |  |
| 29 | Changes needed at client-server interface to pass user info | 2008-09-05 → 2008-09-08 (+3d) | 2008-09-05 → 2008-09-08 (+3d) |  |  | 0d → 5d |  |  |
| 30 | Fetch and display experiments based on user | 2008-09-08 → 2008-09-09 (+1d) | 2008-09-08 → 2008-09-09 (+1d) |  |  | 0d → 5d |  |  |
| 44 | **Schedular component + notification functionality** | 2008-07-14 → 2008-07-29 A (+15d) | 2008-07-14 → 2008-09-09 (+57d) | 1d? → 30d | 0% → 13% | 39d → 0d |  |  |
| 45 | **Schedular** | 2008-07-14 → 2008-07-29 A (+15d) | 2008-07-14 → 2008-08-27 (+44d) | 1d? → 21d | 0% → 29% | 39d → 0d |  |  |
| 46 | Investigate Component | 2008-07-14 → 2008-07-29 A (+15d) | 2008-07-14 → 2008-07-30 A (+16d) | 1d? → 2d | 0% → 100% | 39d → none |  |  |
| 47 | Developing Prototype | 2008-07-14 → 2008-08-21 (+38d) | 2008-07-14 → 2008-08-27 (+44d) | 1d? → 5d |  | 39d → 0d | none → 14 |  |
| 48 | **Notification** | 2008-07-14 → 2008-08-28 (+45d) | 2008-07-14 → 2008-09-09 (+57d) | 1d? → 9d |  | 39d → 0d |  |  |
| 49 | UI mockup | 2008-07-14 → 2008-08-28 (+45d) | 2008-07-14 → 2008-08-28 (+45d) | 1d? → 1d |  | 39d → 0d | none → 47 |  |
| 50 | UI implementation | 2008-07-14 → 2008-08-29 (+46d) | 2008-07-14 → 2008-09-02 (+50d) | 1d? → 3d |  | 39d → 0d | none → 49 |  |
| 51 | Backend Implementation | 2008-07-14 → 2008-09-03 (+51d) | 2008-07-14 → 2008-09-09 (+57d) | 1d? → 5d |  | 39d → 0d | none → 50 |  |
| 52 | **caB2B_Y3_004-Asynchronous execution of queries** | 2008-07-14 → 2008-09-10 (+58d) | 2008-07-14 → 2008-09-16 (+64d) | 1d? → 5d? |  | 39d → 0d | none → 44 |  |
| 53 | Requirement | 2008-07-14 → 2008-09-10 (+58d) | 2008-07-14 → 2008-09-10 (+58d) |  |  | 39d → 0d |  |  |
| 54 | Design | 2008-07-14 → 2008-09-11 (+59d) | 2008-07-14 → 2008-09-11 (+59d) |  |  | 39d → 0d | none → 53 |  |
| 55 | **Implementation** | 2008-07-14 → 2008-09-12 (+60d) | 2008-07-14 → 2008-09-16 (+64d) | 1d? → 3d? |  | 39d → 0d | none → 54 |  |
| 56 | Represent schedule | 2008-07-14 → 2008-09-12 (+60d) | 2008-07-14 → 2008-09-12 (+60d) |  |  | 39d → 0d |  |  |
| 57 | Storing schedule and firing jobs | 2008-07-14 → 2008-09-15 (+63d) | 2008-07-14 → 2008-09-15 (+63d) |  |  | 39d → 0d | none → 56 |  |
| 58 | Implementing job for query execution | 2008-07-14 → 2008-09-16 (+64d) | 2008-07-14 → 2008-09-16 (+64d) |  |  | 39d → 0d | none → 57 |  |
| 59 | **caB2B_Y3_005-User to override the URLs** |  |  |  | 18% → 36% |  |  |  |
| 63 | **Implementation** | 2008-08-18 A |  |  | 0% → 25% |  |  |  |
| 64 | UI implementation | 2008-08-18 A |  |  | 0% → 50% |  |  |  |
| 84 | **caB2B_Y3_008-Popular categories** |  |  |  | 67% → 78% |  |  |  |
| 86 | Design |  | 2008-08-14 A |  | 80% → 100% | 11d → none |  |  |
| 87 | **Implementation** | 2008-08-18 A |  |  | 0% → 20% |  |  |  |
| 88 | Calculating popularity | 2008-08-18 A |  |  | 0% → 50% |  |  |  |
| 95 | **Bugs** | 2008-08-07 A → 2008-07-31 A (-7d) | 2008-08-08 A → 2008-08-01 A (-7d) |  |  |  |  |  |
| 96 | Bug# 8070 | 2008-08-07 A → 2008-07-31 A (-7d) | 2008-08-08 A → 2008-08-01 A (-7d) |  |  |  | none → 46 | constraint start no earlier than 2008-08-07 → start no earlier than 2008-08-04 |

## Version 4 (saved 2008-08-29)

Last finish 2008-09-16 → 2008-09-25 (+9d). Complete tasks 32 → 41.

Added:

| ID | Task | Duration | Start | Finish | Constraint | Resources |
| --- | --- | --- | --- | --- | --- | --- |
| 15 | Moving to caGrid 1.2 | 4d | 2008-07-14 | 2008-07-17 |  | Hrishikesh Rajpathak |
| 67 | Unit testing | 6d? | 2008-09-01 | 2008-09-08 | start no earlier than 2008-09-01 | Atul Jawale |
| 92 | Unit Testing | 3d? | 2008-09-01 | 2008-09-03 | finish no earlier than 2008-09-03 | Hrishikesh Rajpathak |
| 100 | caTissue core service instance | 1d | 2008-08-12 A | 2008-08-12 A | start no earlier than 2008-08-08 | Atul Jawale |
| 101 | Bug 9090 & 9138 fix | 2d? | 2008-08-26 A | 2008-08-27 A | finish no earlier than 2008-08-27 | Chetan Patil |
| 102 | Bug 9221 fix | 2d? | 2008-08-28 A | 2008-08-29 A | finish no earlier than 2008-08-29 | Chetan Patil |

Changed:

| ID | Task | Start | Finish | Duration | Complete | Total float | Predecessors | Other |
| --- | --- | --- | --- | --- | --- | --- | --- | --- |
| 1 | **Milestone 1** |  | 2008-09-16 → 2008-09-25 (+9d) | 46d? → 53d? | 63% → 67% |  |  |  |
| 45 | **Schedular component + notification functionality** |  | 2008-09-09 → 2008-09-18 (+9d) | 30d → 37d |  |  |  |  |
| 46 | **Schedular** |  | 2008-08-27 → 2008-09-05 (+9d) | 21d → 28d |  |  |  |  |
| 48 | Developing Prototype | 2008-08-21 → 2008-09-01 (+11d) | 2008-08-27 → 2008-09-05 (+9d) |  |  |  | 14 → none | constraint none → start no earlier than 2008-09-01 |
| 49 | **Notification** | 2008-08-28 → 2008-09-08 (+11d) | 2008-09-09 → 2008-09-18 (+9d) |  |  |  |  |  |
| 50 | UI mockup | 2008-08-28 → 2008-09-08 (+11d) | 2008-08-28 → 2008-09-08 (+11d) |  |  |  |  |  |
| 51 | UI implementation | 2008-08-29 → 2008-09-09 (+11d) | 2008-09-02 → 2008-09-11 (+9d) |  |  |  |  |  |
| 52 | Backend Implementation | 2008-09-03 → 2008-09-12 (+9d) | 2008-09-09 → 2008-09-18 (+9d) |  |  |  |  |  |
| 53 | **caB2B_Y3_004-Asynchronous execution of queries** | 2008-09-10 → 2008-09-19 (+9d) | 2008-09-16 → 2008-09-25 (+9d) |  |  |  |  |  |
| 54 | Requirement | 2008-09-10 → 2008-09-19 (+9d) | 2008-09-10 → 2008-09-19 (+9d) |  |  |  |  |  |
| 55 | Design | 2008-09-11 → 2008-09-22 (+11d) | 2008-09-11 → 2008-09-22 (+11d) |  |  |  |  |  |
| 56 | **Implementation** | 2008-09-12 → 2008-09-23 (+11d) | 2008-09-16 → 2008-09-25 (+9d) |  |  |  |  |  |
| 57 | Represent schedule | 2008-09-12 → 2008-09-23 (+11d) | 2008-09-12 → 2008-09-23 (+11d) |  |  |  |  |  |
| 58 | Storing schedule and firing jobs | 2008-09-15 → 2008-09-24 (+9d) | 2008-09-15 → 2008-09-24 (+9d) |  |  |  |  |  |
| 59 | Implementing job for query execution | 2008-09-16 → 2008-09-25 (+9d) | 2008-09-16 → 2008-09-25 (+9d) |  |  |  |  |  |
| 60 | **caB2B_Y3_005-User to override the URLs** | 2008-08-12 A → 2008-08-13 A (+1d) | 2008-08-27 → 2008-09-08 (+12d) | 11d → 18d? | 36% → 65% | 8d → 13d |  |  |
| 61 | Requirement | 2008-08-12 A → 2008-08-13 A (+1d) | 2008-08-12 A → 2008-08-13 A (+1d) |  |  |  |  |  |
| 62 | UI mockups | 2008-08-13 A → 2008-08-14 A (+1d) | 2008-08-13 A → 2008-08-14 A (+1d) |  |  |  |  |  |
| 63 | Design | 2008-08-14 → 2008-08-18 A (+4d) | 2008-08-14 → 2008-08-18 A (+4d) |  | 0% → 100% | 11d → none |  |  |
| 64 | **Implementation** | 2008-08-18 A → 2008-08-19 A (+1d) | 2008-08-27 → 2008-09-08 (+12d) | 8d → 15d? | 25% → 57% | 8d → 13d |  |  |
| 65 | UI implementation | 2008-08-18 A → 2008-08-19 A (+1d) | 2008-08-21 → 2008-08-22 A (+1d) |  | 50% → 100% | 8d → none |  |  |
| 66 | Backend integration | 2008-08-22 → 2008-08-25 A (+3d) | 2008-08-27 → 2008-08-28 A (+1d) |  | 0% → 100% | 8d → none |  |  |
| 86 | **caB2B_Y3_008-Popular categories** |  | 2008-08-22 → 2008-09-03 (+12d) | 19d → 27d? | 78% → 86% | 11d → 16d |  |  |
| 89 | **Implementation** |  | 2008-08-22 → 2008-09-03 (+12d) | 5d → 13d? | 20% → 63% | 11d → 16d |  |  |
| 90 | Calculating popularity |  | 2008-08-19 A |  | 50% → 100% | 11d → none |  |  |
| 91 | Storing and using popularity | 2008-08-20 A | 2008-08-22 A |  | 0% → 100% | 11d → none |  |  |
| 93 | **caB2B_Y3_009-Fixing the current washU services for index service** |  | 2008-08-11 A |  | 76% → 100% | 19d → none |  |  |
| 94 | Learning service, discovery and metadata | 2008-07-14 A | 2008-07-18 A |  | 0% → 100% | 35d → none |  |  |

## Version 5 (saved 2008-09-01)

Last finish stays 2008-09-25.

Added:

| ID | Task | Duration | Start | Finish | Predecessors | Resources |
| --- | --- | --- | --- | --- | --- | --- |
| 16 | caB2B Finding & Replacing appropriate jars | 2d | 2008-07-14 | 2008-07-15 |  | Deepak Shingan |
| 17 | Admin Finding & Replacing appropriate jars | 2d | 2008-07-16 | 2008-07-17 | 16 | Deepak Shingan |
| 18 | Testing | 1d | 2008-07-18 | 2008-07-18 | 17 | Deepak Shingan |
| 19 | **New DE release** | 10d | 2008-07-14 | 2008-07-25 |  |  |
| 20 | Understand new design and identify changes | 2d | 2008-07-14 | 2008-07-15 |  |  |
| 21 | Changs in cab2B and Admin | 10d | 2008-07-14 | 2008-07-25 |  |  |
| 22 | Verification | 4d | 2008-07-14 | 2008-07-17 |  |  |
| 23 | **java 1.5** | 1d? | 2008-07-14 | 2008-07-14 |  |  |
| 24 | Identify changes | 1d? | 2008-07-14 | 2008-07-14 |  | Lalit Chand |
| 25 | Solution for client side java 6 components | 1d? | 2008-07-14 | 2008-07-14 |  | Lalit Chand |
| 72 | **caArray caTissue Integration** | 8d | 2008-07-14 | 2008-07-23 |  |  |
| 73 | Investigation | 3d | 2008-07-14 | 2008-07-16 |  | Chetan Patil |
| 74 | Testing Patch | 2d | 2008-07-17 | 2008-07-18 | 73 | Chetan Patil |
| 75 | Pushing patch into WashU instance | 3d | 2008-07-21 | 2008-07-23 | 74 | Chetan Patil |
| 76 | **Exposing CQL’s on the User Interface** | 12d | 2008-07-14 | 2008-07-29 |  |  |
| 78 | UI mockups | 1d | 2008-07-15 | 2008-07-15 | 77 |  |
| 82 | Backend integration | 4d | 2008-07-24 | 2008-07-29 | 81 |  |
| 83 | Knowledge Transfer from Deepak | 5d | 2008-07-21 | 2008-07-25 | 18 | Atul Jawale; Deepak Shingan |
| 89 | QA cycle | 1d? | 2008-07-14 | 2008-07-14 |  |  |
| 95 | Expansion of categories | 1d? | 2008-07-14 | 2008-07-14 |  |  |
| 116 | UI implementation | 3d | 2008-09-09 | 2008-09-11 | 115 | Chetan Patil |
| 154 | UI Mockups | 1d? | 2008-07-14 | 2008-07-14 |  |  |
| 159 | backend support for multiple data list | 1d? | 2008-07-14 | 2008-07-14 |  |  |
| 205 | **Advanced result view** | 1d? | 2008-07-14 | 2008-07-14 |  |  |
| 206 | Understanding requirement | 1d? | 2008-07-14 | 2008-07-14 |  |  |
| 207 | UI mock ups | 1d? | 2008-07-14 | 2008-07-14 |  |  |
| 208 | Design | 1d? | 2008-07-14 | 2008-07-14 |  |  |
| 209 | **UI implementation** | 1d? | 2008-07-14 | 2008-07-14 |  |  |
| 210 | Changes on define result view(step 3 of wizard) | 1d? | 2008-07-14 | 2008-07-14 |  |  |
| 211 | Changes in the advanced view result | 1d? | 2008-07-14 | 2008-07-14 |  |  |
| 212 | **Backend implementation** | 1d? | 2008-07-14 | 2008-07-14 |  |  |
| 213 | query changes to get all the objects asked in the result view | 1d? | 2008-07-14 | 2008-07-14 |  |  |
| 214 | changes in datalist | 1d? | 2008-07-14 | 2008-07-14 |  |  |

Removed: 16 Session Management of EJB (For user based expr and queries); 17 Understand stateful EJBs; 92 Unit Testing; 113 caB2B_Y3_011-Need to revisit save / not save strategies-yet to clarify; 115 Investigation; 116 Investigate Component; 117 Developing Prototype; 120 Separating out Implementation Deployment Unit; 121 Changes needed in Deployment Process; 142 Investigation; 143 Investigate Component; 144 Developing Prototype

Changed:

| ID | Task | Start | Finish | Duration | Complete | Total float | Predecessors | Other |
| --- | --- | --- | --- | --- | --- | --- | --- | --- |
| 1 | **October Release** |  | 2008-09-25 → 2008-09-09 (-16d) | 53d? → 41d? | 67% → 66% | 0d → 12d |  | was named Milestone 1 |
| 2 | **caB2B_Y3_020Technology Stack Migration** |  | 2008-08-20 A → 2008-08-20 | 27d → 27d? | 100% → 56% | none → 26d |  |  |
| 15 | **Moving to caGrid 1.2** |  | 2008-07-17 → 2008-07-18 (+1d) | 4d → 5d |  | 49d → 43d |  | resources Hrishikesh Rajpathak → none |
| 26 | **caB2B_Y3_001-Automatic cache update between admin and cab2b server** | 2008-07-14 → 2008-08-27 (+44d) | 2008-08-08 → 2008-09-09 (+32d) | 20d? → 10d? |  | 33d → 12d |  |  |
| 27 | Requirement | 2008-07-14 → 2008-08-27 (+44d) | 2008-07-14 → 2008-08-27 (+44d) | 1d? → 1d |  | 52d → 12d | none → 66 | resources none → Hrishikesh Rajpathak |
| 28 | **Investigation** | 2008-07-14 → 2008-08-28 (+45d) | 2008-07-14 → 2008-09-05 (+53d) | 1d? → 7d? |  | 52d → 12d | none → 27 |  |
| 29 | Investigate Component | 2008-07-14 → 2008-08-28 (+45d) | 2008-07-14 → 2008-09-03 (+51d) | 1d? → 5d |  | 52d → 12d | none → 27 | resources none → Hrishikesh Rajpathak |
| 30 | Developing Prototype | 2008-07-14 → 2008-09-04 (+52d) | 2008-07-14 → 2008-09-04 (+52d) |  |  | 52d → 12d | none → 29 | resources none → Hrishikesh Rajpathak |
| 31 | Design | 2008-07-14 → 2008-09-05 (+53d) | 2008-07-14 → 2008-09-05 (+53d) |  |  | 52d → 12d | none → 30 | resources none → Hrishikesh Rajpathak |
| 32 | **Implementation** | 2008-07-14 → 2008-09-08 (+56d) | 2008-08-08 → 2008-09-09 (+32d) | 20d? → 2d? |  | 33d → 12d | none → 28 |  |
| 33 | Separating out Implementation Deployment Unit | 2008-07-14 → 2008-09-08 (+56d) | 2008-07-14 → 2008-09-08 (+56d) |  |  | 52d → 12d |  | resources none → Hrishikesh Rajpathak |
| 34 | Changes needed in Deployment Process | 2008-08-08 → 2008-09-09 (+32d) | 2008-08-08 → 2008-09-09 (+32d) |  |  | 33d → 12d | none → 33 | constraint finish no earlier than 2008-08-08 → none |
| 35 | **caB2B_Y3_005-User to override the URLs** |  | 2008-09-08 → 2008-09-02 (-6d) | 18d? → 14d | 65% → 93% | 13d → 17d |  |  |
| 39 | **Implementation** |  | 2008-09-08 → 2008-09-02 (-6d) | 15d? → 11d | 57% → 91% | 13d → 17d |  |  |
| 42 | Unit testing | 2008-09-01 → 2008-08-29 A (-3d) | 2008-09-08 → 2008-09-02 (-6d) | 6d? → 3d | 0% → 66% | 13d → 17d | none → 41 | constraint start no earlier than 2008-09-01 → none |
| 61 | **caB2B_Y3_008-Popular categories** |  | 2008-09-03 → 2008-08-26 A (-8d) | 27d? → 21d | 86% → 100% | 16d → none |  |  |
| 64 | **Implementation** |  | 2008-09-03 → 2008-08-26 A (-8d) | 13d? → 7d | 63% → 100% | 16d → none |  |  |
| 65 | Calculating popularity |  | 2008-08-19 A → 2008-08-20 A (+1d) | 2d → 3d |  |  |  |  |
| 66 | Storing and using popularity | 2008-08-20 A → 2008-08-21 A (+1d) | 2008-08-22 A → 2008-08-26 A (+4d) | 3d → 4d |  |  |  |  |
| 77 | Requirement | 2008-08-27 → 2008-07-14 (-44d) | 2008-08-27 → 2008-07-14 (-44d) | 1d? → 1d |  | 12d → 41d |  | resources Lalit Chand → none |
| 79 | Design | 2008-08-28 → 2008-07-16 (-43d) | 2008-08-28 → 2008-07-17 (-42d) | 1d? → 2d |  | 12d → 41d | 77 → 78 | resources Lalit Chand → none |
| 80 | **Implementation** | 2008-08-29 → 2008-07-18 (-42d) | 2008-09-02 → 2008-07-29 (-35d) | 3d? → 8d |  | 12d → 41d | none → 79 |  |
| 81 | UI implementation | 2008-09-09 → 2008-07-18 (-53d) | 2008-09-11 → 2008-07-23 (-50d) | 3d → 4d |  | 0d → 41d | 115 → none | resources Chetan Patil → none |
| 84 | **Bugs Fixing** |  | 2008-08-01 A → 2008-08-29 A (+28d) | 2d → 21d |  |  |  | was named Bugs |
| 87 | Bug 9090 & 9138 fix |  |  | 2d? → 2d |  |  |  |  |
| 88 | Bug 9221 fix |  |  | 2d? → 2d |  |  |  |  |
| 90 | **Milestone 2** | 2008-07-14 A | 2008-08-01 → 2008-09-25 (+55d) | 15d? → 53d? | 0% → 2% | 38d → 0d |  |  |
| 96 | **caB2B_Y3_002-User based experiments** | 2008-08-27 → 2008-07-14 (-44d) | 2008-09-02 → 2008-07-18 (-46d) |  |  | 12d → 43d | Session Management of EJB (For user based expr and queries) → none |  |
| 97 | Requirement | 2008-09-03 → 2008-07-14 (-51d) | 2008-09-03 → 2008-07-14 (-51d) |  |  | 12d → 43d | 96 → none |  |
| 98 | Design | 2008-09-04 → 2008-07-15 (-51d) | 2008-09-04 → 2008-07-15 (-51d) |  |  | 12d → 43d |  |  |
| 99 | **Implementation** | 2008-09-05 → 2008-07-16 (-51d) | 2008-09-09 → 2008-07-18 (-53d) |  |  | 12d → 43d |  |  |
| 100 | Saving experiments on user basis | 2008-08-29 → 2008-07-16 (-44d) | 2008-08-29 → 2008-07-16 (-44d) |  |  | 12d → 43d | 79 → 98 |  |
| 101 | Changes needed at client-server interface to pass user info | 2008-09-01 → 2008-07-17 (-46d) | 2008-09-01 → 2008-07-17 (-46d) |  |  | 12d → 43d |  |  |
| 102 | Fetch and display experiments based on user | 2008-09-02 → 2008-07-18 (-46d) | 2008-09-02 → 2008-07-18 (-46d) |  |  | 12d → 43d |  |  |
| 103 | **caB2B_Y3_003-User based saved queries** | 2008-09-03 → 2008-07-21 (-44d) | 2008-09-09 → 2008-07-25 (-46d) |  |  | 12d → 43d |  |  |
| 104 | Requirement | 2008-09-19 → 2008-07-21 (-60d) | 2008-09-19 → 2008-07-21 (-60d) |  |  | 0d → 43d | none → 96 | resources Chetan Patil → Lalit Chand |
| 105 | Design | 2008-09-22 → 2008-07-22 (-62d) | 2008-09-22 → 2008-07-22 (-62d) |  |  | 0d → 43d |  | resources Chetan Patil → Lalit Chand |
| 106 | **Implementation** | 2008-09-23 → 2008-07-23 (-62d) | 2008-09-25 → 2008-07-25 (-62d) |  |  | 0d → 43d | 105 → none |  |
| 107 | Saving queries on user basis | 2008-09-05 → 2008-07-23 (-44d) | 2008-09-05 → 2008-07-23 (-44d) |  |  | 12d → 43d | 98 → 105 |  |
| 108 | Changes needed at client-server interface to pass user info | 2008-09-08 → 2008-07-24 (-46d) | 2008-09-08 → 2008-07-24 (-46d) |  |  | 12d → 43d |  |  |
| 109 | Fetch and display experiments based on user | 2008-09-09 → 2008-07-25 (-46d) | 2008-09-09 → 2008-07-25 (-46d) |  |  | 12d → 43d |  |  |
| 117 | Backend Implementation |  |  |  |  |  | 81 → 116 |  |
| 119 | Requirement | 2008-07-14 → 2008-09-19 (+67d) | 2008-07-14 → 2008-09-19 (+67d) |  |  | 52d → 0d |  | resources none → Chetan Patil |
| 120 | Design | 2008-07-14 → 2008-09-22 (+70d) | 2008-07-14 → 2008-09-22 (+70d) |  |  | 52d → 0d | none → 119 | resources none → Chetan Patil |
| 121 | **Implementation** | 2008-07-14 → 2008-09-23 (+71d) | 2008-07-14 → 2008-09-25 (+73d) | 1d? → 3d? |  | 52d → 0d | none → 120 |  |
| 157 | UI for data list viewer |  |  |  |  |  |  | was named Separating out Implementation Deployment Unit |
| 158 | Changes needed in Experiment module |  |  |  |  |  |  | was named Changes needed in Deployment Process |

## Version 6 (saved 2008-09-02)

Last finish stays 2008-09-25.

Added:

| ID | Task | Duration | Start | Finish | Constraint | Resources |
| --- | --- | --- | --- | --- | --- | --- |
| 6 | Issue with 1.6 | 3d | 2008-08-25 | 2008-08-27 | start no earlier than 2008-08-25 | Lalit Chand |
| 91 | Release Activity | 2d | 2008-07-14 | 2008-07-15 |  |  |

Changed:

| ID | Task | Start | Finish | Duration | Complete | Total float | Predecessors | Other |
| --- | --- | --- | --- | --- | --- | --- | --- | --- |
| 1 | **October Release** | 2008-07-14 A → 2008-07-10 A (-4d) | 2008-09-09 → 2008-09-17 (+8d) | 41d? → 49d? | 66% → 62% | 12d → 6d |  |  |
| 2 | **caB2B_Y3_020Technology Stack Migration** | 2008-07-14 A → 2008-07-10 A (-4d) | 2008-08-20 → 2008-08-29 (+9d) | 27d? → 36d? | 56% → 53% | 26d → 19d |  |  |
| 3 | **Migrate to Jboss 4.0.5 GA** |  | 2008-07-15 A → 2008-08-27 (+43d) | 2d → 32d | 100% → 40% | none → 21d |  |  |
| 8 | Understanding EJB 3.0 |  |  |  |  |  | 5 → 6 |  |
| 16 | **Moving to caGrid 1.2** | 2008-07-14 → 2008-08-25 (+42d) | 2008-07-18 → 2008-08-29 (+42d) |  |  | 43d → 19d |  |  |
| 17 | caB2B Finding & Replacing appropriate jars | 2008-07-14 → 2008-08-25 (+42d) | 2008-07-15 → 2008-08-26 (+42d) |  |  | 43d → 19d |  | constraint none → start no earlier than 2008-08-25 |
| 18 | Admin Finding & Replacing appropriate jars | 2008-07-16 → 2008-08-27 (+42d) | 2008-07-17 → 2008-08-28 (+42d) |  |  | 43d → 19d |  |  |
| 19 | Testing | 2008-07-18 → 2008-08-29 (+42d) | 2008-07-18 → 2008-08-29 (+42d) |  |  | 43d → 19d |  |  |
| 24 | **java 1.5** | 2008-07-14 → 2008-07-10 (-4d) | 2008-07-14 → 2008-07-11 (-3d) | 1d? → 2d? |  | 52d → 53d |  |  |
| 25 | Identify changes | 2008-07-14 → 2008-07-10 (-4d) | 2008-07-14 → 2008-07-10 (-4d) |  |  | 52d → 53d |  | constraint none → start no earlier than 2008-07-10 |
| 26 | Solution for client side java 6 components | 2008-07-14 → 2008-07-11 (-3d) | 2008-07-14 → 2008-07-11 (-3d) |  |  | 52d → 53d | none → 25 |  |
| 77 | **Exposing CQL’s on the User Interface** | 2008-07-14 → 2008-08-28 (+45d) | 2008-07-29 → 2008-09-17 (+50d) | 12d → 15d |  | 41d → 6d |  |  |
| 78 | Requirement | 2008-07-14 → 2008-08-28 (+45d) | 2008-07-14 → 2008-09-02 (+50d) | 1d → 4d |  | 41d → 6d |  | constraint none → finish no earlier than 2008-09-02 |
| 79 | UI mockups | 2008-07-15 → 2008-09-03 (+50d) | 2008-07-15 → 2008-09-03 (+50d) |  |  | 41d → 6d |  |  |
| 80 | Design | 2008-07-16 → 2008-09-04 (+50d) | 2008-07-17 → 2008-09-05 (+50d) |  |  | 41d → 6d |  |  |
| 81 | **Implementation** | 2008-07-18 → 2008-09-08 (+52d) | 2008-07-29 → 2008-09-17 (+50d) |  |  | 41d → 6d |  |  |
| 82 | UI implementation | 2008-07-18 → 2008-09-08 (+52d) | 2008-07-23 → 2008-09-11 (+50d) |  |  | 41d → 6d |  |  |
| 83 | Backend integration | 2008-07-24 → 2008-09-12 (+50d) | 2008-07-29 → 2008-09-17 (+50d) |  |  | 41d → 6d |  |  |
| 84 | Knowledge Transfer from Deepak | 2008-07-21 → 2008-09-03 (+44d) | 2008-07-25 → 2008-09-16 (+53d) | 5d → 10d |  | 43d → 7d |  | constraint none → start no earlier than 2008-09-03 |
| 90 | QA cycle |  | 2008-07-14 → 2008-07-22 (+8d) | 1d? → 7d |  | 52d → 46d |  |  |
| 99 | Requirement |  |  |  |  |  |  | resources Lalit Chand → none |
| 100 | Design |  |  |  |  |  |  | resources Lalit Chand → none |
| 102 | Saving experiments on user basis |  |  |  |  |  |  | resources Lalit Chand → none |
| 103 | Changes needed at client-server interface to pass user info |  |  |  |  |  |  | resources Lalit Chand → none |
| 104 | Fetch and display experiments based on user |  |  |  |  |  |  | resources Lalit Chand → none |
| 106 | Requirement |  |  |  |  |  |  | resources Lalit Chand → none |
| 107 | Design |  |  |  |  |  |  | resources Lalit Chand → none |
| 109 | Saving queries on user basis |  |  |  |  |  |  | resources Lalit Chand → none |
| 110 | Changes needed at client-server interface to pass user info |  |  |  |  |  |  | resources Lalit Chand → none |
| 111 | Fetch and display experiments based on user |  |  |  |  |  |  | resources Lalit Chand → none |
| 121 | Requirement |  |  |  |  |  |  | resources Chetan Patil → none |
| 122 | Design |  |  |  |  |  |  | resources Chetan Patil → none |
| 124 | Represent schedule |  |  |  |  |  |  | resources Chetan Patil → none |
| 125 | Storing schedule and firing jobs |  |  |  |  |  |  | resources Chetan Patil → none |
| 126 | Implementing job for query execution |  |  |  |  |  |  | resources Chetan Patil → none |

## Version 7 (saved 2008-09-04)

Last finish 2008-09-25 → 2008-10-08 (+13d). Complete tasks 41 → 53.

Added:

| ID | Task | Duration | Start | Finish | Predecessors | Resources |
| --- | --- | --- | --- | --- | --- | --- |
| 10 | Testing | 4d | 2008-07-29 A | 2008-08-01 A | 9 | Lalit Chand |
| 43 | UE enhanements | 2d | 2008-09-03 A | 2008-09-04 A | 42 | Atul Jawale |
| 68 | Unit Testing | 3d | 2008-08-27 A | 2008-08-29 A | 67 | Hrishikesh Rajpathak |
| 80 | Learning CQL | 5d | 2008-08-29 A | 2008-09-04 A | 79 | Lalit Chand |
| 81 | Understanding existing implementation | 4d | 2008-09-05 | 2008-09-10 | 80 | Lalit Chand |
| 93 | Bug # 8911 | 1d | 2008-09-04 A | 2008-09-04 A | 77 | Chetan Patil |
| 94 | Bug # 8814 | 1d | 2008-09-05 A | 2008-09-05 A | 93 | Chetan Patil |
| 95 | Bug # 8839 | 1d | 2008-09-08 A | 2008-09-08 A | 94 | Chetan Patil |

Removed: 6 Issue with 1.6; 12 Reverting back EJB 3.0 changes

Changed:

| ID | Task | Start | Finish | Duration | Complete | Total float | Predecessors | Other |
| --- | --- | --- | --- | --- | --- | --- | --- | --- |
| 1 | **Year 3 M1** | 2008-07-10 A → 2008-07-14 A (+4d) | 2008-09-17 → 2008-10-08 (+21d) | 49d? → 62d? | 62% → 72% | 6d → 0d |  | was named October Release |
| 2 | **caB2B_Y3_020Technology Stack Migration** | 2008-07-10 A → 2008-07-14 A (+4d) | 2008-08-29 → 2008-10-08 (+40d) | 36d? → 62d? | 53% → 55% | 19d → 0d |  |  |
| 3 | **Migrate to Jboss 4.0.5 GA** |  | 2008-08-27 → 2008-07-15 A (-43d) | 32d → 2d | 40% → 100% | 21d → none |  |  |
| 6 | **Migrate to EJB 3.0** |  | 2008-08-01 A → 2008-10-08 (+68d) | 13d → 60d | 100% → 94% | none → 0d |  |  |
| 7 | Understanding EJB 3.0 |  |  |  |  |  | Issue with 1.6 → 5 |  |
| 11 | Fixing problem | 2008-07-29 A → 2008-08-04 A (+6d) | 2008-08-01 A → 2008-10-08 (+68d) |  | 100% → 75% | none → 0d | 9 → 10 | was named Testing and verifications; resources none → Lalit Chand |
| 14 | Query Module Release backend changes |  |  |  |  |  |  | constraint start no earlier than 2008-08-04 → none |
| 23 | **java 1.5** | 2008-07-10 → 2008-08-25 A (+46d) | 2008-07-11 → 2008-10-06 (+87d) | 2d? → 31d? | 0% → 43% | 53d → 2d |  |  |
| 24 | Identify changes for java 1.5 | 2008-07-10 → 2008-10-06 (+88d) | 2008-07-10 → 2008-10-06 (+88d) |  |  | 53d → 2d | none → 25 | was named Identify changes |
| 25 | Solution for client side java 6 components | 2008-07-11 → 2008-08-25 A (+45d) | 2008-07-11 → 2008-10-03 (+84d) | 1d? → 6d | 0% → 50% | 53d → 2d | 24 → 100 |  |
| 26 | **caB2B_Y3_001-Automatic cache update between admin and cab2b server** | 2008-08-27 → 2008-09-01 A (+5d) | 2008-09-09 → 2008-09-11 (+2d) | 10d? → 9d? | 0% → 56% | 12d → 19d |  |  |
| 27 | Requirement | 2008-08-27 → 2008-09-01 A (+5d) | 2008-08-27 → 2008-09-01 A (+5d) |  | 0% → 100% | 12d → none | 67 → 68 |  |
| 28 | **Investigation** | 2008-08-28 → 2008-09-02 A (+5d) | 2008-09-05 → 2008-09-09 (+4d) | 7d? → 6d? | 0% → 67% | 12d → 19d |  |  |
| 29 | Investigate Component | 2008-08-28 → 2008-09-02 A (+5d) | 2008-09-03 → 2008-09-05 A (+2d) | 5d → 4d | 0% → 100% | 12d → none |  |  |
| 30 | Developing Prototype | 2008-09-04 → 2008-09-08 (+4d) | 2008-09-04 → 2008-09-08 (+4d) |  |  | 12d → 19d |  |  |
| 31 | Design | 2008-09-05 → 2008-09-09 (+4d) | 2008-09-05 → 2008-09-09 (+4d) |  |  | 12d → 19d |  |  |
| 32 | **Implementation** | 2008-09-08 → 2008-09-10 (+2d) | 2008-09-09 → 2008-09-11 (+2d) |  |  | 12d → 19d |  |  |
| 33 | Separating out Implementation Deployment Unit | 2008-09-08 → 2008-09-10 (+2d) | 2008-09-08 → 2008-09-10 (+2d) |  |  | 12d → 19d |  |  |
| 34 | Changes needed in Deployment Process | 2008-09-09 → 2008-09-11 (+2d) | 2008-09-09 → 2008-09-11 (+2d) |  |  | 12d → 19d |  |  |
| 35 | **caB2B_Y3_005-User to override the URLs** |  | 2008-09-02 → 2008-09-04 A (+2d) | 14d → 16d | 93% → 100% | 17d → none |  |  |
| 39 | **Implementation** |  | 2008-09-02 → 2008-09-04 A (+2d) | 11d → 13d | 91% → 100% | 17d → none |  |  |
| 42 | Unit testing |  | 2008-09-02 A |  | 66% → 100% | 17d → none |  |  |
| 62 | **caB2B_Y3_008-Popular categories** |  | 2008-08-26 A → 2008-08-29 A (+3d) | 21d → 24d |  |  |  |  |
| 65 | **Implementation** |  | 2008-08-26 A → 2008-08-29 A (+3d) | 7d → 10d |  |  |  |  |
| 74 | **caArray caTissue Integration Bug# 8780** | 2008-07-14 → 2008-08-27 A (+44d) | 2008-07-23 → 2008-09-03 A (+42d) | 8d → 6d | 0% → 100% | 45d → none |  | was named caArray caTissue Integration |
| 75 | Investigation | 2008-07-14 → 2008-08-27 A (+44d) | 2008-07-16 → 2008-08-28 A (+43d) | 3d → 2d | 0% → 100% | 45d → none | none → 92 |  |
| 76 | Testing Patch | 2008-07-17 → 2008-08-29 A (+43d) | 2008-07-18 → 2008-09-01 A (+45d) |  | 0% → 100% | 45d → none |  |  |
| 77 | Pushing patch into WashU instance | 2008-07-21 → 2008-09-02 A (+43d) | 2008-07-23 → 2008-09-03 A (+42d) | 3d → 2d | 0% → 100% | 45d → none |  |  |
| 78 | **Exposing CQL’s on the User Interface** | 2008-08-28 A | 2008-09-17 → 2008-09-25 (+8d) | 15d → 21d | 0% → 29% | 6d → 9d |  |  |
| 79 | Requirement | 2008-08-28 A | 2008-09-02 → 2008-08-28 A (-5d) | 4d → 1d | 0% → 100% | 6d → none | none → 100 | constraint finish no earlier than 2008-09-02 → none; resources none → Lalit Chand |
| 82 | UI mockups | 2008-09-03 → 2008-09-11 (+8d) | 2008-09-03 → 2008-09-11 (+8d) |  |  | 6d → 7d | 79 → 81 | resources none → Lalit Chand |
| 83 | Design | 2008-09-04 → 2008-09-12 (+8d) | 2008-09-05 → 2008-09-15 (+10d) |  |  | 6d → 7d |  | resources none → Lalit Chand |
| 84 | **Implementation** | 2008-09-08 → 2008-09-16 (+8d) | 2008-09-17 → 2008-09-25 (+8d) |  |  | 6d → 9d |  |  |
| 85 | UI implementation | 2008-09-08 → 2008-09-16 (+8d) | 2008-09-11 → 2008-09-19 (+8d) |  |  | 6d → 7d |  | resources none → Lalit Chand |
| 86 | Backend integration | 2008-09-12 → 2008-09-22 (+10d) | 2008-09-17 → 2008-09-25 (+8d) |  |  | 6d → 7d |  | resources none → Lalit Chand |
| 87 | Knowledge Transfer from Deepak | 2008-09-03 → 2008-09-05 (+2d) | 2008-09-16 → 2008-09-18 (+2d) |  |  | 7d → 13d | 18 → none | constraint start no earlier than 2008-09-03 → start no earlier than 2008-09-05 |
| 88 | **Bugs Fixing** |  | 2008-08-29 A → 2008-09-08 A (+10d) | 21d → 27d |  |  |  |  |
| 91 | Bug 9090 & 9138 fix | 2008-08-26 A → 2008-08-21 A (-5d) | 2008-08-27 A → 2008-08-22 A (-5d) |  |  |  | none → 14 | constraint finish no earlier than 2008-08-27 → none |
| 92 | Bug 9221 fix | 2008-08-28 A → 2008-08-25 A (-3d) | 2008-08-29 A → 2008-08-26 A (-3d) |  |  |  | none → 91 | constraint finish no earlier than 2008-08-29 → none |
| 98 | **Future Releases** |  | 2008-09-25 → 2008-08-27 (-29d) | 53d? → 32d? | 2% → 3% | 0d → 30d |  | was named Milestone 2 |
| 99 | **Representing grid user in caB2B** | 2008-07-14 A | 2008-07-14 → 2008-08-12 (+29d) | 1d? → 22d? | 0% → 67% | 52d → 30d |  |  |
| 100 | Investigating APIs needed | 2008-07-14 → 2008-08-07 A (+24d) | 2008-07-14 → 2008-08-12 A (+29d) | 1d? → 4d | 0% → 100% | 52d → none |  | resources none → Lalit Chand |
| 104 | **caB2B_Y3_002-User based experiments** | 2008-07-14 → 2008-08-13 (+30d) | 2008-07-18 → 2008-08-20 (+33d) |  |  | 43d → 30d | none → 99 |  |
| 105 | Requirement | 2008-07-14 → 2008-08-13 (+30d) | 2008-07-14 → 2008-08-13 (+30d) |  |  | 43d → 21d |  |  |
| 106 | Design | 2008-07-15 → 2008-08-14 (+30d) | 2008-07-15 → 2008-08-14 (+30d) |  |  | 43d → 21d |  |  |
| 107 | **Implementation** | 2008-07-16 → 2008-08-18 (+33d) | 2008-07-18 → 2008-08-20 (+33d) |  |  | 43d → 30d |  |  |
| 108 | Saving experiments on user basis | 2008-07-16 → 2008-08-18 (+33d) | 2008-07-16 → 2008-08-18 (+33d) |  |  | 43d → 21d |  |  |
| 109 | Changes needed at client-server interface to pass user info | 2008-07-17 → 2008-08-19 (+33d) | 2008-07-17 → 2008-08-19 (+33d) |  |  | 43d → 21d |  |  |
| 110 | Fetch and display experiments based on user | 2008-07-18 → 2008-08-20 (+33d) | 2008-07-18 → 2008-08-20 (+33d) |  |  | 43d → 21d |  |  |
| 111 | **caB2B_Y3_003-User based saved queries** | 2008-07-21 → 2008-08-21 (+31d) | 2008-07-25 → 2008-08-27 (+33d) |  |  | 43d → 30d |  |  |
| 112 | Requirement | 2008-07-21 → 2008-08-21 (+31d) | 2008-07-21 → 2008-08-21 (+31d) |  |  | 43d → 21d |  |  |
| 113 | Design | 2008-07-22 → 2008-08-22 (+31d) | 2008-07-22 → 2008-08-22 (+31d) |  |  | 43d → 21d |  |  |
| 114 | **Implementation** | 2008-07-23 → 2008-08-25 (+33d) | 2008-07-25 → 2008-08-27 (+33d) |  |  | 43d → 30d |  |  |
| 115 | Saving queries on user basis | 2008-07-23 → 2008-08-25 (+33d) | 2008-07-23 → 2008-08-25 (+33d) |  |  | 43d → 20d |  |  |
| 116 | Changes needed at client-server interface to pass user info | 2008-07-24 → 2008-08-26 (+33d) | 2008-07-24 → 2008-08-26 (+33d) |  |  | 43d → 20d |  |  |
| 117 | Fetch and display experiments based on user | 2008-07-25 → 2008-08-27 (+33d) | 2008-07-25 → 2008-08-27 (+33d) |  |  | 43d → 20d |  |  |
| 118 | **Schedular component + notification functionality** | 2008-07-29 A → 2008-07-14 (-15d) | 2008-09-18 → 2008-08-04 (-45d) | 37d → 16d | 13% → 0% | 0d → 41d |  |  |
| 119 | **Schedular** | 2008-07-29 A → 2008-07-14 (-15d) | 2008-09-05 → 2008-07-22 (-45d) | 28d → 7d | 29% → 0% | 0d → 40d |  |  |
| 120 | Investigate Component | 2008-07-29 A → 2008-07-14 (-15d) | 2008-07-30 A → 2008-07-15 (-15d) |  | 100% → 0% | none → 31d |  | resources Chetan Patil → none |
| 121 | Developing Prototype | 2008-09-01 → 2008-07-16 (-47d) | 2008-09-05 → 2008-07-22 (-45d) |  |  | 0d → 31d | none → 120 | constraint start no earlier than 2008-09-01 → none; resources Chetan Patil → none |
| 122 | **Notification** | 2008-09-08 → 2008-07-23 (-47d) | 2008-09-18 → 2008-08-04 (-45d) |  |  | 0d → 40d |  |  |
| 123 | UI mockup | 2008-09-08 → 2008-07-23 (-47d) | 2008-09-08 → 2008-07-23 (-47d) |  |  | 0d → 26d |  | resources Chetan Patil → none |
| 124 | UI implementation | 2008-09-09 → 2008-07-24 (-47d) | 2008-09-11 → 2008-07-28 (-45d) |  |  | 0d → 26d |  | resources Chetan Patil → none |
| 125 | Backend Implementation | 2008-09-12 → 2008-07-29 (-45d) | 2008-09-18 → 2008-08-04 (-45d) |  |  | 0d → 26d |  | resources Chetan Patil → none |
| 126 | **caB2B_Y3_004-Asynchronous execution of queries** | 2008-09-19 → 2008-08-05 (-45d) | 2008-09-25 → 2008-08-11 (-45d) |  |  | 0d → 41d |  |  |
| 127 | Requirement | 2008-09-19 → 2008-08-05 (-45d) | 2008-09-19 → 2008-08-05 (-45d) |  |  | 0d → 26d |  |  |
| 128 | Design | 2008-09-22 → 2008-08-06 (-47d) | 2008-09-22 → 2008-08-06 (-47d) |  |  | 0d → 26d |  |  |
| 129 | **Implementation** | 2008-09-23 → 2008-08-07 (-47d) | 2008-09-25 → 2008-08-11 (-45d) |  |  | 0d → 40d |  |  |
| 130 | Represent schedule | 2008-09-23 → 2008-08-07 (-47d) | 2008-09-23 → 2008-08-07 (-47d) |  |  | 0d → 26d |  |  |
| 131 | Storing schedule and firing jobs | 2008-09-24 → 2008-08-08 (-47d) | 2008-09-24 → 2008-08-08 (-47d) |  |  | 0d → 26d |  |  |

| ID | Task | Start | Finish | Total float |
| --- | --- | --- | --- | --- |
| 132 | Implementing job for query execution | 2008-09-25 → 2008-08-11 (-45d) | 2008-09-25 → 2008-08-11 (-45d) | 0d → 26d |

## Version 8 (saved 2008-09-08)

Note of the change: feature arrangenments for 3 releases

Last finish stays 2008-10-08.

Added:

| ID | Task | Duration | Start | Finish | Predecessors | Resources |
| --- | --- | --- | --- | --- | --- | --- |
| 36 | Investigating APIs needed | 4d | 2008-08-07 A | 2008-08-12 A |  | Lalit Chand |
| 37 | Design to store user identity locally | 1d? | 2008-07-14 | 2008-07-14 |  | Lalit Chand |
| 38 | Design review by external parties | 1d? | 2008-07-14 | 2008-07-14 |  | Lalit Chand |
| 114 | **Documents** | 13d | 2008-07-14 | 2008-07-30 |  |  |
| 115 | Requirements | 3d | 2008-07-14 | 2008-07-16 |  |  |
| 116 | cab2b design document | 5d | 2008-07-17 | 2008-07-23 | 115 |  |
| 117 | caB2B user manual | 5d | 2008-07-24 | 2008-07-30 | 116 |  |
| 119 | **Year 3 Release2** | 43d? | 2008-07-14 A | 2008-09-11 |  |  |
| 129 | Investigation | 1d? | 2008-07-14 | 2008-07-14 |  |  |
| 151 | **Design** | 3d? | 2008-09-04 | 2008-09-08 | 143 |  |
| 152 | Implementation | 1d? | 2008-09-04 | 2008-09-04 |  |  |
| 155 | **Representing grid user in caB2B** | 3d? | 2008-09-09 | 2008-09-11 | 154 |  |
| 157 | Schedular component + notification functionality | 1d? | 2008-09-10 | 2008-09-10 | 156 |  |
| 169 | Investigation | 1d? | 2008-07-14 | 2008-07-14 |  |  |
| 186 | Investigation | 1d? | 2008-07-14 | 2008-07-14 |  |  |
| 193 | caB2B_Y3_020Technology Stack Migration | 1d? | 2008-07-14 | 2008-07-14 |  |  |
| 194 | **Year 3 Release3** | 1d? | 2008-07-14 | 2008-07-14 |  |  |
| 197 | Investigation | 1d? | 2008-07-14 | 2008-07-14 |  |  |
| 198 | **Investigate Component** | 1d? | 2008-07-14 | 2008-07-14 |  |  |
| 201 | Implementation | 1d? | 2008-07-14 | 2008-07-14 |  |  |
| 223 | Metadata that has been searched for should be highlighted in the Add Limit panel. | 1d? | 2008-07-14 | 2008-07-14 |  |  |
| 224 | Expansion of categories to create category across different applications | 1d? | 2008-07-14 | 2008-07-14 |  |  |
| 227 | Investigation | 1d? | 2008-07-14 | 2008-07-14 |  |  |
| 229 | **Developing Prototype** | 1d? | 2008-07-14 | 2008-07-14 |  |  |
| 259 | Documentation Review | 1d? | 2008-07-14 | 2008-07-14 |  |  |

Removed: 117 Fetch and display experiments based on user; 118 Schedular component + notification functionality; 153 Investigation; 170 Investigation; 179 Investigation; 191 Design; 192 Implementation; 196 Requirement; 197 Investigation; 198 Investigate Component; 199 Developing Prototype; 200 Design; 201 Implementation; 248 Documentation Review

Changed:

| ID | Task | Start | Finish | Duration | Complete | Total float | Predecessors | Other |
| --- | --- | --- | --- | --- | --- | --- | --- | --- |
| 1 | **Year 3 Release1** |  |  |  | 72% → 62% |  |  | was named Year 3 M1 |
| 13 | Query Module Release UI |  |  |  |  |  | 69 → none |  |
| 14 | Query Module Release backend changes |  |  |  |  |  | 106 → none |  |
| 25 | Solution for client side java 6 components |  |  |  |  |  | 139 → none |  |
| 39 | **caB2B_Y3_002-User based experiments** | 2008-08-13 → 2008-08-25 (+12d) | 2008-08-20 → 2008-08-29 (+9d) |  |  | 30d → 19d |  |  |
| 40 | Requirement | 2008-08-13 A → 2008-08-25 (+12d) | 2008-08-13 A → 2008-08-25 (+12d) | 1d → 1d? | 100% → 0% | none → 19d | 77 → none | resources Atul Jawale → Lalit Chand |
| 41 | Design | 2008-08-18 A → 2008-08-26 (+8d) | 2008-08-18 A → 2008-08-26 (+8d) | 1d → 1d? | 100% → 0% | none → 19d | 97 → 40 | resources Atul Jawale → Lalit Chand |
| 42 | **Implementation** | 2008-08-19 A → 2008-08-27 (+8d) | 2008-09-04 A → 2008-08-29 (-6d) | 13d → 3d? | 100% → 0% | none → 19d |  |  |
| 43 | Saving experiments on user basis | 2008-08-18 → 2008-08-27 (+9d) | 2008-08-18 → 2008-08-27 (+9d) |  |  | 21d → 19d | 48 → none | resources none → Lalit Chand |
| 44 | Changes needed at client-server interface to pass user info | 2008-08-19 → 2008-08-28 (+9d) | 2008-08-19 → 2008-08-28 (+9d) |  |  | 21d → 19d |  | resources none → Lalit Chand |
| 45 | Fetch and display experiments based on user | 2008-08-20 → 2008-08-29 (+9d) | 2008-08-20 → 2008-08-29 (+9d) |  |  | 21d → 19d |  | resources none → Lalit Chand |
| 46 | **caB2B_Y3_003-User based saved queries** | 2008-08-21 → 2008-08-13 (-8d) | 2008-08-27 → 2008-08-13 (-14d) | 5d? → 1d? |  |  | none → 35 |  |
| 48 | Design | 2008-08-14 → 2008-08-13 (-1d) | 2008-08-14 → 2008-08-13 (-1d) |  |  | 21d → 30d | 47 → none |  |
| 49 | **Implementation** | 2008-08-18 → 2008-08-13 (-5d) | 2008-08-20 → 2008-08-13 (-7d) | 3d? → 1d? |  |  |  |  |
| 50 | Saving queries on user basis | 2008-08-25 → 2008-08-13 (-12d) | 2008-08-25 → 2008-08-13 (-12d) |  |  | 20d → 30d | 98 → none |  |
| 51 | Changes needed at client-server interface to pass user info | 2008-08-26 → 2008-08-13 (-13d) | 2008-08-26 → 2008-08-13 (-13d) |  |  | 20d → 30d | 50 → none |  |
| 86 | **Exposing CQL’s on the User Interface** |  | 2008-09-25 → 2008-09-24 (-1d) | 21d → 20d | 29% → 25% | 9d → 1d |  |  |
| 87 | Requirement |  | 2008-08-28 A → 2008-08-28 |  | 100% → 0% | none → 20d |  | resources Lalit Chand → Chetan Patil |
| 89 | Understanding existing implementation |  |  |  |  | 7d → 1d |  | resources Lalit Chand → Chetan Patil |
| 90 | UI mockups |  |  |  |  | 7d → 1d |  | resources Lalit Chand → Atul Jawale |
| 91 | Design |  | 2008-09-15 → 2008-09-12 (-3d) | 2d → 1d |  | 7d → 1d |  | resources Lalit Chand → Atul Jawale; Chetan Patil |
| 92 | **Implementation** | 2008-09-16 → 2008-09-15 (-1d) | 2008-09-25 → 2008-09-24 (-1d) |  |  | 9d → 1d |  |  |
| 93 | UI implementation | 2008-09-16 → 2008-09-15 (-1d) | 2008-09-19 → 2008-09-18 (-1d) |  |  | 7d → 1d |  | resources Lalit Chand → Atul Jawale |
| 94 | Backend integration | 2008-09-22 → 2008-09-19 (-3d) | 2008-09-25 → 2008-09-24 (-1d) |  |  | 7d → 1d |  | resources Lalit Chand → Chetan Patil |
| 96 | Requirement | 2008-08-21 → 2008-08-13 A (-8d) | 2008-08-21 → 2008-08-13 A (-8d) | 1d? → 1d | 0% → 100% | 21d → none | 39 → none | resources none → Atul Jawale |
| 97 | UI mockups |  |  |  |  |  | 40 → 96 |  |
| 98 | Design | 2008-08-22 → 2008-08-18 A (-4d) | 2008-08-22 → 2008-08-18 A (-4d) | 1d? → 1d | 0% → 100% | 21d → none | 96 → 97 | resources none → Atul Jawale |
| 99 | **Implementation** | 2008-08-25 → 2008-08-19 A (-6d) | 2008-08-27 → 2008-09-04 A (+8d) | 3d? → 13d | 0% → 100% | 30d → none | none → 98 |  |
| 108 | Bug 9090 & 9138 fix |  |  |  |  |  | 14 → none |  |
| 113 | QA cycle | 2008-07-14 → 2008-09-25 (+73d) | 2008-07-22 → 2008-10-03 (+73d) |  |  | 46d → 1d | none → 26, 39, 46, 52, 61, 70, 77, 82, 86, 105, 95 | resources none → Madhumita |
| 118 | Release Activity | 2008-07-14 → 2008-10-06 (+84d) | 2008-07-15 → 2008-10-07 (+84d) |  |  | 51d → 1d | none → 113, 117 |  |
| 120 | **caB2B_Y3_004-Asynchronous execution of queries** | 2008-08-05 → 2008-07-14 (-22d) | 2008-08-11 → 2008-07-14 (-28d) | 5d? → 1d? |  | 41d → 61d | Schedular component + notification functionality → none |  |
| 121 | Requirement | 2008-08-05 → 2008-07-14 (-22d) | 2008-08-05 → 2008-07-14 (-22d) |  |  | 26d → 61d |  |  |
| 122 | Design | 2008-08-06 → 2008-07-14 (-23d) | 2008-08-06 → 2008-07-14 (-23d) |  |  | 26d → 61d | 121 → none |  |
| 123 | **Implementation** | 2008-08-07 → 2008-07-14 (-24d) | 2008-08-11 → 2008-07-14 (-28d) | 3d? → 1d? |  | 40d → 61d | 122 → none |  |
| 124 | Represent schedule | 2008-08-07 → 2008-07-14 (-24d) | 2008-08-07 → 2008-07-14 (-24d) |  |  | 26d → 61d |  |  |
| 125 | Storing schedule and firing jobs | 2008-08-08 → 2008-07-14 (-25d) | 2008-08-08 → 2008-07-14 (-25d) |  |  | 26d → 61d | 124 → none |  |
| 126 | Implementing job for query execution | 2008-08-11 → 2008-07-14 (-28d) | 2008-08-11 → 2008-07-14 (-28d) |  |  | 26d → 61d | 125 → none |  |
| 127 | **caB2B_Y3_012-Asynchronous of save data list** |  | 2008-08-01 → 2008-07-14 (-18d) | 15d? → 1d? |  | 47d → 61d |  |  |
| 136 | **caB2B_Y3_016-Support basic analytical services (support for ICR services, if needed, do customizations)** | 2008-07-14 A | 2008-07-14 → 2008-09-11 (+59d) | 1d? → 43d? | 0% → 6% | 61d → 19d |  |  |
| 137 | **Requirement** |  | 2008-08-27 → 2008-09-11 (+15d) | 32d? → 43d? | 3% → 6% | 30d → 19d |  | was named Future Releases |
| 138 | **Investigation** | 2008-07-14 A | 2008-07-14 → 2008-08-12 (+29d) | 1d? → 22d? | 0% → 67% | 60d → 40d |  |  |
| 143 | Developing Prototype |  | 2008-07-14 → 2008-09-03 (+51d) | 1d? → 37d |  | 52d → 19d |  |  |
| 153 | Separating out Implementation Deployment Unit | 2008-07-14 → 2008-09-05 (+53d) | 2008-07-14 → 2008-09-05 (+53d) |  |  | 52d → 19d | none → 152 |  |
| 154 | Changes needed in Deployment Process | 2008-08-01 → 2008-09-08 (+38d) | 2008-08-01 → 2008-09-08 (+38d) |  |  | 38d → 19d | none → 153 | constraint finish no earlier than 2008-08-01 → none |
| 156 | Expansion of categories | 2008-07-14 → 2008-09-09 (+57d) | 2008-07-14 → 2008-09-09 (+57d) |  |  | 61d → 19d |  |  |
| 164 | **Implementation** |  | 2008-08-01 → 2008-07-14 (-18d) | 15d? → 1d? |  | 46d → 61d |  |  |
| 200 | **Design** |  |  |  |  | 60d → 61d |  | was named Investigation |

## Version 9 (saved 2008-09-15)

Note of the change: *** empty log message ***

Last finish 2008-10-08 → 2008-10-17 (+9d). Complete tasks 53 → 56.

Changed:

| ID | Task | Start | Finish | Duration | Complete | Total float | Predecessors | Other |
| --- | --- | --- | --- | --- | --- | --- | --- | --- |
| 1 | **Year 3 Release1** |  | 2008-10-08 → 2008-10-17 (+9d) | 62d? → 69d? | 62% → 63% |  |  |  |
| 2 | **caB2B_Y3_020Technology Stack Migration** |  |  | 62d? → 62d | 55% → 72% | 0d → 7d |  |  |
| 6 | **Migrate to EJB 3.0** |  |  |  | 94% → 98% | 0d → 6d |  |  |
| 11 | Verification |  |  |  | 75% → 90% | 0d → 6d |  | was named Fixing problem |
| 15 | **Moving to caGrid 1.2** | 2008-08-25 A | 2008-08-29 A |  | 0% → 100% | 28d → none |  |  |
| 16 | caB2B Finding & Replacing appropriate jars | 2008-08-25 A | 2008-08-26 A |  | 0% → 100% | 28d → none |  |  |
| 17 | Admin Finding & Replacing appropriate jars | 2008-08-27 A | 2008-08-28 A |  | 0% → 100% | 28d → none |  |  |
| 18 | Testing | 2008-08-29 A | 2008-08-29 A |  | 0% → 100% | 28d → none |  |  |
| 23 | **java 1.5** | 2008-08-25 A → 2008-09-08 A (+14d) | 2008-10-06 → 2008-09-12 A (-24d) | 31d? → 5d | 43% → 100% | 2d → none |  |  |
| 24 | Identify changes for java 1.5 | 2008-10-06 → 2008-09-08 A (-28d) | 2008-10-06 → 2008-09-12 A (-24d) | 1d? → 5d | 0% → 100% | 2d → none |  | constraint start no earlier than 2008-07-10 → finish no earlier than 2008-09-12 |
| 25 | Solution for client side java 6 components | 2008-08-25 A → 2008-09-08 A (+14d) | 2008-10-03 → 2008-09-12 A (-21d) | 6d → 3d | 50% → 100% | 2d → none |  |  |
| 26 | **caB2B_Y3_001-Automatic cache update between admin and cab2b server** |  | 2008-09-11 → 2008-09-29 (+18d) | 9d? → 21d? | 56% → 16% | 10d → 5d |  |  |
| 28 | **Investigation** |  | 2008-09-09 → 2008-09-25 (+16d) | 6d? → 18d | 67% → 13% | 10d → 4d |  |  |
| 29 | Investigate Component |  | 2008-09-05 A → 2008-09-19 (+14d) | 4d → 14d | 100% → 17% | none → 4d |  | constraint none → finish no earlier than 2008-09-19 |
| 30 | Developing Prototype | 2008-09-08 → 2008-09-22 (+14d) | 2008-09-08 → 2008-09-23 (+15d) | 1d? → 2d |  | 10d → 4d |  |  |
| 31 | Design | 2008-09-09 → 2008-09-24 (+15d) | 2008-09-09 → 2008-09-25 (+16d) | 1d? → 2d |  | 10d → 4d |  |  |
| 32 | **Implementation** | 2008-09-10 → 2008-09-26 (+16d) | 2008-09-11 → 2008-09-29 (+18d) |  |  | 10d → 4d |  |  |
| 33 | Separating out Implementation Deployment Unit | 2008-09-10 → 2008-09-26 (+16d) | 2008-09-10 → 2008-09-26 (+16d) |  |  | 10d → 4d |  |  |
| 34 | Changes needed in Deployment Process | 2008-09-11 → 2008-09-29 (+18d) | 2008-09-11 → 2008-09-29 (+18d) |  |  | 10d → 4d |  |  |
| 86 | **Exposing CQL’s on the User Interface** |  | 2008-09-24 → 2008-10-06 (+12d) | 20d → 28d | 25% → 35% | 1d → 0d |  |  |
| 87 | Requirement |  | 2008-08-28 → 2008-09-23 (+26d) | 1d → 14d | 0% → 10% | 20d → 9.4d |  | constraint none → finish no earlier than 2008-09-16 |
| 89 | Understanding existing implementation | 2008-09-05 A | 2008-09-10 A |  | 0% → 100% | 1d → none |  |  |
| 90 | UI mockups | 2008-09-11 → 2008-09-22 A (+11d) | 2008-09-11 → 2008-09-22 A (+11d) |  | 0% → 100% | 1d → none |  | constraint none → finish no earlier than 2008-09-22 |
| 91 | Design | 2008-09-12 → 2008-09-24 (+12d) | 2008-09-12 → 2008-09-24 (+12d) |  |  | 1d → 0d | 90 → none | constraint none → start no earlier than 2008-09-24 |
| 92 | **Implementation** | 2008-09-15 → 2008-09-25 (+10d) | 2008-09-24 → 2008-10-06 (+12d) |  |  | 1d → 0d |  |  |
| 93 | UI implementation | 2008-09-15 → 2008-09-25 (+10d) | 2008-09-18 → 2008-09-30 (+12d) |  |  | 1d → 0d |  |  |
| 94 | Backend integration | 2008-09-19 → 2008-10-01 (+12d) | 2008-09-24 → 2008-10-06 (+12d) |  |  | 1d → 0d |  |  |
| 95 | **caB2B_Y3_005-User to override the URLs** |  | 2008-09-04 A → 2008-09-19 (+15d) | 16d → 27d | 100% → 79% | none → 11d |  |  |
| 99 | **Implementation** |  | 2008-09-04 A → 2008-09-19 (+15d) | 13d → 24d | 100% → 77% | none → 11d |  |  |
| 100 | UI implementation |  | 2008-08-22 A → 2008-09-15 A (+24d) | 4d → 20d |  |  | none → 98 | constraint none → finish no earlier than 2008-09-17 |
| 101 | Backend integration | 2008-08-25 A → 2008-09-16 (+22d) | 2008-08-28 A → 2008-09-17 (+20d) | 4d → 2d | 100% → 0% | none → -6d |  |  |
| 102 | Unit testing | 2008-08-29 A → 2008-09-18 (+20d) | 2008-09-02 A → 2008-09-19 (+17d) | 3d → 2d | 100% → 0% | none → -6d |  |  |
| 103 | UE enhanements | 2008-09-03 A → 2008-09-12 A (+9d) | 2008-09-04 A → 2008-09-15 (+11d) |  | 100% → 0% | none → 15d |  |  |
| 104 | Knowledge Transfer from Deepak | 2008-09-05 A |  |  | 0% → 40% |  |  |  |
| 107 | caTissue core service instance |  |  |  |  |  | none → 81 |  |
| 108 | Bug 9090 & 9138 fix |  |  |  |  |  | none → 14 |  |
| 113 | QA cycle | 2008-09-25 → 2008-10-07 (+12d) | 2008-10-03 → 2008-10-15 (+12d) |  |  | 1d → 0d |  |  |
| 118 | Release Activity | 2008-10-06 → 2008-10-16 (+10d) | 2008-10-07 → 2008-10-17 (+10d) |  |  | 1d → 0d |  |  |

## Version 10 (saved 2008-09-19)

Note of the change: *** empty log message ***

Last finish 2008-10-17 → 2008-10-15 (-2d). Complete tasks 56 → 59.

Added:

| ID | Task | Duration | Start | Finish | Predecessors | Constraint | Resources |
| --- | --- | --- | --- | --- | --- | --- | --- |
| 104 | **Showing results of a query grouped by the services** | 5d? | 2008-07-14 | 2008-07-18 |  |  |  |
| 105 | Requirement | 1d | 2008-07-14 | 2008-07-14 |  |  |  |
| 106 | UI mockups | 1d | 2008-07-15 | 2008-07-15 | 105 |  |  |
| 107 | Design | 1d? | 2008-07-16 | 2008-07-16 | 106 |  |  |
| 108 | **Implementation** | 2d? | 2008-07-17 | 2008-07-18 |  |  |  |
| 109 | UI implementation | 1d? | 2008-07-17 | 2008-07-17 | 107 |  |  |
| 110 | Backend integration | 1d? | 2008-07-18 | 2008-07-18 | 109 |  |  |
| 111 | **Shipping of metadata along with installer** | 2d | 2008-07-14 | 2008-07-15 |  |  |  |
| 112 | Changes in installation script | 1d | 2008-07-14 | 2008-07-14 |  |  | Chandrakant Talele |
| 113 | updating installation manuals | 1d | 2008-07-15 | 2008-07-15 | 112 |  | Chandrakant Talele |
| 123 | Bug # 9604 | 2d | 2008-09-18 | 2008-09-19 |  | start no earlier than 2008-09-18 |  |

Changed:

| ID | Task | Start | Finish | Duration | Complete | Total float | Predecessors | Other |
| --- | --- | --- | --- | --- | --- | --- | --- | --- |
| 1 | **Year 3 Release1** |  | 2008-10-17 → 2008-10-15 (-2d) | 69d? → 67d? | 63% → 70% |  |  |  |
| 2 | **caB2B_Y3_020Technology Stack Migration** |  | 2008-10-08 → 2008-10-09 (+1d) | 62d → 63d |  | 7d → 4d |  |  |
| 19 | **New DE release** | 2008-07-14 → 2008-09-18 (+66d) | 2008-07-25 → 2008-10-09 (+76d) | 10d → 16d |  | 58d → 4d |  |  |
| 20 | Understand new design and identify changes | 2008-07-14 → 2008-09-18 (+66d) | 2008-07-15 → 2008-09-19 (+66d) |  |  | 66d → 6d |  | constraint none → start no earlier than 2008-09-18; resources none → Chandrakant Talele |
| 21 | Changs in cab2B and Admin | 2008-07-14 → 2008-09-22 (+70d) | 2008-07-25 → 2008-10-03 (+70d) |  |  | 58d → 6d | none → 20 | resources none → Chandrakant Talele |
| 22 | Verification | 2008-07-14 → 2008-10-06 (+84d) | 2008-07-17 → 2008-10-09 (+84d) |  |  | 64d → 6d | none → 21 | resources none → Chandrakant Talele |
| 26 | **caB2B_Y3_001-Automatic cache update between admin and cab2b server** |  |  |  | 16% → 65% | 5d → 3d |  |  |
| 28 | **Investigation** |  |  |  | 13% → 70% | 4d → 3d |  |  |
| 29 | Investigate Component |  |  |  | 17% → 90% | 4d → 3d |  |  |
| 35 | **Representing grid user in caB2B** | 2008-07-14 A → 2008-08-07 A (+24d) | 2008-08-12 → 2008-09-25 (+44d) | 22d? → 35d? | 67% → 68% | 33d → 0d |  |  |
| 37 | Design to store user identity locally | 2008-07-14 → 2008-09-15 A (+63d) | 2008-07-14 → 2008-09-24 (+72d) | 1d? → 8d | 0% → 60% | 53d → 0d | none → 36 |  |
| 38 | Design review by external parties | 2008-07-14 → 2008-09-25 (+73d) | 2008-07-14 → 2008-09-25 (+73d) |  |  | 53d → 0d | none → 37 |  |
| 39 | **caB2B_Y3_002-User based experiments** | 2008-08-25 → 2008-09-26 (+32d) | 2008-08-29 → 2008-10-02 (+34d) |  |  | 25d → 0d | 35 → none |  |
| 40 | Requirement | 2008-08-25 → 2008-09-26 (+32d) | 2008-08-25 → 2008-09-26 (+32d) |  |  | 25d → 0d | none → 35 |  |
| 41 | Design | 2008-08-26 → 2008-09-29 (+34d) | 2008-08-26 → 2008-09-29 (+34d) |  |  | 25d → 0d |  |  |
| 42 | **Implementation** | 2008-08-27 → 2008-09-30 (+34d) | 2008-08-29 → 2008-10-02 (+34d) |  |  | 25d → 0d |  |  |
| 43 | Saving experiments on user basis | 2008-08-27 → 2008-09-30 (+34d) | 2008-08-27 → 2008-09-30 (+34d) |  |  | 25d → 0d |  |  |
| 44 | Changes needed at client-server interface to pass user info | 2008-08-28 → 2008-10-01 (+34d) | 2008-08-28 → 2008-10-01 (+34d) |  |  | 25d → 0d |  |  |
| 45 | Fetch and display experiments based on user | 2008-08-29 → 2008-10-02 (+34d) | 2008-08-29 → 2008-10-02 (+34d) |  |  | 25d → 0d |  |  |
| 46 | **caB2B_Y3_003-User based saved queries** | 2008-08-13 → 2008-09-26 (+44d) | 2008-08-13 → 2008-09-26 (+44d) |  |  | 36d → 4d |  |  |
| 47 | Requirement | 2008-08-13 → 2008-09-26 (+44d) | 2008-08-13 → 2008-09-26 (+44d) |  |  | 36d → 4d |  |  |
| 48 | Design | 2008-08-13 → 2008-09-26 (+44d) | 2008-08-13 → 2008-09-26 (+44d) |  |  | 36d → 4d |  |  |
| 49 | **Implementation** | 2008-08-13 → 2008-09-26 (+44d) | 2008-08-13 → 2008-09-26 (+44d) |  |  | 36d → 4d |  |  |
| 50 | Saving queries on user basis | 2008-08-13 → 2008-09-26 (+44d) | 2008-08-13 → 2008-09-26 (+44d) |  |  | 36d → 4d |  |  |
| 51 | Changes needed at client-server interface to pass user info | 2008-08-13 → 2008-09-26 (+44d) | 2008-08-13 → 2008-09-26 (+44d) |  |  | 36d → 4d |  |  |
| 86 | **Exposing DCQL’s on the User Interface** |  | 2008-10-06 → 2008-10-02 (-4d) | 28d → 26d | 35% → 57% |  |  | was named Exposing CQL’s on the User Interface |
| 87 | Requirement |  | 2008-09-23 → 2008-08-28 A (-26d) | 14d → 1d | 10% → 100% | 9.4d → none |  |  |
| 90 | UI mockups |  |  |  |  |  | 89 → none |  |
| 91 | Design | 2008-09-24 → 2008-09-18 A (-6d) | 2008-09-24 → 2008-09-19 (-5d) | 1d → 2d | 0% → 50% | 0d → 9d |  |  |
| 92 | **Implementation** | 2008-09-25 → 2008-09-23 (-2d) | 2008-10-06 → 2008-10-02 (-4d) |  |  |  | 91 → none |  |
| 93 | UI implementation | 2008-09-25 → 2008-09-23 (-2d) | 2008-09-30 → 2008-09-26 (-4d) |  |  |  | none → 90 | constraint none → start no earlier than 2008-09-09 |
| 94 | Backend integration | 2008-10-01 → 2008-09-29 (-2d) | 2008-10-06 → 2008-10-02 (-4d) |  |  |  |  |  |
| 95 | **caB2B_Y3_005-User to override the URLs** |  | 2008-09-19 → 2008-09-23 (+4d) | 27d → 29d | 79% → 93% | 11d → 7d |  |  |
| 99 | **Implementation** |  | 2008-09-19 → 2008-09-23 (+4d) | 24d → 26d | 77% → 92% | 11d → 7d |  |  |
| 101 | Backend integration | 2008-09-16 → 2008-09-18 A (+2d) | 2008-09-17 → 2008-09-19 A (+2d) |  | 0% → 100% | -6d → none | 100 → none | constraint none → start no earlier than 2008-09-18 |
| 102 | Unit testing | 2008-09-18 → 2008-09-22 (+4d) | 2008-09-19 → 2008-09-23 (+4d) |  |  | -6d → 9d |  |  |
| 103 | UE enhanements |  | 2008-09-15 A |  | 0% → 100% | 15d → none |  |  |
| 114 | Knowledge Transfer from Deepak |  |  |  | 40% → 70% | 14d → 19d |  |  |
| 115 | **Bugs Fixing** |  | 2008-09-08 A → 2008-09-19 (+11d) | 27d → 36d | 100% → 83% | none → 9d |  |  |
| 124 | QA cycle | 2008-10-07 → 2008-10-03 (-4d) | 2008-10-15 → 2008-10-13 (-2d) |  |  |  |  |  |
| 129 | Release Activity | 2008-10-16 → 2008-10-14 (-2d) | 2008-10-17 → 2008-10-15 (-2d) |  |  |  |  |  |

## Version 11 (saved 2008-09-22)

Note of the change: *** empty log message ***

Last finish 2008-10-15 → 2008-10-17 (+2d). Complete tasks 59 → 60.

Added:

| ID | Task | Duration | Start | Finish | Resources |
| --- | --- | --- | --- | --- | --- |
| 115 | Service url at step 3 of search data wizard | 7d | 2008-07-14 | 2008-07-22 | Atul Jawale |

Changed:

| ID | Task | Start | Finish | Duration | Complete | Total float | Predecessors | Other |
| --- | --- | --- | --- | --- | --- | --- | --- | --- |
| 1 | **Year 3 Release1** |  | 2008-10-15 → 2008-10-17 (+2d) | 67d? → 69d? | 70% → 67% |  |  |  |
| 86 | **Exposing DCQL’s on the User Interface** |  | 2008-10-02 → 2008-10-06 (+4d) | 26d → 28d | 57% → 52% |  |  |  |
| 91 | Design | 2008-09-18 A → 2008-09-23 (+5d) | 2008-09-19 → 2008-09-24 (+5d) |  | 50% → 0% | 9d → 0d | none → 90 | constraint start no earlier than 2008-09-24 → none |
| 92 | **Implementation** | 2008-09-23 → 2008-09-25 (+2d) | 2008-10-02 → 2008-10-06 (+4d) |  |  |  |  |  |
| 93 | UI implementation | 2008-09-23 → 2008-09-25 (+2d) | 2008-09-26 → 2008-09-30 (+4d) |  |  |  | 90 → 91 |  |
| 94 | Backend integration | 2008-09-29 → 2008-10-01 (+2d) | 2008-10-02 → 2008-10-06 (+4d) |  |  |  |  |  |
| 95 | **caB2B_Y3_005-User to override the URLs** |  | 2008-09-23 → 2008-09-04 A (-19d) | 29d → 16d | 93% → 100% | 7d → none |  |  |
| 99 | **Implementation** |  | 2008-09-23 → 2008-09-04 A (-19d) | 26d → 13d | 92% → 100% | 7d → none |  |  |
| 100 | UI implementation |  | 2008-09-15 A → 2008-08-25 A (-21d) | 20d → 5d |  |  |  |  |
| 101 | Backend integration | 2008-09-18 A → 2008-08-26 A (-23d) | 2008-09-19 A → 2008-08-28 A (-22d) | 2d → 3d |  |  |  |  |
| 102 | Unit testing | 2008-09-22 → 2008-09-03 A (-19d) | 2008-09-23 → 2008-09-04 A (-19d) |  | 0% → 100% | 9d → none | 101 → 103 |  |
| 103 | UE enhanements | 2008-09-12 A → 2008-08-29 A (-14d) | 2008-09-15 A → 2008-09-02 A (-13d) | 2d → 3d |  |  | 102 → 101 |  |
| 114 | Knowledge Transfer from Deepak |  | 2008-09-18 → 2008-09-19 (+1d) | 10d → 11d | 70% → 64% | 19d → 20d |  |  |
| 125 | QA cycle | 2008-10-03 → 2008-10-07 (+4d) | 2008-10-13 → 2008-10-15 (+2d) |  |  |  |  |  |
| 130 | Release Activity | 2008-10-14 → 2008-10-16 (+2d) | 2008-10-15 → 2008-10-17 (+2d) |  |  |  |  |  |

## Version 12 (saved 2008-09-25)

Note of the change: *** empty log message ***

Last finish stays 2008-10-17. Complete tasks 60 → 67.

Changed:

| ID | Task | Start | Finish | Duration | Complete | Total float | Other |
| --- | --- | --- | --- | --- | --- | --- | --- |
| 1 | **Year 3 Release1** |  |  |  | 67% → 76% |  |  |
| 2 | **caB2B_Y3_020Technology Stack Migration** |  |  |  | 72% → 84% |  |  |
| 19 | **New DE release** | 2008-09-18 A |  |  | 0% → 44% |  |  |
| 20 | Understand new design and identify changes | 2008-09-18 A | 2008-09-19 A |  | 0% → 100% | 6d → none |  |
| 21 | Changs in cab2B and Admin | 2008-09-22 A |  |  | 0% → 50% |  |  |
| 26 | **caB2B_Y3_001-Automatic cache update between admin and cab2b server** |  | 2008-09-29 → 2008-09-30 (+1d) | 21d? → 22d | 65% → 99% | 5d → 4d |  |
| 28 | **Investigation** |  | 2008-09-25 A |  | 70% → 100% | 5d → none |  |
| 29 | Investigate Component |  | 2008-09-19 A |  | 90% → 100% | 5d → none |  |
| 30 | Developing Prototype | 2008-09-22 A | 2008-09-23 A |  | 0% → 100% | 4d → none |  |
| 31 | Design | 2008-09-24 A | 2008-09-25 A |  | 0% → 100% | 4d → none |  |
| 32 | **Implementation** | 2008-09-26 A | 2008-09-29 → 2008-09-30 (+1d) | 2d? → 3d | 0% → 90% | 5d → 4d |  |
| 33 | Separating out Implementation Deployment Unit | 2008-09-26 A | 2008-09-26 → 2008-09-29 A (+3d) | 1d? → 2d | 0% → 100% | 4d → none |  |
| 34 | Changes needed in Deployment Process | 2008-09-29 → 2008-09-30 A (+1d) | 2008-09-29 → 2008-09-30 (+1d) | 1d? → 1d | 0% → 70% |  | resources none → Hrishikesh Rajpathak |
| 35 | **Representing grid user in caB2B** |  | 2008-09-25 → 2008-09-29 (+4d) | 35d? → 37d? | 68% → 67% | 2d → 0d |  |
| 37 | Design to store user identity locally |  | 2008-09-24 → 2008-09-26 (+2d) | 8d → 10d |  | 2d → 0d |  |
| 38 | Design review by external parties | 2008-09-25 → 2008-09-29 (+4d) | 2008-09-25 → 2008-09-29 (+4d) |  |  | 2d → 0d |  |
| 39 | **caB2B_Y3_002-User based experiments** | 2008-09-26 → 2008-09-30 (+4d) | 2008-10-02 → 2008-10-06 (+4d) |  |  | 2d → 0d |  |
| 40 | Requirement | 2008-09-26 → 2008-09-30 (+4d) | 2008-09-26 → 2008-09-30 (+4d) |  |  | 2d → 0d |  |
| 41 | Design | 2008-09-29 → 2008-10-01 (+2d) | 2008-09-29 → 2008-10-01 (+2d) |  |  | 2d → 0d |  |
| 42 | **Implementation** | 2008-09-30 → 2008-10-02 (+2d) | 2008-10-02 → 2008-10-06 (+4d) |  |  | 2d → 0d |  |
| 43 | Saving experiments on user basis | 2008-09-30 → 2008-10-02 (+2d) | 2008-09-30 → 2008-10-02 (+2d) |  |  | 2d → 0d |  |
| 44 | Changes needed at client-server interface to pass user info | 2008-10-01 → 2008-10-03 (+2d) | 2008-10-01 → 2008-10-03 (+2d) |  |  | 2d → 0d |  |
| 45 | Fetch and display experiments based on user | 2008-10-02 → 2008-10-06 (+4d) | 2008-10-02 → 2008-10-06 (+4d) |  |  | 2d → 0d |  |
| 46 | **caB2B_Y3_003-User based saved queries** | 2008-09-26 → 2008-09-30 (+4d) | 2008-09-26 → 2008-09-30 (+4d) |  |  | 6d → 4d |  |
| 47 | Requirement | 2008-09-26 → 2008-09-30 (+4d) | 2008-09-26 → 2008-09-30 (+4d) |  |  | 4d → 2d |  |
| 48 | Design | 2008-09-26 → 2008-09-30 (+4d) | 2008-09-26 → 2008-09-30 (+4d) |  |  | 4d → 2d |  |
| 49 | **Implementation** | 2008-09-26 → 2008-09-30 (+4d) | 2008-09-26 → 2008-09-30 (+4d) |  |  | 6d → 4d |  |
| 50 | Saving queries on user basis | 2008-09-26 → 2008-09-30 (+4d) | 2008-09-26 → 2008-09-30 (+4d) |  |  | 4d → 2d |  |
| 51 | Changes needed at client-server interface to pass user info | 2008-09-26 → 2008-09-30 (+4d) | 2008-09-26 → 2008-09-30 (+4d) |  |  | 4d → 2d |  |
| 86 | **Exposing DCQL’s on the User Interface** |  |  |  | 52% → 79% |  |  |
| 91 | Design | 2008-09-23 A | 2008-09-24 A |  | 0% → 100% | 0d → none |  |
| 92 | **Implementation** | 2008-09-25 A |  |  | 0% → 45% |  |  |
| 93 | UI implementation | 2008-09-25 A |  |  | 0% → 80% | 0d → 0.4d |  |
| 94 | Backend integration | 2008-10-01 A |  |  | 0% → 10% |  |  |
| 114 | Knowledge Transfer from Deepak |  | 2008-09-19 A |  | 64% → 100% | 20d → none |  |

## Version 13 (saved 2008-09-26)

Note of the change: *** empty log message ***

Last finish 2008-10-17 → 2008-10-24 (+7d).

Added:

| ID | Task | Duration | Start | Finish | Predecessors | Constraint | Resources |
| --- | --- | --- | --- | --- | --- | --- | --- |
| 116 | Service URL analysis | 2d | 2008-09-17 | 2008-09-18 |  | start no earlier than 2008-09-17 | Atul Jawale |
| 117 | Service URL UI updation | 2d | 2008-09-19 | 2008-09-22 | 116 |  | Atul Jawale |
| 118 | Service URL backend change and integration | 4d | 2008-09-23 | 2008-09-26 | 117 |  | Atul Jawale |

Changed:

| ID | Task | Start | Finish | Duration | Total float | Other |
| --- | --- | --- | --- | --- | --- | --- |
| 1 | **Year 3 Release1** |  | 2008-10-17 → 2008-10-24 (+7d) | 69d? → 74d? |  |  |
| 104 | **Showing results of a query grouped by the services** | 2008-07-14 → 2008-09-29 (+77d) | 2008-07-18 → 2008-10-03 (+77d) |  | 64d → 15d |  |
| 105 | Requirement | 2008-07-14 → 2008-09-29 (+77d) | 2008-07-14 → 2008-09-29 (+77d) |  | 64d → 10d | constraint none → start no earlier than 2008-09-29 |
| 106 | UI mockups | 2008-07-15 → 2008-09-30 (+77d) | 2008-07-15 → 2008-09-30 (+77d) |  | 64d → 10d |  |
| 107 | Design | 2008-07-16 → 2008-10-01 (+77d) | 2008-07-16 → 2008-10-01 (+77d) |  | 64d → 10d |  |
| 108 | **Implementation** | 2008-07-17 → 2008-10-02 (+77d) | 2008-07-18 → 2008-10-03 (+77d) |  | 64d → 10d |  |
| 109 | UI implementation | 2008-07-17 → 2008-10-02 (+77d) | 2008-07-17 → 2008-10-02 (+77d) |  | 64d → 10d |  |
| 110 | Backend integration | 2008-07-18 → 2008-10-03 (+77d) | 2008-07-18 → 2008-10-03 (+77d) |  | 64d → 10d |  |
| 111 | **Shipping of metadata along with installer** | 2008-07-14 → 2008-09-29 (+77d) | 2008-07-15 → 2008-09-30 (+77d) |  | 67d → 18d |  |
| 112 | Changes in installation script | 2008-07-14 → 2008-09-29 (+77d) | 2008-07-14 → 2008-09-29 (+77d) |  | 67d → 18d | constraint none → start no earlier than 2008-09-29 |
| 113 | updating installation manuals | 2008-07-15 → 2008-09-30 (+77d) | 2008-07-15 → 2008-09-30 (+77d) |  | 67d → 18d |  |
| 115 | **Service url at step 3 of search data wizard** | 2008-07-14 → 2008-09-17 (+65d) | 2008-07-22 → 2008-09-26 (+66d) | 7d → 8d | 62d → 15d | resources Atul Jawale → none |
| 129 | **Documents** | 2008-07-14 → 2008-10-06 (+84d) | 2008-07-30 → 2008-10-22 (+84d) |  | 54d → 0d |  |
| 130 | Requirements | 2008-07-14 → 2008-10-06 (+84d) | 2008-07-16 → 2008-10-08 (+84d) |  | 54d → 0d | constraint none → start no earlier than 2008-10-06 |
| 131 | cab2b design document | 2008-07-17 → 2008-10-09 (+84d) | 2008-07-23 → 2008-10-15 (+84d) |  | 54d → 0d |  |
| 132 | caB2B user manual | 2008-07-24 → 2008-10-16 (+84d) | 2008-07-30 → 2008-10-22 (+84d) |  | 54d → 0d |  |
| 133 | Release Activity | 2008-10-16 → 2008-10-23 (+7d) | 2008-10-17 → 2008-10-24 (+7d) |  |  |  |

## Version 14 (saved 2008-09-29)

Note of the change: *** empty log message ***

Last finish stays 2008-10-24.

Added:

| ID | Task | Duration | Start | Finish | Predecessors | Resources |
| --- | --- | --- | --- | --- | --- | --- |
| 114 | Write ant target | 1d | 2008-10-01 | 2008-10-01 | 113 | Hrishikesh Rajpathak |
| 115 | Update installation guide, update caB2B website | 1d | 2008-10-02 | 2008-10-02 | 114 | Hrishikesh Rajpathak |

Changed:

| ID | Task | Finish | Duration | Complete | Total float | Predecessors | Other |
| --- | --- | --- | --- | --- | --- | --- | --- |
| 1 | **Year 3 Release1** |  |  | 76% → 75% |  |  |  |
| 105 | Requirement |  |  |  |  |  | resources none → Chandrakant Talele |
| 106 | UI mockups |  |  |  |  |  | resources none → Chandrakant Talele |
| 107 | Design |  |  |  |  |  | resources none → Chandrakant Talele |
| 111 | **Shipping of metadata along with installer** | 2008-09-30 → 2008-10-02 (+2d) | 2d → 4d |  | 18d → 16d |  |  |
| 116 | Knowledge Transfer from Deepak |  |  |  |  | none → 115 |  |

## Version 15 (saved 2008-10-06)

Note of the change: *** empty log message ***

Last finish stays 2008-10-24. Complete tasks 67 → 76.

Added:

| ID | Task | Duration | Start | Finish | Predecessors | Constraint |
| --- | --- | --- | --- | --- | --- | --- |
| 131 | Test cases writing | 3d | 2008-10-01 A | 2008-10-03 A |  | finish no earlier than 2008-10-03 |
| 132 | Test case execution | 3d | 2008-10-07 | 2008-10-09 | 131 |  |
| 133 | Bug verification | 1d | 2008-10-10 | 2008-10-10 | 132 |  |
| 138 | Use cases writing | 6d | 2008-09-08 A | 2008-09-15 A |  | start no earlier than 2008-09-08 |

Changed:

| ID | Task | Start | Finish | Duration | Complete | Total float | Other |
| --- | --- | --- | --- | --- | --- | --- | --- |
| 1 | **Year 3 Release1** |  |  |  | 75% → 83% |  |  |
| 26 | **caB2B_Y3_001-Automatic cache update between admin and cab2b server** |  | 2008-09-30 A |  | 99% → 100% | 9d → none |  |
| 32 | **Implementation** |  | 2008-09-30 A |  | 90% → 100% | 9d → none |  |
| 34 | Changes needed in Deployment Process |  | 2008-09-30 A |  | 70% → 100% | 9d → none |  |
| 39 | **caB2B_Y3_002-User based experiments** | 2008-09-30 A |  |  | 0% → 10% | 5d → 7.43d |  |
| 40 | Requirement | 2008-09-30 A |  |  | 0% → 50% | 5d → 7.43d |  |
| 46 | **caB2B_Y3_003-User based saved queries** | 2008-09-30 A |  |  | 0% → 13% | 9d → 11.43d |  |
| 47 | Requirement | 2008-09-30 A |  |  | 0% → 50% | 4d → 11.43d |  |
| 86 | **Exposing DCQL’s on the User Interface** |  | 2008-10-06 A |  | 79% → 100% | 5d → none |  |
| 92 | **Implementation** |  | 2008-10-06 A |  | 45% → 100% | 5d → none |  |
| 93 | UI implementation |  | 2008-09-30 A |  | 80% → 100% | 5.4d → none |  |
| 94 | Backend integration |  | 2008-10-06 A |  | 10% → 100% | 5d → none |  |
| 111 | **Shipping of metadata along with installer** | 2008-09-29 A |  |  | 0% → 80% |  |  |
| 112 | Changes in installation script | 2008-09-29 A | 2008-09-29 A |  | 0% → 100% | 16d → none |  |
| 113 | updating installation manuals | 2008-09-30 A | 2008-09-30 A |  | 0% → 100% | 16d → none |  |
| 114 | Write ant target | 2008-10-01 A | 2008-10-01 A |  | 0% → 100% | 16d → none |  |
| 115 | Update installation guide, update caB2B website | 2008-10-02 A |  |  | 0% → 20% |  |  |
| 117 | **Service url at step 3 of search data wizard** | 2008-09-17 A |  |  | 0% → 68% |  |  |
| 118 | Service URL analysis | 2008-09-17 A | 2008-09-18 A |  | 0% → 100% | 15d → none |  |
| 119 | Service URL UI updation | 2008-09-19 A |  |  | 0% → 70% | 15d → 22d |  |
| 120 | Service URL backend change and integration | 2008-09-23 A |  |  | 0% → 50% | 15d → 20d |  |
| 130 | **QA cycle-Internal release 1** | 2008-10-07 → 2008-10-01 A (-6d) | 2008-10-15 → 2008-10-10 (-5d) | 7d → 8d | 0% → 43% | 5d → 8d | was named QA cycle |
| 134 | **Documents** | 2008-10-06 → 2008-09-08 A (-28d) |  | 13d → 33d | 0% → 46% |  |  |
| 135 | Requirements | 2008-10-06 A |  |  | 0% → 40% | 0d → 1.5d |  |
| 137 | caB2B user manual | 2008-10-16 A |  |  | 0% → 30% |  |  |

## Version 16 (saved 2008-10-10)

Note of the change: *** empty log message ***

Last finish stays 2008-10-24. Complete tasks 76 → 81.

Changed:

| ID | Task | Start | Finish | Duration | Complete | Total float | Other |
| --- | --- | --- | --- | --- | --- | --- | --- |
| 1 | **Year 3 Release1** |  |  |  | 83% → 86% |  |  |
| 46 | **caB2B_Y3_003-User based saved queries** |  |  |  | 13% → 38% |  |  |
| 49 | **Implementation** | 2008-09-30 A |  |  | 0% → 50% |  |  |
| 50 | Saving queries on user basis | 2008-09-30 A | 2008-09-30 A |  | 0% → 100% | 11.43d → none |  |
| 111 | **Shipping of metadata along with installer** |  | 2008-10-02 → 2008-10-06 A (+4d) | 4d → 6d | 80% → 100% | 16d → none |  |
| 115 | Update installation guide, update caB2B website |  | 2008-10-02 → 2008-10-06 A (+4d) | 1d → 3d | 20% → 100% | 16d → none | constraint none → finish no earlier than 2008-10-06 |
| 117 | **Service url at step 3 of search data wizard** |  | 2008-09-26 A |  | 68% → 100% | 20d → none |  |
| 119 | Service URL UI updation |  | 2008-09-22 A |  | 70% → 100% | 22d → none |  |
| 120 | Service URL backend change and integration |  | 2008-09-26 A |  | 50% → 100% | 20d → none |  |
| 130 | **QA cycle-Internal release 1** |  |  |  | 43% → 86% |  |  |
| 132 | Test case execution | 2008-10-07 A | 2008-10-09 A |  | 0% → 100% | 8d → none |  |
| 134 | **Documents** |  |  |  | 46% → 48% |  |  |
| 137 | caB2B user manual |  |  |  | 30% → 40% |  |  |

## Version 17 (saved 2008-10-16)

Note of the change: Updated as per 15 Oct 08 call with Mukesh

Last finish stays 2008-10-24. Complete tasks 81 → 89.

Added:

| ID | Task | Duration | Start | Finish |
| --- | --- | --- | --- | --- |
| 206 | **Java 1.5** | 5d | 2008-07-14 | 2008-07-18 |

Removed: 23 java 1.5

Changed:

| ID | Task | Start | Finish | Duration | Complete | Total float | Predecessors | Other |
| --- | --- | --- | --- | --- | --- | --- | --- | --- |
| 1 | **Year 3 Release1** |  |  |  | 86% → 92% |  |  |  |
| 2 | **caB2B_Y3_020Technology Stack Migration** |  | 2008-10-09 → 2008-08-29 A (-41d) | 63d → 34d | 84% → 100% | 11d → none |  |  |
| 22 | **Representing grid user in caB2B** |  | 2008-09-29 → 2008-10-02 A (+3d) | 37d? → 40d | 67% → 100% | 0d → none |  |  |
| 24 | Design to store user identity locally |  | 2008-09-26 A |  | 60% → 100% | 0d → none |  |  |
| 25 | Design review by external parties | 2008-09-29 A | 2008-09-29 → 2008-10-02 A (+3d) | 1d? → 4d | 0% → 100% | 0d → none |  |  |
| 26 | **caB2B_Y3_002-User based experiments** | 2008-09-30 A → 2008-10-03 A (+3d) | 2008-10-06 → 2008-10-20 A (+14d) | 5d? → 12d | 10% → 100% | 7.43d → none |  |  |
| 27 | Requirement | 2008-09-30 A → 2008-10-03 A (+3d) | 2008-09-30 → 2008-10-03 A (+3d) | 1d? → 1d | 50% → 100% | 7.43d → none | 22 → 25 |  |
| 28 | Design | 2008-10-01 → 2008-10-06 A (+5d) | 2008-10-01 → 2008-10-07 A (+6d) | 1d? → 2d | 0% → 100% | 7.43d → none |  |  |
| 29 | **Implementation** | 2008-10-02 → 2008-10-08 A (+6d) | 2008-10-06 → 2008-10-20 A (+14d) | 3d? → 9d | 0% → 100% | 7.43d → none |  |  |
| 30 | Saving experiments on user basis | 2008-10-02 → 2008-10-08 A (+6d) | 2008-10-02 → 2008-10-10 A (+8d) | 1d? → 3d | 0% → 100% | 7.43d → none |  |  |
| 31 | Changes needed at client-server interface to pass user info | 2008-10-03 → 2008-10-13 A (+10d) | 2008-10-03 → 2008-10-15 A (+12d) | 1d? → 3d | 0% → 100% | 7.43d → none |  |  |
| 32 | Fetch and display experiments based on user | 2008-10-06 → 2008-10-16 A (+10d) | 2008-10-06 → 2008-10-20 A (+14d) | 1d? → 3d | 0% → 100% | 7.43d → none |  |  |
| 33 | **caB2B_Y3_003-User based saved queries** | 2008-09-30 A → 2008-10-03 A (+3d) | 2008-09-30 → 2008-10-17 A (+17d) | 1d? → 11d | 38% → 100% | 11.43d → none |  |  |
| 34 | Requirement | 2008-09-30 A → 2008-10-03 A (+3d) | 2008-09-30 → 2008-10-03 A (+3d) | 1d? → 1d | 50% → 100% | 11.43d → none |  | resources none → Chetan Patil |
| 35 | Design | 2008-09-30 → 2008-10-06 A (+6d) | 2008-09-30 → 2008-10-09 A (+9d) | 1d? → 4d | 0% → 100% | 11.43d → none | none → 34 | resources none → Chetan Patil |
| 36 | **Implementation** | 2008-09-30 A → 2008-10-10 A (+10d) | 2008-09-30 → 2008-10-17 A (+17d) | 1d? → 6d | 50% → 100% | 11.43d → none |  |  |
| 37 | Saving queries on user basis | 2008-09-30 A → 2008-10-10 A (+10d) | 2008-09-30 A → 2008-10-14 A (+14d) | 1d? → 3d |  |  | none → 35 | resources none → Chetan Patil |
| 38 | Changes needed at client-server interface to pass user info | 2008-09-30 → 2008-10-15 A (+15d) | 2008-09-30 → 2008-10-17 A (+17d) | 1d? → 3d | 0% → 100% | 11.43d → none | none → 37 | resources none → Chetan Patil |
| 73 | **Exposing DCQL’s on the User Interface** |  | 2008-10-06 A → 2008-10-01 A (-5d) | 28d → 25d |  |  |  |  |
| 76 | Understanding existing implementation | 2008-09-05 A → 2008-09-09 A (+4d) | 2008-09-10 A → 2008-09-12 A (+2d) |  |  |  |  |  |
| 79 | **Implementation** |  | 2008-10-06 A → 2008-10-01 A (-5d) | 8d → 5d |  |  |  |  |
| 81 | Backend integration | 2008-10-01 A → 2008-09-26 A (-5d) | 2008-10-06 A → 2008-10-01 A (-5d) |  |  |  |  |  |
| 117 | **QA cycle-Internal release 1** |  | 2008-10-10 → 2008-10-21 (+11d) | 8d → 15d |  | 8d → 1d |  |  |
| 120 | Bug verification | 2008-10-10 → 2008-10-21 (+11d) | 2008-10-10 → 2008-10-21 (+11d) |  |  | 8d → 1d |  |  |
| 127 | **Year 3 Release2** |  |  |  | 4% → 14% |  |  |  |
| 201 | **caB2B_Y3_020Technology Stack Migration** | 2008-07-14 A | 2008-07-14 → 2008-08-06 (+23d) | 1d? → 18d | 0% → 40% | 73d → 56d |  |  |
| 202 | **New DE release** | 2008-09-18 A → 2008-07-14 (-66d) | 2008-10-09 → 2008-07-25 (-76d) | 16d → 10d | 44% → 0% | 11d → 64d |  |  |
| 203 | Understand new design and identify changes | 2008-09-18 A → 2008-07-14 (-66d) | 2008-09-19 A → 2008-07-15 (-66d) |  | 100% → 0% | none → 72d |  | constraint start no earlier than 2008-09-18 → none; resources Chandrakant Talele → none |
| 204 | Changs in cab2B and Admin | 2008-09-22 A → 2008-07-14 (-70d) | 2008-10-03 → 2008-07-25 (-70d) |  | 50% → 0% | 11d → 64d | 203 → none | resources Chandrakant Talele → none |
| 205 | Verification | 2008-10-06 → 2008-07-14 (-84d) | 2008-10-09 → 2008-07-17 (-84d) |  |  | 6d → 70d | 204 → none | resources Chandrakant Talele → none |
| 207 | Identify changes for java 1.5 | 2008-09-08 A → 2008-07-14 (-56d) | 2008-09-12 A → 2008-07-18 (-56d) |  | 100% → 0% | none → 69d | 208 → none | constraint finish no earlier than 2008-09-12 → none; resources Lalit Chand → none |
| 208 | Solution for client side java 6 components | 2008-09-08 A → 2008-07-14 (-56d) | 2008-09-12 A → 2008-07-16 (-58d) |  | 100% → 0% | none → 71d |  | resources Lalit Chand → none |
| 209 | **Migrate to EJB 3.0** |  | 2008-10-08 → 2008-08-06 A (-63d) | 60d → 16d | 98% → 100% | 12d → none |  |  |
| 214 | Verification |  | 2008-10-08 → 2008-08-06 A (-63d) | 4d → 3d | 90% → 100% | 12d → none |  |  |

## Version 18 (saved 2008-10-20)

Note of the change: *** empty log message ***

Last finish 2008-10-24 → 2008-10-31 (+7d).

Added:

| ID | Task | Duration | Start | Finish |
| --- | --- | --- | --- | --- |
| 147 | Any new feature request from user | 1d? | 2008-07-14 | 2008-07-14 |

Changed:

| ID | Task | Start | Finish | Duration | Complete | Total float | Predecessors | Other |
| --- | --- | --- | --- | --- | --- | --- | --- | --- |
| 1 | **Year 3 Release1** |  | 2008-10-24 → 2008-10-31 (+7d) | 74d? → 79d? |  |  |  |  |
| 74 | Requirement |  |  |  |  |  | 224 → none |  |
| 109 | Bug# 8070 |  |  |  |  |  | 141 → none |  |
| 121 | **Documents** |  | 2008-10-22 → 2008-10-29 (+7d) | 33d → 38d | 48% → 53% |  |  |  |
| 123 | cab2b design document | 2008-10-09 A | 2008-10-15 → 2008-10-24 (+9d) | 5d → 12d | 0% → 30% | 2d → 1d |  | constraint none → finish no earlier than 2008-10-24 |
| 124 | caB2B user manual |  | 2008-10-22 → 2008-10-29 (+7d) |  | 40% → 60% |  |  |  |
| 126 | Release Activity | 2008-10-23 → 2008-10-30 (+7d) | 2008-10-24 → 2008-10-31 (+7d) |  |  |  |  |  |
| 128 | **Year 3 Release2** | 2008-07-14 A → 2008-07-14 | 2008-09-11 → 2008-07-14 (-59d) | 43d? → 1d? | 14% → 0% | 31d → 78d |  |  |
| 133 | Developing Prototype |  | 2008-09-03 → 2008-07-14 (-51d) | 37d → 1d? |  | 31d → 78d |  |  |
| 136 | Separating out Implementation Deployment Unit | 2008-09-05 → 2008-07-14 (-53d) | 2008-09-05 → 2008-07-14 (-53d) |  |  | 31d → 78d | 237 → none |  |
| 137 | Changes needed in Deployment Process | 2008-09-08 → 2008-07-14 (-56d) | 2008-09-08 → 2008-07-14 (-56d) |  |  | 31d → 78d | 136 → none |  |
| 141 | Investigate Component |  | 2008-07-15 → 2008-07-14 (-1d) | 2d → 1d? |  | 58d → 78d |  |  |
| 142 | Developing Prototype | 2008-07-16 → 2008-07-14 (-2d) | 2008-07-22 → 2008-07-14 (-8d) | 5d → 1d? |  | 58d → 78d | 141 → none |  |
| 173 | **Year 3 Release3** | 2008-07-14 A | 2008-07-14 → 2008-09-11 (+59d) | 1d? → 43d? | 0% → 12% | 73d → 36d |  |  |
| 228 | Developing Prototype |  | 2008-07-14 → 2008-09-03 (+51d) | 1d? → 37d |  | 73d → 36d |  |  |
| 230 | Investigate Component |  | 2008-07-14 → 2008-07-15 (+1d) | 1d? → 2d |  | 73d → 63d |  |  |
| 231 | Developing Prototype | 2008-07-14 → 2008-07-16 (+2d) | 2008-07-14 → 2008-07-22 (+8d) | 1d? → 5d |  | 73d → 63d | none → 230 |  |
| 233 | UI mockup |  |  |  |  | 58d → 63d | 142 → 231 |  |
| 236 | **Design** |  |  |  |  | 31d → 36d | 133 → 228 |  |
| 238 | Separating out Implementation Deployment Unit | 2008-07-14 → 2008-09-05 (+53d) | 2008-07-14 → 2008-09-05 (+53d) |  |  | 73d → 36d | none → 237 |  |
| 239 | Changes needed in Deployment Process | 2008-07-14 → 2008-09-08 (+56d) | 2008-07-14 → 2008-09-08 (+56d) |  |  | 73d → 36d | none → 238 |  |
| 240 | **Representing grid user in caB2B** |  |  |  |  | 31d → 36d | 137 → 239 |  |
| 253 | Understanding EJB 3.0 |  |  |  |  |  | 5 → none |  |

## Version 19 (saved 2008-11-03)

Note of the change: *** empty log message ***

Last finish 2008-10-31 → 2008-11-06 (+6d). Complete tasks 89 → 97.

Added:

| ID | Task | Duration | Start | Finish | Constraint | Resources |
| --- | --- | --- | --- | --- | --- | --- |
| 127 | Final Release Activity | 2d | 2008-11-05 | 2008-11-06 | start no earlier than 2008-11-05 | Lalit Chand |

Changed:

| ID | Task | Start | Finish | Duration | Complete | Total float | Other |
| --- | --- | --- | --- | --- | --- | --- | --- |
| 1 | **Year 3 Release1** |  | 2008-10-31 → 2008-11-06 (+6d) | 79d? → 82d? | 92% → 96% |  |  |
| 59 | Design |  | 2008-08-14 A → 2008-08-13 A (-1d) |  |  |  |  |
| 91 | **Showing results of a query grouped by the services** | 2008-09-29 A | 2008-10-03 A |  | 0% → 100% | 20d → none |  |
| 92 | Requirement | 2008-09-29 A | 2008-09-29 A |  | 0% → 100% | 20d → none |  |
| 93 | UI mockups | 2008-09-30 A | 2008-09-30 A |  | 0% → 100% | 20d → none |  |
| 94 | Design | 2008-10-01 A | 2008-10-01 A |  | 0% → 100% | 20d → none |  |
| 95 | **Implementation** | 2008-10-02 A | 2008-10-03 A |  | 0% → 100% | 20d → none |  |
| 96 | UI implementation | 2008-10-02 A | 2008-10-02 A |  | 0% → 100% | 20d → none |  |
| 97 | Backend integration | 2008-10-03 A | 2008-10-03 A |  | 0% → 100% | 20d → none |  |
| 108 | **Bugs Fixing** |  | 2008-09-19 → 2008-11-04 (+46d) | 36d → 67d |  | 25.86d → -9d |  |
| 116 | Bug # 9604 | 2008-09-18 → 2008-11-03 (+46d) | 2008-09-19 → 2008-11-04 (+46d) |  |  | 25.86d → -9d | constraint start no earlier than 2008-09-18 → start no earlier than 2008-11-03; resources none → Guarav |
| 117 | **QA cycle-Internal release 1** |  |  |  | 86% → 99% | 6d → 0d |  |
| 120 | Bug verification | 2008-10-21 A | 2008-10-21 A |  | 0% → 100% | 6d → none | resources none → Hrishikesh Rajpathak |
| 121 | **Documents** |  | 2008-10-29 → 2008-10-30 (+1d) |  | 53% → 71% | 0d → 5d |  |
| 122 | Requirements |  |  |  | 40% → 50% | 4.6d → 14d |  |
| 123 | cab2b design document |  |  |  | 30% → 50% | 1d → 8d |  |
| 124 | caB2B user manual |  | 2008-10-29 → 2008-10-30 A (+1d) |  | 60% → 100% | 0d → none |  |
| 126 | Internal Release Activity | 2008-10-30 → 2008-10-23 A (-7d) | 2008-10-31 → 2008-10-24 A (-7d) |  | 0% → 100% | 0d → none | was named Release Activity; constraint none → finish no earlier than 2008-10-24; resources none → Lalit Chand |

## Version 20 (saved 2008-11-10)

Note of the change: *** empty log message ***

Last finish 2008-11-06 → 2008-11-21 (+15d). Complete tasks 97 → 99.

Added:

| ID | Task | Duration | Start | Finish | Predecessors | Constraint |
| --- | --- | --- | --- | --- | --- | --- |
| 128 | Bug fixing for Final release | 10d | 2008-11-03 A | 2008-11-14 |  | finish no earlier than 2008-11-14 |
| 129 | Regression Cycle | 3d | 2008-11-17 | 2008-11-19 | 128 | start no earlier than 2008-11-13 |
| 130 | Deployment | 2d | 2008-11-20 | 2008-11-21 | 129 |  |

Changed:

| ID | Task | Start | Finish | Duration | Complete | Total float | Other |
| --- | --- | --- | --- | --- | --- | --- | --- |
| 1 | **Year 3 Release1** |  | 2008-11-06 → 2008-11-21 (+15d) | 82d? → 93d? | 96% → 94% |  |  |
| 108 | **Bugs Fixing** |  | 2008-11-04 A |  | 83% → 100% | -9d → none |  |
| 116 | Bug # 9604 | 2008-11-03 A | 2008-11-04 A |  | 0% → 100% | -9d → none |  |
| 121 | **Documents** |  |  |  | 71% → 86% | 5d → 11d |  |
| 122 | Requirements |  | 2008-10-08 A |  | 50% → 100% | 14d → none |  |
| 123 | cab2b design document |  |  |  | 50% → 70% | 8d → 14d |  |
| 127 | Final Release Activity | 2008-11-05 → 2008-11-13 (+8d) | 2008-11-06 → 2008-11-14 (+8d) |  |  | 0d → 3d | constraint start no earlier than 2008-11-05 → finish no earlier than 2008-11-14 |

## Version 21 (saved 2008-11-14)

Note of the change: *** empty log message ***

Last finish 2008-11-21 → 2008-11-24 (+3d). Complete tasks 99 → 100.

Changed:

| ID | Task | Start | Finish | Duration | Complete | Total float | Other |
| --- | --- | --- | --- | --- | --- | --- | --- |
| 1 | **Year 3 Release1** |  | 2008-11-21 → 2008-11-24 (+3d) | 93d? → 94d? | 94% → 98% |  |  |
| 121 | **Documents** |  | 2008-10-30 A |  | 86% → 100% | 11d → none |  |
| 123 | cab2b design document |  | 2008-10-24 A |  | 70% → 100% | 14d → none |  |
| 127 | Final Release Activity | 2008-11-13 → 2008-11-20 (+7d) | 2008-11-14 → 2008-11-21 (+7d) |  |  | 3d → 1d | constraint finish no earlier than 2008-11-14 → finish no earlier than 2008-11-21 |
| 128 | Bug fixing for Final release |  | 2008-11-14 → 2008-11-19 (+5d) | 10d → 13d | 30% → 90% |  | constraint finish no earlier than 2008-11-14 → finish no earlier than 2008-11-19 |
| 129 | Regression Cycle | 2008-11-17 → 2008-11-20 (+3d) | 2008-11-19 → 2008-11-21 (+2d) | 3d → 2d |  |  |  |
| 130 | Deployment | 2008-11-20 → 2008-11-24 (+4d) | 2008-11-21 → 2008-11-24 (+3d) | 2d → 1d |  |  |  |

## Version 22 (saved 2008-11-28)

Note of the change: *** empty log message ***

Last finish 2008-11-24 → 2008-12-01 (+7d). Complete tasks 100 → 105.

Added:

| ID | Task | Duration | Start | Finish | Constraint |
| --- | --- | --- | --- | --- | --- |
| 129 | Webstart issue | 4d? | 2008-11-20 A | 2008-11-25 A | finish no earlier than 2008-11-25 |
| 130 | Performance Improvement for getting service instances | 4d | 2008-11-20 A | 2008-11-25 A | finish no earlier than 2008-11-25 |
| 131 | Reducing jars from client | 3d | 2008-11-20 A | 2008-11-24 A | finish no earlier than 2008-11-24 |

Changed:

| ID | Task | Start | Finish | Duration | Complete | Total float | Predecessors | Other |
| --- | --- | --- | --- | --- | --- | --- | --- | --- |
| 1 | **Year 3 Release1** |  | 2008-11-24 → 2008-12-01 (+7d) | 94d? → 99d? | 98% → 99% |  |  |  |
| 117 | **QA cycle-Internal release 1** |  | 2008-10-21 A |  | 99% → 100% | 0d → none |  |  |
| 127 | Final Release Activity | 2008-11-20 → 2008-12-01 (+11d) | 2008-11-21 → 2008-12-01 (+10d) | 2d → 1d |  | 1d → 0d |  | constraint finish no earlier than 2008-11-21 → finish no earlier than 2008-12-01 |
| 128 | Bug fixing for Final release |  | 2008-11-19 → 2008-11-25 A (+6d) | 13d → 17d | 90% → 100% | 0d → none |  | constraint finish no earlier than 2008-11-19 → finish no earlier than 2008-11-25 |
| 132 | Regression Cycle | 2008-11-20 → 2008-11-27 A (+7d) | 2008-11-21 → 2008-11-28 A (+7d) |  | 0% → 100% | 0d → none | 128 → 131 | constraint start no earlier than 2008-11-13 → finish no earlier than 2008-11-28 |
| 133 | Deployment | 2008-11-24 → 2008-12-01 (+7d) | 2008-11-24 → 2008-12-01 (+7d) |  |  |  | 132 → none | constraint none → start no earlier than 2008-12-01 |

## Version 23 (saved 2008-12-05)

Note of the change: *** empty log message ***

Last finish 2008-12-01 → 2008-12-19 (+18d). Complete tasks 105 → 107.

Added:

| ID | Task | Duration | Start | Finish | Predecessors |
| --- | --- | --- | --- | --- | --- |
| 140 | **Design** | 3d? | 2008-12-12 | 2008-12-16 |  |
| 142 | Changes in spreadsheet to display probeset data | 1d? | 2008-12-15 | 2008-12-15 | 141 |
| 143 | Changes in design of heatmap | 1d? | 2008-12-16 | 2008-12-16 | 142 |
| 147 | Modifications in heatmap model | 1d? | 2008-12-19 | 2008-12-19 | 146 |
| 151 | Changes in current service url design | 1d? | 2008-07-14 | 2008-07-14 |  |
| 152 | Changes in query building | 1d? | 2008-07-15 | 2008-07-15 | 151 |
| 159 | Prototype of scheduling component | 1d? | 2008-07-15 | 2008-07-15 | 158 |
| 165 | Inbox like component to view execution results | 1d? | 2008-07-22 | 2008-07-22 | 164 |
| 179 | **Securing admin(moving Admin module in https)** | 1d? | 2008-07-14 | 2008-07-14 |  |
| 180 | Changes in the current deployment process | 1d? | 2008-07-14 | 2008-07-14 |  |
| 181 | Verifications | 1d? | 2008-07-14 | 2008-07-14 |  |

Removed: 146 Investigation; 147 Investigate Component; 148 Developing Prototype; 163 Investigation; 164 Investigate Component; 165 Developing Prototype; 169 Changes needed in Deployment Process

Changed:

| ID | Task | Start | Finish | Duration | Complete | Total float | Predecessors | Other |
| --- | --- | --- | --- | --- | --- | --- | --- | --- |
| 1 | **Year 3 Release1** |  | 2008-12-01 → 2008-12-05 A (+4d) | 99d? → 103d? | 99% → 100% | 0d → none |  |  |
| 127 | Final Release Activity | 2008-12-01 A | 2008-12-01 → 2008-12-05 A (+4d) | 1d → 5d | 0% → 100% | 0d → none |  | constraint finish no earlier than 2008-12-01 → finish no earlier than 2008-12-05 |
| 133 | Deployment | 2008-12-01 A | 2008-12-01 A |  | 0% → 100% | 0d → none |  |  |
| 134 | **Year 3 Release2** |  | 2008-07-14 → 2008-12-19 (+158d) | 1d? → 113d? |  | 81d → 0d |  |  |
| 135 | **caB2B_Y3_015-Support for getting probe data from caArray. For CEL files no need to bring data back to cab2b server, just get the URL and send it to analytical service** | 2008-07-14 → 2008-12-08 (+147d) | 2008-07-14 → 2008-12-19 (+158d) | 1d? → 10d? |  | 81d → 0d |  |  |
| 136 | Requirement | 2008-07-14 → 2008-12-08 (+147d) | 2008-07-14 → 2008-12-08 (+147d) |  |  | 87d → 0d |  | constraint none → start no earlier than 2008-12-08 |
| 137 | Investigation | 2008-07-14 → 2008-12-09 (+148d) | 2008-07-14 → 2008-12-09 (+148d) |  |  | 87d → 0d | none → 136 |  |
| 138 | Prototype to get probe data from caArray | 2008-07-14 → 2008-12-10 (+149d) | 2008-07-14 → 2008-12-10 (+149d) |  |  | 87d → 0d | none → 137 | was named Investigate Component |
| 139 | Understanding of viewer | 2008-07-14 → 2008-12-11 (+150d) | 2008-07-14 → 2008-12-11 (+150d) |  |  | 87d → 0d | none → 138 | was named Developing Prototype |
| 141 | Changes in current backend design to save retreived probe data | 2008-07-14 → 2008-12-12 (+151d) | 2008-07-14 → 2008-12-12 (+151d) |  |  | 87d → 0d | none → 139 | was named Design |
| 144 | **Implementation** | 2008-07-14 → 2008-12-17 (+156d) | 2008-07-14 → 2008-12-19 (+158d) | 1d? → 3d? |  | 81d → 0d |  |  |
| 145 | Backend changes | 2008-07-14 → 2008-12-17 (+156d) | 2008-07-14 → 2008-12-17 (+156d) |  |  | 87d → 0d | none → 143 | was named Separating out Implementation Deployment Unit |
| 146 | Modifications in spread sheet | 2008-07-14 → 2008-12-18 (+157d) | 2008-07-14 → 2008-12-18 (+157d) |  |  | 78d → 0d | none → 145 | was named Changes needed in Deployment Process |
| 148 | **caB2B_Y3_013-intermodel joins for a group like washU, NCICB , Intermodel joins with pair of service instances** |  | 2008-07-14 → 2008-07-17 (+3d) | 1d? → 4d? |  | 81d → 109d |  |  |
| 150 | **Design** |  | 2008-07-14 → 2008-07-15 (+1d) | 1d? → 2d? |  | 78d → 109d |  |  |
| 153 | **Implementation** | 2008-07-14 → 2008-07-16 (+2d) | 2008-07-14 → 2008-07-17 (+3d) | 1d? → 2d? |  | 81d → 109d |  |  |
| 154 | CRUD of service url group | 2008-07-14 → 2008-07-16 (+2d) | 2008-07-14 → 2008-07-16 (+2d) |  |  | 78d → 109d | none → 152 | was named Separating out Implementation Deployment Unit |
| 155 | Changes in query building | 2008-07-14 → 2008-07-17 (+3d) | 2008-07-14 → 2008-07-17 (+3d) |  |  | 78d → 109d | none → 154 | was named Changes needed in Deployment Process |
| 157 | **caB2B_Y3_004-Asynchronous execution of queries** |  | 2008-07-14 → 2008-07-22 (+8d) | 1d? → 7d? |  | 81d → 106d |  |  |
| 160 | Design | 2008-07-14 → 2008-07-16 (+2d) | 2008-07-14 → 2008-07-16 (+2d) |  |  | 78d → 106d | none → 159 |  |
| 161 | **Implementation** | 2008-07-14 → 2008-07-17 (+3d) | 2008-07-14 → 2008-07-22 (+8d) | 1d? → 4d? |  | 81d → 106d |  |  |
| 162 | Represent schedule | 2008-07-14 → 2008-07-17 (+3d) | 2008-07-14 → 2008-07-17 (+3d) |  |  | 78d → 106d | none → 160 |  |
| 163 | Storing schedule and firing jobs | 2008-07-14 → 2008-07-18 (+4d) | 2008-07-14 → 2008-07-18 (+4d) |  |  | 78d → 106d | none → 162 |  |
| 164 | Implementing job for query execution | 2008-07-14 → 2008-07-21 (+7d) | 2008-07-14 → 2008-07-21 (+7d) |  |  | 78d → 106d | none → 163 |  |
| 166 | **caB2B_Y3_012-Asynchronous of save data list** |  | 2008-07-14 → 2008-07-16 (+2d) | 1d? → 3d? |  | 81d → 110d |  |  |
| 168 | Design | 2008-07-14 → 2008-07-15 (+1d) | 2008-07-14 → 2008-07-15 (+1d) |  |  | 78d → 110d | none → 167 |  |
| 169 | **Implementation** | 2008-07-14 → 2008-07-16 (+2d) | 2008-07-14 → 2008-07-16 (+2d) |  |  | 81d → 110d |  |  |
| 170 | Behind the scene save of data list | 2008-07-14 → 2008-07-16 (+2d) | 2008-07-14 → 2008-07-16 (+2d) |  |  | 78d → 110d | none → 168 | was named Separating out Implementation Deployment Unit |
| 171 | **caB2B_Y3_014-Experiments with multiple datalists, edit expr to add data list with way to re-query (more likely)** |  | 2008-07-14 → 2008-07-21 (+7d) | 1d? → 6d? |  | 81d → 107d |  |  |
| 173 | UI Mockups | 2008-07-14 → 2008-07-15 (+1d) | 2008-07-14 → 2008-07-15 (+1d) |  |  | 78d → 107d | none → 172 |  |
| 174 | Design | 2008-07-14 → 2008-07-16 (+2d) | 2008-07-14 → 2008-07-16 (+2d) |  |  | 78d → 107d | none → 173 |  |
| 175 | **Implementation** | 2008-07-14 → 2008-07-17 (+3d) | 2008-07-14 → 2008-07-21 (+7d) | 1d? → 3d? |  | 81d → 107d |  |  |
| 176 | UI for data list viewer | 2008-07-14 → 2008-07-17 (+3d) | 2008-07-14 → 2008-07-17 (+3d) |  |  | 78d → 107d | none → 174 |  |
| 177 | Changes needed in Experiment module | 2008-07-14 → 2008-07-18 (+4d) | 2008-07-14 → 2008-07-18 (+4d) |  |  | 78d → 107d | none → 176 |  |
| 178 | backend support for multiple data list | 2008-07-14 → 2008-07-21 (+7d) | 2008-07-14 → 2008-07-21 (+7d) |  |  | 78d → 107d | none → 177 |  |
