# caB2BIterationWiseMPP

How a schedule from MS Project changed from version to version. A marks actual dates.

## Version 1 (saved 2007-03-27)

Note of the change: setup for caB2B

| ID | WBS | Task | Duration | Start | Finish | Predecessors | Complete | Total float | Constraint |
| --- | --- | --- | --- | --- | --- | --- | --- | --- | --- |
| 1 |  | February iteration release | 0d | 2007-03-02 A | 2007-03-02 A |  | 100% |  | start no earlier than 2007-02-28 |
| 2 | 2 | **Mar Iteration** | 40d? | 2007-02-16 A | 2007-04-12 |  | 22% | 36d |  |
| 3 |  | Custom display names for meta data categories | 2d | 2007-03-02 A | 2007-03-05 A | 1 | 100% |  |  |
| 4 | 2.2 | **Inheritance** | 14d | 2007-03-06 A | 2007-03-23 A |  | 100% |  |  |
| 5 |  | Path interpretation | 7d | 2007-03-06 A | 2007-03-14 A | 3 | 100% |  |  |
| 6 |  | Performance Improvement | 5d | 2007-03-15 A | 2007-03-21 A | 5 | 100% |  |  |
| 7 |  | Query module testing | 2d | 2007-03-22 A | 2007-03-23 A | 6 | 100% |  |  |
| 8 | 2.3 | **Storing curated paths** | 14d | 2007-03-15 A | 2007-04-03 |  | 17% | 52d |  |
| 9 |  | Backend | 12d | 2007-03-15 A | 2007-03-30 | 5 | 20% | 35d | finish no earlier than 2007-03-30 |
| 10 |  | Ambiguity Resolver UI change | 2d | 2007-04-02 | 2007-04-03 | 9 |  | 52d |  |
| 11 |  | Internal Build | 0d | 2007-04-03 | 2007-04-03 | 10 |  | 52d |  |
| 12 | 2.5 | **Enhancements to metadata search** | 17d | 2007-03-05 A | 2007-03-27 |  | 71% | 57d |  |
| 13 |  | Backend implementation | 15d | 2007-03-05 A | 2007-03-23 | 1 | 80% | 49d |  |
| 14 |  | User Interface | 2d | 2007-03-26 | 2007-03-27 | 13 |  | 57d |  |
| 15 | 2.6 | **Create Experiment** | 23d | 2007-03-02 A | 2007-04-03 |  | 30% | 36d |  |
| 16 |  | Backend support for saving newly created experiment | 20d | 2007-03-05 A | 2007-03-30 | 1 | 26% | 36d |  |
| 17 |  | UI wizard to create new experiment | 2d | 2007-03-02 A | 2007-03-05 A | 1 | 100% |  |  |
| 18 |  | Integrate UI with backend APIs | 2d | 2007-04-02 | 2007-04-03 | 16 |  | 36d |  |
| 19 | 2.7 | **Open Experiment** | 28d | 2007-03-06 A | 2007-04-12 |  | 22% | 36d |  |
| 20 |  | Backend support for fetching experiment details | 4d | 2007-04-04 | 2007-04-09 | 18 |  | 36d |  |
| 21 |  | UI for opening an experiment | 2d | 2007-03-06 A | 2007-03-07 A | 17 | 100% |  |  |
| 22 |  | Integrate UI with backend | 3d | 2007-04-10 | 2007-04-12 | 20, 27 |  | 36d |  |
| 23 |  | DAG-Connect All functionality | 7d | 2007-03-13 A | 2007-03-21 | 1 |  | 0d |  |
| 24 |  | caArray Support in query module | 1d? | 2007-02-16 | 2007-02-16 |  |  | 84d |  |
| 25 | 2.10 | **Bugzilla Fixes** | 1d? | 2007-02-16 | 2007-02-16 |  |  | 84d |  |
| 26 |  | Firing multiple queries for apply all in separate threads for performance boost. | 1d? | 2007-02-16 | 2007-02-16 |  |  | 84d |  |
| 27 |  | Fixing UI issues | 10d | 2007-03-08 | 2007-03-21 | 21 |  | 14d |  |
| 28 | 2.12 | **Data services** | 26d | 2007-03-02 | 2007-04-06 |  |  | 49d |  |
| 29 |  | Getting caArray data related to caTissue extended model. | 10d | 2007-03-22 | 2007-04-04 | 23 |  | 51d |  |
| 30 |  | caTissue extended models (with caArray) | 15d | 2007-03-02 | 2007-03-22 | 1 |  | 60d |  |
| 31 |  | Extended caFE model for caArray (Grid Service) | 10d | 2007-03-02 | 2007-03-15 | 1 |  | 65d |  |
| 32 |  | GenePattern analysis service investigation and design | 10d | 2007-03-26 | 2007-04-06 | 13 |  | 49d |  |
| 33 |  | Testing and bug fixes | 5d | 2007-03-22 | 2007-03-28 | 23 |  | 0d |  |
| 34 |  | Release notes | 1d | 2007-03-29 | 2007-03-29 | 33 |  | 26d |  |
| 35 |  | Updated design document | 10d | 2007-03-02 | 2007-03-15 | 1 |  | 65d |  |
| 36 |  | End user manual | 20d | 2007-03-02 | 2007-03-29 | 1 |  | 55d |  |
| 37 |  | March iteration release | 0d | 2007-03-29 | 2007-03-29 | 34 |  | 26d |  |
| 38 | 3 | **Apr Iteration** | 24d | 2007-03-26 | 2007-04-26 |  |  | 3d |  |
| 39 | 3.1 | **Server issues** | 19d | 2007-03-26 | 2007-04-19 |  |  | 26d |  |
| 40 |  | Category as output backend | 7d | 2007-03-26 | 2007-04-03 | 1, 7 |  | 35d |  |
| 41 |  | Category as output backend integration with UI and testing | 5d | 2007-04-13 | 2007-04-19 | 7, 44 |  | 35d |  |
| 42 |  | WS enumeration based data services to lazy load large data sets | 5d | 2007-04-02 | 2007-04-06 | 9 |  | 35d |  |
| 43 |  | Handling large datasets | 5d | 2007-04-09 | 2007-04-13 | 42 |  | 35d |  |
| 44 |  | View category in results | 7d | 2007-04-04 | 2007-04-12 | 40 |  | 35d |  |
| 45 | 3.3 | **Experiment Data Category** | 21d | 2007-03-29 | 2007-04-26 |  |  | 26d |  |
| 46 |  | UI for data category hierarchy (Slide 44) | 5d | 2007-03-29 | 2007-04-04 | 33 |  | 33d |  |
| 47 |  | Backend to get data for selected category | 5d | 2007-04-20 | 2007-04-26 | 41 |  | 35d |  |
| 48 |  | Handle onClick event of category | 2d | 2007-04-05 | 2007-04-06 | 46 |  | 33d |  |
| 49 |  | Search in data category | 2d | 2007-04-09 | 2007-04-10 | 48 |  | 33d |  |
| 50 | 3.4 | **View experiment data sheet** | 7d | 2007-03-29 | 2007-04-06 |  |  | 27d |  |
| 51 |  | UI for showing spreadsheet of selected category dataset | 5d | 2007-03-29 | 2007-04-04 | 33 |  | 27d |  |
| 52 |  | Hide/Unhide columns in the spreadsheet | 2d | 2007-04-05 | 2007-04-06 | 51 |  | 27d |  |
| 53 | 3.5 | **Visualizations for experiment datasets** | 9d | 2007-03-29 | 2007-04-10 |  |  | 5d |  |
| 54 |  | Plotting selected dataset columns as a graph (like Sigma plot) | 5d | 2007-03-29 | 2007-04-04 | 33 |  | 42d |  |
| 55 |  | CDE based literature network viewer | 4d | 2007-04-05 | 2007-04-10 | 60 |  | 0d |  |
| 56 | 3.6 | **Analytical services** | 14d | 2007-03-29 | 2007-04-17 |  |  | 0d |  |
| 57 |  | Genepattern analytical service support | 7d | 2007-03-29 | 2007-04-06 | 33 |  | 35d |  |
| 58 |  | dynamic UI generation for selected analytical service | 5d | 2007-04-09 | 2007-04-13 | 57 |  | 35d |  |
| 59 |  | Report tab for analysis to see status of different analysis | 5d | 2007-04-11 | 2007-04-17 | 49 |  | 33d |  |
| 60 |  | Backend support to search for analytical service instance and execute query on same | 5d | 2007-03-29 | 2007-04-04 | 33 |  | 0d |  |
| 61 | 3.7 | **Filter Experiment Data set** | 8d | 2007-04-09 | 2007-04-18 |  |  | 27d |  |
| 62 |  | UI to filter data set | 5d | 2007-04-09 | 2007-04-13 | 52 |  | 27d |  |
| 63 |  | Create category for with filtered data-set | 3d | 2007-04-16 | 2007-04-18 | 62 |  | 27d |  |
| 64 | 3.8 | **User authentication** | 9d | 2007-03-29 | 2007-04-10 |  |  | 33d |  |
| 65 |  | Login screen | 2d | 2007-03-29 | 2007-03-30 | 33 |  | 33d |  |
| 66 |  | Backend support to authenticate user | 7d | 2007-04-02 | 2007-04-10 | 65 |  | 33d |  |
| 67 |  | Add caB2B project in Tools webpage of caBIG | 3d | 2007-03-30 | 2007-04-03 | 37 |  | 43d |  |
| 68 |  | Testing and bug fixes | 5d | 2007-04-19 | 2007-04-25 | 66, 63 |  | 27d |  |
| 69 |  | Preparing installer | 7d | 2007-04-11 | 2007-04-19 | 55 |  | 0d |  |
| 70 |  | Release notes | 1d | 2007-04-20 | 2007-04-20 | 69 |  | 0d |  |

| ID | WBS | Task | Duration | Start | Finish | Predecessors | Total float |
| --- | --- | --- | --- | --- | --- | --- | --- |
| 71 |  | Updated design document | 10d | 2007-03-30 | 2007-04-12 | 37 | 36d |
| 72 |  | End user manual | 20d | 2007-03-30 | 2007-04-26 | 37 | 26d |
| 73 |  | Beta release | 0d | 2007-04-20 | 2007-04-20 | 70 | 0d |
| 74 | 4 | **May Iteration** | 30d | 2007-04-23 | 2007-06-01 |  | 0d |
| 75 |  | Set-up wiki site for caB2B | 5d | 2007-04-23 | 2007-04-27 | 73 | 0d |
| 76 |  | Review of user manual document by end users | 10d | 2007-04-30 | 2007-05-11 | 75, 73 | 0d |
| 77 |  | Beta testing by end users | 15d | 2007-05-14 | 2007-06-01 | 76 | 0d |
| 78 |  | Beta release bug fixes | 20d | 2007-04-23 | 2007-05-18 | 73 | 8d |
| 79 |  | Installation guide | 7d | 2007-04-23 | 2007-05-01 | 73 | 23d |
| 80 |  | User manual | 7d | 2007-04-23 | 2007-05-01 | 73 | 23d |
| 81 |  | Test cases and test execution report | 2d | 2007-05-21 | 2007-05-22 | 78 | 8d |
| 82 |  | Final design document | 5d | 2007-04-23 | 2007-04-27 | 73 | 25d |
| 83 |  | Final use case document | 5d | 2007-04-23 | 2007-04-27 | 73 | 25d |
| 84 |  | Lessons learned document | 2d | 2007-04-23 | 2007-04-24 | 73 | 28d |
| 85 |  | Final release | 0d | 2007-05-22 | 2007-05-22 | 78, 79, 82, 83, 84, 81 | 8d |

## Version 2 (saved 2007-04-10)

Note of the change: updated for april release

Last finish 2007-06-01 → 2007-06-25 (+24d). Complete tasks 7 → 18.

Added:

| ID | Task | Duration | Start | Finish | Predecessors | Resources |
| --- | --- | --- | --- | --- | --- | --- |
| 28 | caArray Support in Query module | 15d | 2007-04-02 A | 2007-04-20 | 18 | Rahul |

Removed: 11 Internal Build; 24 caArray Support in query module; 42 WS enumeration based data services to lazy load large data sets; 43 Handling large datasets

Changed:

| ID | Task | Start | Finish | Duration | Complete | Total float | Predecessors | Other |
| --- | --- | --- | --- | --- | --- | --- | --- | --- |
| 2 | **Mar Iteration** |  | 2007-04-12 → 2007-04-09 (-3d) | 40d? → 37d | 22% → 75% | 36d → 55d |  |  |
| 8 | **Storing curated paths** |  | 2007-04-03 A |  | 17% → 100% | 52d → none |  |  |
| 9 | Backend |  | 2007-03-30 → 2007-03-28 A (-2d) | 12d → 10d | 20% → 100% | 35d → none |  |  |
| 10 | Ambiguity Resolver UI change | 2007-04-02 A | 2007-04-03 A |  | 0% → 100% | 52d → none |  |  |
| 11 | **Enhancements to metadata search** |  | 2007-03-27 A |  | 71% → 100% | 57d → none |  |  |
| 12 | Backend implementation |  | 2007-03-23 → 2007-03-16 A (-7d) | 15d → 10d | 80% → 100% | 49d → none |  |  |
| 13 | User Interface | 2007-03-26 A | 2007-03-27 A |  | 0% → 100% | 57d → none |  |  |
| 14 | **Create Experiment** |  | 2007-04-03 → 2007-04-05 A (+2d) | 23d → 25d | 30% → 100% | 36d → none |  |  |
| 15 | Backend support for saving newly created experiment |  | 2007-03-30 → 2007-04-03 A (+4d) | 20d → 22d | 26% → 100% | 36d → none |  | constraint none → finish no earlier than 2007-04-03 |
| 17 | Integrate UI with backend APIs | 2007-04-02 → 2007-04-04 A (+2d) | 2007-04-03 → 2007-04-05 A (+2d) |  | 0% → 100% | 36d → none |  |  |
| 18 | DAG-Connect All functionality | 2007-03-13 A → 2007-03-22 A (+9d) | 2007-03-21 → 2007-03-30 A (+9d) |  | 0% → 100% | 0d → none |  |  |
| 19 | **Bugzilla Fixes** | 2007-02-16 A | 2007-02-16 → 2007-02-20 A (+4d) | 1d? → 3d | 0% → 100% | 84d → none |  |  |
| 20 | Firing multiple queries for apply all in separate threads for performance boost. | 2007-02-16 A | 2007-02-16 → 2007-02-20 A (+4d) | 1d? → 3d | 0% → 100% | 84d → none |  |  |
| 21 | Fixing UI issues | 2007-03-08 A | 2007-03-21 A |  | 0% → 100% | 14d → none |  |  |
| 22 | Testing and bug fixes | 2007-03-22 → 2007-04-02 A (+11d) | 2007-03-28 → 2007-04-06 A (+9d) |  | 0% → 100% | 0d → none |  |  |
| 23 | Release notes | 2007-03-29 → 2007-04-09 A (+11d) | 2007-03-29 → 2007-04-09 A (+11d) |  | 0% → 100% | 26d → none |  |  |
| 26 | March iteration release | 2007-03-29 → 2007-04-09 A (+11d) | 2007-03-29 → 2007-04-09 A (+11d) |  | 0% → 100% | 26d → none |  |  |
| 27 | **Apr Iteration** | 2007-03-26 → 2007-03-02 A (-24d) | 2007-04-26 → 2007-05-21 (+25d) | 24d → 57d | 0% → 2% | 3d → 25d |  |  |
| 29 | **Open Experiment** |  | 2007-04-12 → 2007-04-16 (+4d) | 28d → 30d | 22% → 2% | 36d → 50d |  |  |
| 30 | Backend support for fetching experiment details | 2007-04-04 → 2007-04-06 A (+2d) | 2007-04-09 → 2007-04-11 (+2d) |  | 0% → 5% | 36d → 50d |  |  |
| 31 | UI for opening an experiment | 2007-03-06 A → 2007-03-06 | 2007-03-07 A → 2007-03-07 |  | 100% → 0% | none → 78d |  |  |
| 32 | Integrate UI with backend | 2007-04-10 → 2007-04-12 (+2d) | 2007-04-12 → 2007-04-16 (+4d) |  |  | 36d → 50d |  |  |
| 33 | **View experiment data sheet** | 2007-03-29 → 2007-04-09 (+11d) | 2007-04-06 → 2007-04-17 (+11d) |  |  | 27d → 36d |  |  |
| 34 | UI for showing spreadsheet of selected category dataset | 2007-03-29 → 2007-04-09 (+11d) | 2007-04-04 → 2007-04-13 (+9d) |  |  | 27d → 36d |  |  |
| 35 | Hide/Unhide columns in the spreadsheet | 2007-04-05 → 2007-04-16 (+11d) | 2007-04-06 → 2007-04-17 (+11d) |  |  | 27d → 36d |  |  |
| 36 | **Filter Experiment Data set** | 2007-04-09 → 2007-04-18 (+9d) | 2007-04-18 → 2007-04-27 (+9d) |  |  | 27d → 36d |  |  |
| 37 | UI to filter data set | 2007-04-09 → 2007-04-18 (+9d) | 2007-04-13 → 2007-04-24 (+11d) |  |  | 27d → 36d |  |  |
| 38 | Create category for with filtered data-set | 2007-04-16 → 2007-04-25 (+9d) | 2007-04-18 → 2007-04-27 (+9d) |  |  | 27d → 36d |  |  |
| 39 | **Experiment Data Category** | 2007-03-29 → 2007-04-09 (+11d) |  | 21d → 14d |  | 26d → 42d |  |  |
| 40 | UI for data category hierarchy (Slide 44) | 2007-03-29 → 2007-04-09 (+11d) | 2007-04-04 → 2007-04-13 (+9d) |  |  | 33d → 42d |  |  |
| 42 | Handle onClick event of category | 2007-04-05 → 2007-04-16 (+11d) | 2007-04-06 → 2007-04-17 (+11d) |  |  | 33d → 42d |  |  |
| 43 | Search in data category | 2007-04-09 → 2007-04-18 (+9d) | 2007-04-10 → 2007-04-19 (+9d) |  |  | 33d → 42d |  |  |
| 44 | **Visualizations for experiment datasets** | 2007-03-29 → 2007-04-09 (+11d) | 2007-04-10 → 2007-04-19 (+9d) |  |  |  |  |  |
| 45 | Plotting selected dataset columns as a graph (like Sigma plot) | 2007-03-29 → 2007-04-09 (+11d) | 2007-04-04 → 2007-04-13 (+9d) |  |  | 42d → 51d |  |  |
| 46 | CDE based literature network viewer | 2007-04-05 → 2007-04-16 (+11d) | 2007-04-10 → 2007-04-19 (+9d) |  |  |  |  |  |
| 47 | **Data services** | 2007-03-02 A | 2007-04-06 → 2007-04-13 (+7d) | 26d → 31d | 0% → 4% | 49d → 51d |  |  |
| 48 | Getting caArray data related to caTissue extended model. | 2007-03-22 → 2007-04-02 (+11d) | 2007-04-04 → 2007-04-13 (+9d) |  |  |  |  |  |
| 51 | GenePattern analysis service investigation and design | 2007-03-26 → 2007-04-02 A (+7d) | 2007-04-06 → 2007-04-13 (+7d) |  | 0% → 20% | 49d → 51d |  |  |
| 52 | **Server issues** | 2007-03-26 A | 2007-04-19 → 2007-04-25 (+6d) | 19d → 23d | 0% → 7% | 26d → 43d |  |  |
| 53 | Category as output backend | 2007-03-26 A | 2007-04-03 → 2007-04-16 (+13d) | 7d → 16d | 0% → 9% | 35d → 43d |  |  |
| 54 | Category as output backend integration with UI and testing | 2007-04-13 A |  |  | 0% → 10% | 35d → 42d | 7, 55 → none |  |
| 55 | View category in results | 2007-04-04 → 2007-04-17 (+13d) | 2007-04-12 → 2007-04-25 (+13d) |  |  | 35d → 43d |  |  |
| 56 | **Analytical services** | 2007-03-29 → 2007-04-09 (+11d) | 2007-04-17 → 2007-04-26 (+9d) |  |  |  |  |  |
| 57 | Genepattern analytical service support | 2007-03-29 → 2007-04-09 (+11d) | 2007-04-06 → 2007-04-17 (+11d) |  |  | 35d → 44d |  |  |
| 58 | dynamic UI generation for selected analytical service | 2007-04-09 → 2007-04-18 (+9d) | 2007-04-13 → 2007-04-24 (+11d) |  |  | 35d → 44d |  |  |
| 59 | Report tab for analysis to see status of different analysis | 2007-04-11 → 2007-04-20 (+9d) | 2007-04-17 → 2007-04-26 (+9d) |  |  | 33d → 42d |  |  |
| 60 | Backend support to search for analytical service instance and execute query on same | 2007-03-29 → 2007-04-09 (+11d) | 2007-04-04 → 2007-04-13 (+9d) |  |  |  |  |  |
| 61 | Add caB2B project in Tools webpage of caBIG | 2007-03-30 → 2007-04-10 (+11d) | 2007-04-03 → 2007-04-12 (+9d) |  |  | 43d → 52d |  |  |
| 62 | Testing and bug fixes | 2007-04-19 → 2007-05-15 (+26d) | 2007-04-25 → 2007-05-21 (+26d) |  |  | 27d → 25d |  |  |
| 63 | Preparing installer | 2007-04-11 → 2007-04-20 (+9d) | 2007-04-19 → 2007-04-30 (+11d) |  |  |  |  |  |
| 64 | Release notes | 2007-04-20 → 2007-05-01 (+11d) | 2007-04-20 → 2007-05-01 (+11d) |  |  |  |  |  |
| 65 | Updated design document | 2007-03-30 → 2007-04-10 (+11d) | 2007-04-12 → 2007-04-23 (+11d) |  |  | 36d → 45d |  |  |
| 66 | End user manual | 2007-03-30 → 2007-04-10 (+11d) | 2007-04-26 → 2007-05-07 (+11d) |  |  | 26d → 35d |  |  |
| 67 | Beta release | 2007-04-20 → 2007-05-01 (+11d) | 2007-04-20 → 2007-05-01 (+11d) |  |  |  |  |  |
| 68 | **May Iteration** | 2007-04-23 → 2007-05-02 (+9d) | 2007-06-01 → 2007-06-25 (+24d) | 30d → 39d |  |  |  |  |
| 69 | **User authentication** | 2007-03-29 → 2007-05-02 (+34d) | 2007-04-10 → 2007-05-14 (+34d) |  |  | 33d → 0d | none → 67 |  |
| 70 | Login screen | 2007-03-29 → 2007-05-02 (+34d) | 2007-03-30 → 2007-05-03 (+34d) |  |  | 33d → 0d |  |  |
| 71 | Backend support to authenticate user | 2007-04-02 → 2007-05-04 (+32d) | 2007-04-10 → 2007-05-14 (+34d) |  |  | 33d → 0d |  |  |
| 72 | Set-up wiki site for caB2B | 2007-04-23 → 2007-05-15 (+22d) | 2007-04-27 → 2007-05-21 (+24d) |  |  |  | 67 → 69 |  |
| 73 | Review of user manual document by end users | 2007-04-30 → 2007-05-22 (+22d) | 2007-05-11 → 2007-06-04 (+24d) |  |  |  |  |  |
| 74 | Beta testing by end users | 2007-05-14 → 2007-06-05 (+22d) | 2007-06-01 → 2007-06-25 (+24d) |  |  |  |  |  |
| 75 | Beta release bug fixes | 2007-04-23 → 2007-05-02 (+9d) | 2007-05-18 → 2007-05-29 (+11d) |  |  | 8d → 17d |  |  |
| 76 | Installation guide | 2007-04-23 → 2007-05-02 (+9d) | 2007-05-01 → 2007-05-10 (+9d) |  |  | 23d → 32d |  |  |
| 77 | User manual | 2007-04-23 → 2007-05-02 (+9d) | 2007-05-01 → 2007-05-10 (+9d) |  |  | 23d → 32d |  |  |
| 78 | Test cases and test execution report | 2007-05-21 → 2007-05-30 (+9d) | 2007-05-22 → 2007-05-31 (+9d) |  |  | 8d → 17d |  |  |
| 79 | Final design document | 2007-04-23 → 2007-05-02 (+9d) | 2007-04-27 → 2007-05-08 (+11d) |  |  | 25d → 34d |  |  |
| 80 | Final use case document | 2007-04-23 → 2007-05-02 (+9d) | 2007-04-27 → 2007-05-08 (+11d) |  |  | 25d → 34d |  |  |
| 81 | Lessons learned document | 2007-04-23 → 2007-05-02 (+9d) | 2007-04-24 → 2007-05-03 (+9d) |  |  | 28d → 37d |  |  |
| 82 | Final release | 2007-05-22 → 2007-05-31 (+9d) | 2007-05-22 → 2007-05-31 (+9d) |  |  | 8d → 17d |  |  |

## Version 3 (saved 2007-04-24)

Note of the change: *** empty log message ***

Last finish 2007-06-25 → 2007-06-12 (-13d). Complete tasks 18 → 24.

Added:

| ID | Task | Duration | Start | Finish | Constraint | Resources |
| --- | --- | --- | --- | --- | --- | --- |
| 29 | caArray service verification | 15d | 2007-04-02 A | 2007-04-20 |  |  |
| 30 | backend to support outgoing association | 2d | 2007-04-10 A | 2007-04-11 A |  |  |
| 31 | UI to support outgoing association | 1d | 2007-04-11 A | 2007-04-11 A |  |  |
| 32 | backend changes to maintain associated objects values | 8d | 2007-04-12 A | 2007-04-23 |  |  |
| 33 | query changes to fetch associated object | 5d | 2007-04-11 | 2007-04-17 | start no earlier than 2007-04-11 |  |
| 34 | saving BioDataCube | 4d | 2007-04-02 | 2007-04-05 |  |  |
| 35 | UI for bioDataCube | 4d | 2007-04-25 | 2007-04-30 | finish no earlier than 2007-04-30 |  |
| 88 | **Bug fixing** | 39d? | 2007-02-16 | 2007-04-11 |  |  |
| 89 | caB2B Server | 1d? | 2007-04-11 | 2007-04-11 | start no earlier than 2007-04-11 | Rahul |
| 93 | KT session with Chetan | 1d? | 2007-04-11 | 2007-04-11 | start no earlier than 2007-04-11 | Deepak; Hrishikesh; Rahul; Chetan |
| 94 | Java training | 1d? | 2007-02-16 | 2007-02-16 |  |  |
| 95 | KT session with Pratibha | 1d? | 2007-02-16 | 2007-02-16 |  | Team |
| 96 | KT session with Mahesh | 1d? | 2007-02-16 | 2007-02-16 |  |  |
| 97 | code reviews | 0.33d? | 2007-02-16 | 2007-02-16 |  | Rahul; Chandrakant; Srinath |

Changed:

| ID | Task | Start | Finish | Duration | Complete | Total float | Predecessors | Other |
| --- | --- | --- | --- | --- | --- | --- | --- | --- |
| 27 | **Apr Iteration** |  | 2007-05-21 → 2007-05-07 (-14d) | 57d → 47d | 2% → 25% | 25d → 26d |  |  |
| 28 | **caArray Support in query module** |  | 2007-04-20 → 2007-04-30 (+10d) | 15d → 21d | 1% → 41% | 46d → 31d |  | was named caArray Support in Query module |
| 36 | **Open Experiment** | 2007-03-06 A → 2007-04-03 A (+28d) | 2007-04-16 → 2007-04-24 A (+8d) | 30d → 16d | 2% → 100% | 50d → none |  |  |
| 37 | Backend support for fetching experiment details | 2007-04-06 A → 2007-04-03 A (-3d) | 2007-04-11 → 2007-04-06 A (-5d) |  | 5% → 100% | 50d → none |  |  |
| 38 | UI for opening an experiment | 2007-03-06 → 2007-04-15 A (+40d) | 2007-03-07 → 2007-04-19 A (+43d) | 2d → 4d | 0% → 100% | 78d → none |  |  |
| 39 | Integrate UI with backend | 2007-04-12 → 2007-04-17 A (+5d) | 2007-04-16 → 2007-04-24 A (+8d) | 3d → 6d | 0% → 100% | 50d → none |  |  |
| 40 | **Data services** |  | 2007-04-13 → 2007-04-17 (+4d) | 31d → 33d | 4% → 10% | 51d → 40d |  |  |
| 44 | GenePattern analysis service investigation and design | 2007-04-02 A → 2007-04-09 A (+7d) | 2007-04-13 → 2007-04-17 (+4d) | 10d → 7d | 20% → 57% | 51d → 40d |  | resources Hrishikesh → Hrishikesh; Chandrakant |
| 45 | **Server issues** |  | 2007-04-25 → 2007-04-23 (-2d) | 23d → 21d | 7% → 77% | 43d → 31d |  |  |
| 46 | Category as output backend |  | 2007-04-16 → 2007-04-23 A (+7d) | 16d → 21d | 9% → 100% | 43d → none |  |  |
| 47 | Category as output backend integration with UI and testing |  | 2007-04-19 → 2007-04-23 (+4d) | 5d → 7d | 10% → 7% | 42d → 31d |  | constraint none → finish no earlier than 2007-04-23 |
| 48 | View Category in results | 2007-04-17 → 2007-03-26 A (-22d) | 2007-04-25 → 2007-04-18 (-7d) | 7d → 18d | 0% → 30% | 43d → 39d | 46 → none | was named View category in results; constraint none → start no earlier than 2007-03-26 |
| 49 | **Experiment Data Category** |  | 2007-04-26 → 2007-04-30 (+4d) | 14d → 16d |  | 42d → 31d |  |  |
| 51 | Backend to get data for selected category | 2007-04-20 → 2007-04-24 (+4d) | 2007-04-26 → 2007-04-30 (+4d) |  |  | 42d → 31d |  |  |
| 69 | Testing and bug fixes | 2007-05-15 → 2007-04-30 (-15d) | 2007-05-21 → 2007-05-04 (-17d) |  |  | 25d → 27d | 92, 67 → 67 |  |
| 75 | **May Iteration** |  | 2007-06-25 → 2007-06-12 (-13d) | 39d → 30d |  |  |  |  |
| 76 | Set-up wiki site for caB2B | 2007-05-15 → 2007-05-02 (-13d) | 2007-05-21 → 2007-05-08 (-13d) |  |  |  | 90 → 74 |  |
| 77 | Review of user manual document by end users | 2007-05-22 → 2007-05-09 (-13d) | 2007-06-04 → 2007-05-22 (-13d) |  |  |  |  |  |
| 78 | Beta testing by end users | 2007-06-05 → 2007-05-23 (-13d) | 2007-06-25 → 2007-06-12 (-13d) |  |  |  |  |  |
| 90 | caB2B User Interface | 2007-05-02 → 2007-02-16 (-75d) | 2007-05-14 → 2007-02-16 (-87d) | 9d → 1d? |  | 0d → 82d | 74 → none | was named User authentication; baseline start 2007-04-05 → none; baseline finish 2007-04-17 → none |
| 91 | **Misc** | 2007-05-02 → 2007-02-16 (-75d) | 2007-05-03 → 2007-04-11 (-22d) | 2d → 39d? |  | 0d → 44d | 22 → none | was named Login screen; resources Pratibha → none; baseline start 2007-04-05 → none; baseline finish 2007-04-06 → none |
| 92 | Build process on local CVS | 2007-05-04 → 2007-04-11 (-23d) | 2007-05-14 → 2007-04-11 (-33d) | 7d → 0.5d? |  | 0d → 44.5d | 91 → none | was named Backend support to authenticate user; constraint none → start no earlier than 2007-04-11; resources Pratibha → Rahul; Chandrakant; baseline start 2007-04-09 → none; baseline finish 2007-04-17 → none |
