# caB2B_Year_2_Edit

How a schedule from MS Project changed from version to version. A marks actual dates.

## Version 1 (saved 2007-09-03)

Note of the change: Year 2 requirments and planning

| ID | WBS | Task | Duration | Start | Finish | Predecessors | Total float |
| --- | --- | --- | --- | --- | --- | --- | --- |
| 1 | 1 | **caB2B Year 2** | 1588d? | 2007-08-06 | 2013-09-05 |  | 0d |
| 2 | 1.1 | **Mile Stone 1** | 222d | 2007-08-06 | 2008-06-11 |  | 0d |
| 3 | 1.1.1 | **Saved Query** | 48d | 2007-08-06 | 2007-10-11 |  | 0d |
| 4 |  | query model changes | 3d | 2007-08-06 | 2007-08-08 |  | 0d |
| 5 |  | specifying hibernate mappings, schema generation | 10d | 2007-08-09 | 2007-08-23 | 4 | 0d |
| 6 |  | UI changes to integrate and testing | 2d | 2007-08-24 | 2007-08-27 | 5 | 0d |
| 7 |  | Regenrate UI (DAG etc) from saved query | 10d | 2007-08-28 | 2007-09-10 | 6 | 0d |
| 8 | 1.1.1.5 | **Parametrized query** | 23d | 2007-09-11 | 2007-10-11 | 7 | 0d |
| 9 |  | develop wireframes | 3d | 2007-09-11 | 2007-09-13 |  | 0d |
| 10 |  | query model changes | 4d | 2007-09-14 | 2007-09-19 | 9 | 0d |
| 11 |  | specifying hibernate mappings, schema generation | 3d | 2007-09-20 | 2007-09-24 | 10 | 0d |
| 12 |  | develop screen to define parameterized query | 6d | 2007-09-25 | 2007-10-02 | 11 | 0d |
| 13 |  | develop screen to execute parameterized query | 3d | 2007-10-03 | 2007-10-05 | 12 | 0d |
| 14 |  | UI changes to integrate and testing | 4d | 2007-10-08 | 2007-10-11 | 13 | 0d |
| 15 | 1.1.2 | **Create custom data categories** | 50d | 2007-10-12 | 2007-12-20 | 3 | 0d |
| 16 | 1.1.2.1 | **In experiment context** | 29d | 2007-10-12 | 2007-11-21 |  | 0d |
| 17 |  | develop wireframes | 1d | 2007-10-12 | 2007-10-12 |  | 0d |
| 18 |  | deveople screen to create CDC | 7d | 2007-10-15 | 2007-10-23 | 17 | 0d |
| 19 |  | design CDC backend | 7d | 2007-10-24 | 2007-11-01 | 18 | 0d |
| 20 |  | saving CDC | 5d | 2007-11-02 | 2007-11-08 | 19 | 0d |
| 21 |  | populating and fetching data for CDC | 9d | 2007-11-09 | 2007-11-21 | 20 | 0d |
| 22 | 1.1.2.2 | **By Admin** | 21d | 2007-11-22 | 2007-12-20 | 16 | 0d |
| 23 |  | develop wireframes | 1d | 2007-11-22 | 2007-11-22 |  | 0d |
| 24 |  | deveople screen to create CDC | 5d | 2007-11-23 | 2007-11-29 | 23 | 0d |
| 25 |  | design backend | 2d | 2007-11-30 | 2007-12-03 | 24 | 0d |
| 26 |  | coding for backend | 6d | 2007-12-04 | 2007-12-11 | 25 | 0d |
| 27 |  | finding matching CDC while opeing experiment | 7d | 2007-12-12 | 2007-12-20 | 26 | 0d |
| 28 | 1.1.3 | **caArray support** | 30d | 2007-12-21 | 2008-01-31 | 15 | 0d |
| 29 |  | Investigate to query for large objects | 15d | 2007-12-21 | 2008-01-10 |  | 0d |
| 30 |  | design BDQ to save along with metadata | 15d | 2008-01-11 | 2008-01-31 | 29 | 0d |
| 31 | 1.1.4 | **New viewers (metadata based)** | 28d | 2008-02-01 | 2008-03-11 | 28 | 0d |
| 32 |  | design for generic viewer | 7d | 2008-02-01 | 2008-02-11 |  | 0d |
| 33 | 1.1.4.2 | **Heat Map viewer** | 21d | 2008-02-12 | 2008-03-11 | 32 | 0d |
| 34 |  | find appropriate 3rd party library | 9d | 2008-02-12 | 2008-02-22 |  | 0d |
| 35 |  | finalize operation to be done on heat map | 3d | 2008-02-25 | 2008-02-27 | 34 | 0d |
| 36 |  | implement heat map viewer | 9d | 2008-02-28 | 2008-03-11 | 35 | 0d |
| 37 | 1.1.5 | **Spreadsheet Component** | 22d | 2008-03-12 | 2008-04-10 | 31 | 0d |
| 38 |  | Export | 2d | 2008-03-12 | 2008-03-13 |  | 0d |
| 39 |  | Specify view for Custom data category | 3d | 2008-03-14 | 2008-03-18 | 38 | 0d |
| 40 |  | Filters like spot fire | 12d | 2008-03-19 | 2008-04-03 | 39 | 0d |
| 41 |  | Add New ,copy ,paste | 5d | 2008-04-04 | 2008-04-10 | 40 | 0d |
| 42 | 1.1.6 | **Providing security credentials for the data services** | 24d | 2008-04-11 | 2008-05-14 | 37 | 0d |
| 43 |  | investigate grid security features | 15d | 2008-04-11 | 2008-05-01 |  | 0d |
| 44 |  | test with catissue | 9d | 2008-05-02 | 2008-05-14 | 43 | 0d |
| 45 |  | ICR | 20d | 2008-05-15 | 2008-06-11 | 42 | 0d |
| 46 | 1.2 | **Mile Stone 2** | 215d | 2008-06-12 | 2009-04-08 | 2 | 0d |
| 47 | 1.2.1 | **Analytical services for micro array data** | 21d | 2008-06-12 | 2008-07-10 |  | 0d |
| 48 |  | Investigate on AS metadata | 9d | 2008-06-12 | 2008-06-24 |  | 0d |
| 49 |  | load input output model for service | 5d | 2008-06-25 | 2008-07-01 | 48 | 0d |
| 50 |  | test the service | 7d | 2008-07-02 | 2008-07-10 | 49 | 0d |
| 51 | 1.2.2 | **Define output view (3rd screen)** | 26d | 2008-07-11 | 2008-08-15 | 47 | 0d |
| 52 |  | develop wireframes | 1d | 2008-07-11 | 2008-07-11 |  | 0d |
| 53 |  | develop screen | 10d | 2008-07-14 | 2008-07-25 | 52 | 0d |
| 54 |  | chages in query generation | 15d | 2008-07-28 | 2008-08-15 | 53 | 0d |
| 55 |  | Convert 3D to 2D data | 22d | 2008-08-18 | 2008-09-16 | 51 | 0d |
| 56 |  | Creating and save categories | 15d | 2008-09-17 | 2008-10-07 | 55 | 0d |
| 57 |  | Automated down load of caDSR models | 22d | 2008-10-08 | 2008-11-06 | 56 | 0d |
| 58 |  | Connecting two categories | 7d | 2008-11-07 | 2008-11-17 | 57 | 0d |
| 59 |  | New viewers (metadata based) | 22d | 2008-11-18 | 2008-12-17 | 58 | 0d |
| 60 |  | ICR | 80d | 2008-12-18 | 2009-04-08 | 59 | 0d |
| 61 | 1.3 | **Mile Stone 3** | 212d | 2009-04-09 | 2010-01-29 | 46 | 0d |
| 62 |  | configuration of service/instance to query | 22d | 2009-04-09 | 2009-05-08 |  | 0d |
| 63 |  | caArray category | 45d | 2009-05-11 | 2009-07-10 | 62 | 0d |
| 64 |  | Remove client jar dependency for Analytical services (AS) | 35d | 2009-07-13 | 2009-08-28 | 63 | 0d |
| 65 |  | Ability to configure the applications used for metadata serach | 18d | 2009-08-31 | 2009-09-23 | 64 | 0d |
| 66 |  | pre-defined filters on attributes | 15d | 2009-09-24 | 2009-10-14 | 65 | 0d |
| 67 |  | Join data list (data category) | 15d | 2009-10-15 | 2009-11-04 | 66 | 0d |
| 68 |  | New viewers (metadata based) | 22d | 2009-11-05 | 2009-12-04 | 67 | 0d |
| 69 |  | ICR | 40d | 2009-12-07 | 2010-01-29 | 68 | 0d |
| 70 | 1.4 | **Mile Stone 4** | 222d | 2010-02-01 | 2010-12-07 | 61 | 0d |

| ID | WBS | Task | Duration | Start | Finish | Predecessors | Total float |
| --- | --- | --- | --- | --- | --- | --- | --- |
| 71 |  | Relevance based searched | 35d | 2010-02-01 | 2010-03-19 |  | 0d |
| 72 |  | Return derived classes when searched for base class | 30d | 2010-03-22 | 2010-04-30 | 71 | 0d |
| 73 |  | Asynchronous execution of query | 45d | 2010-05-03 | 2010-07-02 | 72 | 0d |
| 74 |  | Authentication with our own IDP | 30d | 2010-07-05 | 2010-08-13 | 73 | 0d |
| 75 |  | Curating path | 30d | 2010-08-16 | 2010-09-24 | 74 | 0d |
| 76 |  | New viewers (metadata based) | 22d | 2010-09-27 | 2010-10-26 | 75 | 0d |
| 77 |  | Incorporate UE Review comments till date Part 1 | 20d | 2010-10-27 | 2010-11-23 | 76 | 0d |
| 78 |  | Define URLs for selected data for browser window viewer | 10d | 2010-11-24 | 2010-12-07 | 77 | 0d |
| 79 | 1.5 | **Mile Stone 5** | 365d | 2010-12-08 | 2012-05-01 | 70 | 0d |
| 80 |  | View the existing data list | 22d | 2010-12-08 | 2011-01-06 |  | 0d |
| 81 |  | Paths between categories and class | 35d | 2011-01-07 | 2011-02-24 | 80 | 0d |
| 82 |  | Create Experiments from the multiple existing data list. | 10d | 2011-02-25 | 2011-03-10 | 81 | 0d |
| 83 |  | User friendly names for records | 15d | 2011-03-11 | 2011-03-31 | 82 | 0d |
| 84 |  | parenthesis in DAG | 35d | 2011-04-01 | 2011-05-19 | 83 | 0d |
| 85 |  | Popularity Paths, categories | 18d | 2011-05-20 | 2011-06-14 | 84 | 0d |
| 86 |  | Edit used path (overriding curated/selected paths) | 10d | 2011-06-15 | 2011-06-28 | 85 | 0d |
| 87 |  | Define Attribute view | 10d | 2011-06-29 | 2011-07-12 | 86 | 0d |
| 88 |  | Highlight matched words in search results | 10d | 2011-07-13 | 2011-07-26 | 87 | 0d |
| 89 |  | Incorporate UE Review comments till date Part 2 | 30d | 2011-07-27 | 2011-09-06 | 88 | 0d |
| 90 |  | Partial auto connect | 45d | 2011-09-07 | 2011-11-08 | 89 | 0d |
| 91 |  | Authentication with other IDP | 15d | 2011-11-09 | 2011-11-29 | 90 | 0d |
| 92 |  | Smart metadata search (Merge CDEs across versions of same application) | 45d | 2011-11-30 | 2012-01-31 | 91 | 0d |
| 93 |  | Delete data to existing experiment | 15d | 2012-02-01 | 2012-02-21 | 92 | 0d |
| 94 |  | Add data to existing experiment | 15d | 2012-02-22 | 2012-03-13 | 93 | 0d |
| 95 |  | While creating data list, ability to add only selected attributes of records | 35d | 2012-03-14 | 2012-05-01 | 94 | 0d |
| 96 | 1.6 | **Mile Stone 6** | 252d | 2012-05-02 | 2013-04-18 | 79 | 0d |
| 97 |  | Copy/Move experiment | 15d | 2012-05-02 | 2012-05-22 |  | 0d |
| 98 |  | Upgrade technology stack as per caBIG | 45d | 2012-05-23 | 2012-07-24 | 97 | 0d |
| 99 |  | Keyboard support for application | 45d | 2012-07-25 | 2012-09-25 | 98 | 0d |
| 100 |  | Automatic resize of application UI for all resolution | 30d | 2012-09-26 | 2012-11-06 | 99 | 0d |
| 101 |  | Defining category group | 22d | 2012-11-07 | 2012-12-06 | 100 | 0d |
| 102 |  | Advance view | 35d | 2012-12-07 | 2013-01-24 | 101 | 0d |
| 103 |  | Incorporate pending UE comments | 60d | 2013-01-25 | 2013-04-18 | 102 | 0d |
| 104 | 1.7 | **Documentaion** | 100d | 2013-04-19 | 2013-09-05 | 103 | 0d |
| 105 |  | User manual | 35d | 2013-04-19 | 2013-06-06 |  | 0d |
| 106 |  | Design document | 35d | 2013-06-07 | 2013-07-25 | 105 | 0d |
| 107 |  | Lesson learned document | 15d | 2013-07-26 | 2013-08-15 | 106 | 0d |
| 108 |  | Web site update | 15d | 2013-08-16 | 2013-09-05 | 107 | 0d |
| 109 | 1.8 | **Release activities** | 134d | 2007-08-06 | 2008-02-08 |  | 1454d |
| 110 |  | internal QA cycle | 30d | 2007-08-06 | 2007-09-17 |  | 1454d |
| 111 |  | bug fixing | 45d | 2007-09-18 | 2007-11-19 | 110 | 1454d |
| 112 |  | beta release | 7d | 2007-11-20 | 2007-11-28 | 111 | 1454d |
| 113 |  | Testing by end users | 0d | 2007-11-28 | 2007-11-28 | 112 | 1454d |
| 114 |  | bug fixing (beta and end user bugs) | 45d | 2007-11-29 | 2008-01-30 | 113 | 1454d |
| 115 |  | final release | 7d | 2008-01-31 | 2008-02-08 | 114 | 1454d |
| 116 | 1.9 | **Performance** | 1d? | 2007-08-06 | 2007-08-06 |  | 1587d |
| 117 |  | WS enumeration | 1d? | 2007-08-06 | 2007-08-06 |  | 1558d |
| 118 |  | High throughput workgroup | 1d? | 2007-08-06 | 2007-08-06 |  | 1558d |
| 119 |  | Explore caGrid FTP | 1d? | 2007-08-06 | 2007-08-06 |  | 1558d |
| 120 |  | Develop prototype for compomnets for performance issues | 1d? | 2007-08-06 | 2007-08-06 |  | 1558d |

## Version 2 (saved 2007-09-18)

Note of the change: 18 sept

Last finish 2013-09-05 → 2013-01-17 (-231d). Complete tasks 0 → 16.

Added:

| ID | Task | Duration | Start | Finish | Predecessors | Constraint | Resources |
| --- | --- | --- | --- | --- | --- | --- | --- |
| 42 | Integrating in cab2b | 5d | 2007-09-17 A | 2007-09-21 | 41 | start no earlier than 2007-09-17 | Rahul Ner |
| 47 | QA cycle | 5d | 2007-10-17 | 2007-10-24 | 3, 15, 28, 31, 37 |  |  |

Changed:

| ID | Task | Start | Finish | Duration | Complete | Total float | Predecessors | Other |
| --- | --- | --- | --- | --- | --- | --- | --- | --- |
| 1 | **caB2B Year 2** | 2007-08-06 A | 2013-09-05 → 2013-01-17 (-231d) | 1588d? → 1421.4d? | 0% → 5% |  |  | baseline start none → 2007-08-06; baseline finish none → 2013-01-02 |
| 2 | **Mile Stone 1 (Aug-Sept)** | 2007-08-06 A | 2008-06-11 → 2007-10-24 (-231d) | 222d → 55.4d | 0% → 38% |  |  | was named Mile Stone 1; baseline start none → 2007-08-06; baseline finish none → 2007-10-09 |
| 3 | **Saved Query** | 2007-08-06 A | 2007-10-11 → 2007-10-03 (-8d) | 48d → 41d | 0% → 56% | 0d → 9.4d |  | resources Rahul Ner → none; baseline start none → 2007-08-06; baseline finish none → 2007-10-03 |
| 4 | query model changes | 2007-08-06 A | 2007-08-08 → 2007-08-10 A (+2d) | 3d → 5d | 0% → 100% | 0d → none |  | resources Rahul Ner → chetan_patil; baseline start none → 2007-08-06; baseline finish none → 2007-08-10 |
| 5 | specifying hibernate mappings, schema generation | 2007-08-09 → 2007-08-13 A (+4d) | 2007-08-23 → 2007-08-29 A (+6d) |  | 0% → 100% | 0d → none |  | resources Rahul Ner → chetan_patil; baseline start none → 2007-08-13; baseline finish none → 2007-08-27 |
| 6 | UI changes to integrate and testing | 2007-08-24 → 2007-08-28 A (+4d) | 2007-08-27 → 2007-08-31 A (+4d) | 2d → 3d | 0% → 100% | 0d → none |  | resources Rahul Ner → chetan_patil; baseline start none → 2007-08-28; baseline finish none → 2007-08-29 |
| 7 | Regenrate UI (DAG etc) from saved query | 2007-08-28 → 2007-09-03 (+6d) | 2007-09-10 → 2007-09-14 (+4d) |  |  | 0d → 22.4d |  | resources Rahul Ner → chetan_patil; baseline start none → 2007-08-30; baseline finish none → 2007-09-12 |
| 8 | **Parametrized query** | 2007-09-11 → 2007-08-06 A (-36d) | 2007-10-11 → 2007-10-03 (-8d) | 23d → 41d | 0% → 46% | 0d → 9.4d | 7 → none | resources Rahul Ner → none; baseline start none → 2007-08-06; baseline finish none → 2007-10-03 |
| 9 | develop wireframes | 2007-09-11 → 2007-08-06 A (-36d) | 2007-09-13 → 2007-08-07 A (-37d) | 3d → 2d | 0% → 100% | 0d → none |  | baseline start none → 2007-08-06; baseline finish none → 2007-08-07 |
| 10 | query model changes | 2007-09-14 → 2007-08-30 A (-15d) | 2007-09-19 → 2007-09-05 A (-14d) | 4d → 5d | 0% → 100% | 0d → none |  | resources Rahul Ner → chetan_patil; baseline start none → 2007-08-30; baseline finish none → 2007-09-05 |
| 11 | specifying hibernate mappings, schema generation | 2007-09-20 → 2007-09-06 A (-14d) | 2007-09-24 → 2007-09-10 A (-14d) |  | 0% → 100% | 0d → none |  | resources Rahul Ner → chetan_patil; baseline start none → 2007-09-06; baseline finish none → 2007-09-10 |
| 12 | develop screen to define parameterized query | 2007-09-25 → 2007-09-17 A (-8d) | 2007-10-02 → 2007-09-24 (-8d) |  | 0% → 10% | 0d → 9.4d |  | resources Rahul Ner → deepak_shingan; baseline start none → 2007-09-17; baseline finish none → 2007-09-24 |
| 13 | develop screen to execute parameterized query | 2007-10-03 → 2007-09-25 (-8d) | 2007-10-05 → 2007-09-27 (-8d) |  |  | 0d → 9.4d |  | resources Rahul Ner → deepak_shingan; baseline start none → 2007-09-25; baseline finish none → 2007-09-27 |
| 14 | UI changes to integrate and testing | 2007-10-08 → 2007-09-28 (-10d) | 2007-10-11 → 2007-10-03 (-8d) |  |  | 0d → 9.4d |  | resources Rahul Ner → chetan_patil; baseline start none → 2007-09-28; baseline finish none → 2007-10-03 |
| 15 | **Create custom data categories** | 2007-10-12 → 2007-08-06 A (-67d) | 2007-12-20 → 2007-10-17 (-64d) | 50d → 50.4d | 0% → 53% |  | 3 → none | resources Rahul Ner → none; baseline start none → 2007-08-06; baseline finish none → 2007-10-08 |
| 16 | **In experiment context** | 2007-10-12 → 2007-08-06 A (-67d) | 2007-11-21 → 2007-09-14 A (-68d) | 29d → 28d | 0% → 100% | 0d → none |  | resources Rahul Ner → none; baseline start none → 2007-08-06; baseline finish none → 2007-09-14 |
| 17 | develop wireframes | 2007-10-12 → 2007-08-06 A (-67d) | 2007-10-12 → 2007-08-06 A (-67d) |  | 0% → 100% | 0d → none |  | resources Rahul Ner → hrishikesh_rajpathak; baseline start none → 2007-08-06; baseline finish none → 2007-08-06 |
| 18 | deveople screen to create CDC | 2007-10-15 → 2007-08-07 A (-69d) | 2007-10-23 → 2007-08-16 A (-68d) |  | 0% → 100% | 0d → none |  | resources Rahul Ner → hrishikesh_rajpathak; baseline start none → 2007-08-07; baseline finish none → 2007-08-16 |
| 19 | design CDC backend | 2007-10-24 → 2007-08-17 A (-68d) | 2007-11-01 → 2007-08-27 A (-66d) |  | 0% → 100% | 0d → none |  | resources Rahul Ner → hrishikesh_rajpathak; baseline start none → 2007-08-17; baseline finish none → 2007-08-27 |
| 20 | saving CDC | 2007-11-02 → 2007-08-28 A (-66d) | 2007-11-08 → 2007-09-03 A (-66d) | 5d → 4d | 0% → 100% | 0d → none |  | resources Rahul Ner → hrishikesh_rajpathak; baseline start none → 2007-08-28; baseline finish none → 2007-09-03 |
| 21 | populating and fetching data for CDC | 2007-11-09 → 2007-09-04 A (-66d) | 2007-11-21 → 2007-09-14 A (-68d) | 9d → 8d | 0% → 100% | 0d → none |  | resources Rahul Ner → hrishikesh_rajpathak; baseline start none → 2007-09-04; baseline finish none → 2007-09-14 |
| 22 | **By Admin** | 2007-11-22 → 2007-09-17 A (-66d) | 2007-12-20 → 2007-10-17 (-64d) | 21d → 22.4d | 0% → 7% |  |  | resources Rahul Ner → none; baseline start none → 2007-09-17; baseline finish none → 2007-10-08 |
| 23 | develop wireframes | 2007-11-22 → 2007-09-17 A (-66d) | 2007-11-22 → 2007-09-17 (-66d) |  | 0% → 50% | 0d → 21.4d |  | baseline start none → 2007-09-17; baseline finish none → 2007-09-17 |
| 24 | deveople screen to create CDC | 2007-11-23 → 2007-09-17 A (-67d) | 2007-11-29 → 2007-09-21 (-69d) |  | 0% → 20% | 0d → 17.4d | 23 → none | resources Rahul Ner → hrishikesh_rajpathak; baseline start none → 2007-09-17; baseline finish none → 2007-09-21 |
| 25 | design backend | 2007-11-30 → 2007-09-17 A (-74d) | 2007-12-03 → 2007-09-19 (-75d) |  | 0% → 20% |  | 24 → none | resources Rahul Ner → srinath_k; baseline start none → 2007-09-17; baseline finish none → 2007-09-19 |
| 26 | coding for backend | 2007-12-04 → 2007-09-19 (-76d) | 2007-12-11 → 2007-09-27 (-75d) |  |  |  |  | resources Rahul Ner → hrishikesh_rajpathak; baseline start none → 2007-09-19; baseline finish none → 2007-09-27 |
| 27 | finding matching CDC while opeing experiment | 2007-12-12 → 2007-09-27 (-76d) | 2007-12-20 → 2007-10-17 (-64d) | 7d → 14d |  |  |  | resources Rahul Ner → srinath_k [50%]; baseline start none → 2007-09-27; baseline finish none → 2007-10-08 |
| 28 | **caArray support** | 2007-12-21 → 2007-08-06 (-137d) | 2008-01-31 → 2007-09-19 (-134d) | 30d → 31d |  | 0d → 19.4d | 15 → none | resources Rahul Ner → none; baseline start none → 2007-08-06; baseline finish none → 2007-09-19 |
| 29 | Investigate to query for large objects | 2007-12-21 → 2007-08-06 (-137d) | 2008-01-10 → 2007-08-29 (-134d) |  |  | 0d → 19.4d |  | baseline start none → 2007-08-06; baseline finish none → 2007-08-29 |
| 30 | design BDQ to save along with metadata | 2008-01-11 → 2007-08-30 (-134d) | 2008-01-31 → 2007-09-19 (-134d) |  |  | 0d → 19.4d |  | baseline start none → 2007-08-30; baseline finish none → 2007-09-19 |
| 31 | **New viewers (metadata based)** | 2008-02-01 → 2007-08-06 A (-179d) | 2008-03-11 → 2007-09-21 (-172d) | 28d → 33d | 0% → 43% | 0d → 17.4d | 28 → none | resources Rahul Ner → none; baseline start none → 2007-08-06; baseline finish none → 2007-09-17 |
| 32 | design for generic viewer | 2008-02-01 → 2007-08-06 A (-179d) | 2008-02-11 → 2007-08-14 (-181d) |  | 0% → 10% | 0d → 30.92d |  | resources Rahul Ner → chandrakant_talele; baseline start none → 2007-08-06; baseline finish none → 2007-08-14 |
| 33 | **Heat Map viewer** | 2008-02-12 → 2007-08-16 A (-180d) | 2008-03-11 → 2007-09-21 (-172d) | 21d → 26d | 0% → 52% | 0d → 17.4d |  | baseline start none → 2007-08-16; baseline finish none → 2007-09-17 |
| 34 | find appropriate 3rd party library | 2008-02-12 → 2007-08-16 A (-180d) | 2008-02-22 → 2007-09-05 A (-170d) | 9d → 13d | 0% → 100% | 0d → none |  | resources Rahul Ner → deepak_shingan; baseline start none → 2007-08-16; baseline finish none → 2007-08-30 |
| 35 | finalize operation to be done on heat map | 2008-02-25 → 2007-09-06 (-172d) | 2008-02-27 → 2007-09-10 (-170d) |  |  | 0d → 17.4d |  | resources Rahul Ner → deepak_shingan; baseline start none → 2007-08-31; baseline finish none → 2007-09-04 |
| 36 | implement heat map viewer | 2008-02-28 → 2007-09-11 (-170d) | 2008-03-11 → 2007-09-21 (-172d) |  |  | 0d → 17.4d |  | resources Rahul Ner → chandrakant_talele; baseline start none → 2007-09-05; baseline finish none → 2007-09-17 |
| 37 | **Spreadsheet Component** | 2008-03-12 → 2007-08-06 A (-219d) | 2008-04-10 → 2007-09-21 (-202d) | 22d → 33d | 0% → 83% | 0d → 17.4d | 31 → none | resources Rahul Ner → none; baseline start none → 2007-08-06; baseline finish none → 2007-09-10 |
| 38 | Export | 2008-03-12 → 2007-08-06 A (-219d) | 2008-03-13 → 2007-08-07 A (-219d) |  | 0% → 100% | 0d → none |  | resources Rahul Ner → atul_jawale; baseline start none → 2007-08-06; baseline finish none → 2007-08-07 |
| 39 | Specify view for Custom data category | 2008-03-14 → 2007-08-08 A (-219d) | 2008-03-18 → 2007-08-10 A (-221d) |  | 0% → 100% | 0d → none |  | resources Rahul Ner → atul_jawale; baseline start none → 2007-08-08; baseline finish none → 2007-08-10 |
| 40 | Filters like spot fire | 2008-03-19 → 2007-08-13 A (-219d) | 2008-04-03 → 2007-08-27 A (-220d) | 12d → 10d | 0% → 100% | 0d → none |  | resources Rahul Ner → atul_jawale; baseline start none → 2007-08-13; baseline finish none → 2007-08-27 |
| 41 | Add New ,copy ,paste | 2008-04-04 → 2007-08-28 A (-220d) | 2008-04-10 → 2007-09-03 A (-220d) | 5d → 3d | 0% → 100% | 0d → none |  | resources Rahul Ner → atul_jawale; baseline start none → 2007-08-28; baseline finish none → 2007-09-03 |
| 43 | **Providing security credentials for the data services** | 2008-04-11 → 2007-09-18 (-206d) | 2008-05-14 → 2007-10-19 (-208d) |  |  | 0d → 2.4d | 37 → none | resources Rahul Ner → none; baseline start none → 2007-08-06; baseline finish none → 2007-09-11 |
| 44 | investigate grid security features | 2008-04-11 → 2007-09-18 (-206d) | 2008-05-01 → 2007-10-08 (-206d) |  |  | 0d → 2.4d |  | constraint none → start no earlier than 2007-09-18; resources Rahul Ner → hrishikesh_rajpathak; baseline start none → 2007-08-06; baseline finish none → 2007-08-29 |
| 45 | test with catissue | 2008-05-02 → 2007-10-09 (-206d) | 2008-05-14 → 2007-10-19 (-208d) |  |  | 0d → 2.4d |  | resources Rahul Ner → hrishikesh_rajpathak; baseline start none → 2007-08-30; baseline finish none → 2007-09-11 |
| 46 | ICR | 2008-05-15 → 2007-08-06 (-283d) | 2008-06-11 → 2007-09-04 (-281d) |  |  | 0d → 33d | 43 → none | baseline start none → 2007-09-12; baseline finish none → 2007-10-09 |
| 48 | **Mile Stone 2** | 2008-06-12 → 2007-10-24 (-232d) | 2009-04-08 → 2008-08-20 (-231d) |  |  |  |  | baseline start none → 2007-10-10; baseline finish none → 2008-08-05 |
| 49 | **Analytical services for micro array data** | 2008-06-12 → 2007-10-24 (-232d) | 2008-07-10 → 2007-11-22 (-231d) |  |  |  |  | baseline start none → 2007-10-10; baseline finish none → 2007-11-07 |
| 50 | Investigate on AS metadata | 2008-06-12 → 2007-10-24 (-232d) | 2008-06-24 → 2007-11-06 (-231d) |  |  |  |  | baseline start none → 2007-10-10; baseline finish none → 2007-10-22 |
| 51 | load input output model for service | 2008-06-25 → 2007-11-06 (-232d) | 2008-07-01 → 2007-11-13 (-231d) |  |  |  |  | baseline start none → 2007-10-23; baseline finish none → 2007-10-29 |
| 52 | test the service | 2008-07-02 → 2007-11-13 (-232d) | 2008-07-10 → 2007-11-22 (-231d) |  |  |  |  | baseline start none → 2007-10-30; baseline finish none → 2007-11-07 |
| 53 | **Define output view (3rd screen)** | 2008-07-11 → 2007-11-22 (-232d) | 2008-08-15 → 2007-12-28 (-231d) |  |  |  |  | baseline start none → 2007-11-08; baseline finish none → 2007-12-13 |
| 54 | develop wireframes | 2008-07-11 → 2007-11-22 (-232d) | 2008-07-11 → 2007-11-23 (-231d) |  |  |  |  | baseline start none → 2007-11-08; baseline finish none → 2007-11-08 |
| 55 | develop screen | 2008-07-14 → 2007-11-23 (-234d) | 2008-07-25 → 2007-12-07 (-231d) |  |  |  |  | baseline start none → 2007-11-09; baseline finish none → 2007-11-22 |
| 56 | chages in query generation | 2008-07-28 → 2007-12-07 (-234d) | 2008-08-15 → 2007-12-28 (-231d) |  |  |  |  | baseline start none → 2007-11-23; baseline finish none → 2007-12-13 |
| 57 | Convert 3D to 2D data | 2008-08-18 → 2007-12-28 (-234d) | 2008-09-16 → 2008-01-29 (-231d) |  |  |  |  | baseline start none → 2007-12-14; baseline finish none → 2008-01-14 |
| 58 | Creating and save categories | 2008-09-17 → 2008-01-29 (-232d) | 2008-10-07 → 2008-02-19 (-231d) |  |  |  |  | baseline start none → 2008-01-15; baseline finish none → 2008-02-04 |
| 59 | Automated down load of caDSR models | 2008-10-08 → 2008-02-19 (-232d) | 2008-11-06 → 2008-03-20 (-231d) |  |  |  |  | baseline start none → 2008-02-05; baseline finish none → 2008-03-05 |
| 60 | Connecting two categories | 2008-11-07 → 2008-03-20 (-232d) | 2008-11-17 → 2008-03-31 (-231d) |  |  |  |  | baseline start none → 2008-03-06; baseline finish none → 2008-03-14 |
| 61 | New viewers (metadata based) | 2008-11-18 → 2008-03-31 (-232d) | 2008-12-17 → 2008-04-30 (-231d) |  |  |  |  | baseline start none → 2008-03-17; baseline finish none → 2008-04-15 |
| 62 | ICR | 2008-12-18 → 2008-04-30 (-232d) | 2009-04-08 → 2008-08-20 (-231d) |  |  |  |  | baseline start none → 2008-04-16; baseline finish none → 2008-08-05 |
| 63 | **Mile Stone 3** | 2009-04-09 → 2008-08-20 (-232d) | 2010-01-29 → 2009-06-12 (-231d) |  |  |  |  | baseline start none → 2008-08-06; baseline finish none → 2009-05-28 |
| 64 | configuration of service/instance to query | 2009-04-09 → 2008-08-20 (-232d) | 2009-05-08 → 2008-09-19 (-231d) |  |  |  |  | baseline start none → 2008-08-06; baseline finish none → 2008-09-04 |
| 65 | caArray category | 2009-05-11 → 2008-09-19 (-234d) | 2009-07-10 → 2008-11-21 (-231d) |  |  |  |  | baseline start none → 2008-09-05; baseline finish none → 2008-11-06 |
| 66 | Remove client jar dependency for Analytical services (AS) | 2009-07-13 → 2008-11-21 (-234d) | 2009-08-28 → 2009-01-09 (-231d) |  |  |  |  | baseline start none → 2008-11-07; baseline finish none → 2008-12-25 |
| 67 | Ability to configure the applications used for metadata serach | 2009-08-31 → 2009-01-09 (-234d) | 2009-09-23 → 2009-02-04 (-231d) |  |  |  |  | baseline start none → 2008-12-26; baseline finish none → 2009-01-20 |
| 68 | pre-defined filters on attributes | 2009-09-24 → 2009-02-04 (-232d) | 2009-10-14 → 2009-02-25 (-231d) |  |  |  |  | baseline start none → 2009-01-21; baseline finish none → 2009-02-10 |
| 69 | Join data list (data category) | 2009-10-15 → 2009-02-25 (-232d) | 2009-11-04 → 2009-03-18 (-231d) |  |  |  |  | baseline start none → 2009-02-11; baseline finish none → 2009-03-03 |
| 70 | New viewers (metadata based) | 2009-11-05 → 2009-03-18 (-232d) | 2009-12-04 → 2009-04-17 (-231d) |  |  |  |  | baseline start none → 2009-03-04; baseline finish none → 2009-04-02 |
| 71 | ICR | 2009-12-07 → 2009-04-17 (-234d) | 2010-01-29 → 2009-06-12 (-231d) |  |  |  |  | baseline start none → 2009-04-03; baseline finish none → 2009-05-28 |
| 72 | **Mile Stone 4** | 2010-02-01 → 2009-06-12 (-234d) | 2010-12-07 → 2010-04-20 (-231d) |  |  |  |  | baseline start none → 2009-05-29; baseline finish none → 2010-04-05 |

| ID | Task | Start | Finish | Total float | Other |
| --- | --- | --- | --- | --- | --- |
| 73 | Relevance based searched | 2010-02-01 → 2009-06-12 (-234d) | 2010-03-19 → 2009-07-31 (-231d) |  | baseline start none → 2009-05-29; baseline finish none → 2009-07-16 |
| 74 | Return derived classes when searched for base class | 2010-03-22 → 2009-07-31 (-234d) | 2010-04-30 → 2009-09-11 (-231d) |  | baseline start none → 2009-07-17; baseline finish none → 2009-08-27 |
| 75 | Asynchronous execution of query | 2010-05-03 → 2009-09-11 (-234d) | 2010-07-02 → 2009-11-13 (-231d) |  | baseline start none → 2009-08-28; baseline finish none → 2009-10-29 |
| 76 | Authentication with our own IDP | 2010-07-05 → 2009-11-13 (-234d) | 2010-08-13 → 2009-12-25 (-231d) |  | baseline start none → 2009-10-30; baseline finish none → 2009-12-10 |
| 77 | Curating path | 2010-08-16 → 2009-12-25 (-234d) | 2010-09-24 → 2010-02-05 (-231d) |  | baseline start none → 2009-12-11; baseline finish none → 2010-01-21 |
| 78 | New viewers (metadata based) | 2010-09-27 → 2010-02-05 (-234d) | 2010-10-26 → 2010-03-09 (-231d) |  | baseline start none → 2010-01-22; baseline finish none → 2010-02-22 |
| 79 | Incorporate UE Review comments till date Part 1 | 2010-10-27 → 2010-03-09 (-232d) | 2010-11-23 → 2010-04-06 (-231d) |  | baseline start none → 2010-02-23; baseline finish none → 2010-03-22 |
| 80 | Define URLs for selected data for browser window viewer | 2010-11-24 → 2010-04-06 (-232d) | 2010-12-07 → 2010-04-20 (-231d) |  | baseline start none → 2010-03-23; baseline finish none → 2010-04-05 |
| 81 | **Mile Stone 5** | 2010-12-08 → 2010-04-20 (-232d) | 2012-05-01 → 2011-09-13 (-231d) |  | baseline start none → 2010-04-06; baseline finish none → 2011-08-29 |
| 82 | View the existing data list | 2010-12-08 → 2010-04-20 (-232d) | 2011-01-06 → 2010-05-20 (-231d) |  | baseline start none → 2010-04-06; baseline finish none → 2010-05-05 |
| 83 | Paths between categories and class | 2011-01-07 → 2010-05-20 (-232d) | 2011-02-24 → 2010-07-08 (-231d) |  | baseline start none → 2010-05-06; baseline finish none → 2010-06-23 |
| 84 | Create Experiments from the multiple existing data list. | 2011-02-25 → 2010-07-08 (-232d) | 2011-03-10 → 2010-07-22 (-231d) |  | baseline start none → 2010-06-24; baseline finish none → 2010-07-07 |
| 85 | User friendly names for records | 2011-03-11 → 2010-07-22 (-232d) | 2011-03-31 → 2010-08-12 (-231d) |  | baseline start none → 2010-07-08; baseline finish none → 2010-07-28 |
| 86 | parenthesis in DAG | 2011-04-01 → 2010-08-12 (-232d) | 2011-05-19 → 2010-09-30 (-231d) |  | baseline start none → 2010-07-29; baseline finish none → 2010-09-15 |
| 87 | Popularity Paths, categories | 2011-05-20 → 2010-09-30 (-232d) | 2011-06-14 → 2010-10-26 (-231d) |  | baseline start none → 2010-09-16; baseline finish none → 2010-10-11 |
| 88 | Edit used path (overriding curated/selected paths) | 2011-06-15 → 2010-10-26 (-232d) | 2011-06-28 → 2010-11-09 (-231d) |  | baseline start none → 2010-10-12; baseline finish none → 2010-10-25 |
| 89 | Define Attribute view | 2011-06-29 → 2010-11-09 (-232d) | 2011-07-12 → 2010-11-23 (-231d) |  | baseline start none → 2010-10-26; baseline finish none → 2010-11-08 |
| 90 | Highlight matched words in search results | 2011-07-13 → 2010-11-23 (-232d) | 2011-07-26 → 2010-12-07 (-231d) |  | baseline start none → 2010-11-09; baseline finish none → 2010-11-22 |
| 91 | Incorporate UE Review comments till date Part 2 | 2011-07-27 → 2010-12-07 (-232d) | 2011-09-06 → 2011-01-18 (-231d) |  | baseline start none → 2010-11-23; baseline finish none → 2011-01-03 |
| 92 | Partial auto connect | 2011-09-07 → 2011-01-18 (-232d) | 2011-11-08 → 2011-03-22 (-231d) |  | baseline start none → 2011-01-04; baseline finish none → 2011-03-07 |
| 93 | Authentication with other IDP | 2011-11-09 → 2011-03-22 (-232d) | 2011-11-29 → 2011-04-12 (-231d) |  | baseline start none → 2011-03-08; baseline finish none → 2011-03-28 |
| 94 | Smart metadata search (Merge CDEs across versions of same application) | 2011-11-30 → 2011-04-12 (-232d) | 2012-01-31 → 2011-06-14 (-231d) |  | baseline start none → 2011-03-29; baseline finish none → 2011-05-30 |
| 95 | Delete data to existing experiment | 2012-02-01 → 2011-06-14 (-232d) | 2012-02-21 → 2011-07-05 (-231d) |  | baseline start none → 2011-05-31; baseline finish none → 2011-06-20 |
| 96 | Add data to existing experiment | 2012-02-22 → 2011-07-05 (-232d) | 2012-03-13 → 2011-07-26 (-231d) |  | baseline start none → 2011-06-21; baseline finish none → 2011-07-11 |
| 97 | While creating data list, ability to add only selected attributes of records | 2012-03-14 → 2011-07-26 (-232d) | 2012-05-01 → 2011-09-13 (-231d) |  | baseline start none → 2011-07-12; baseline finish none → 2011-08-29 |
| 98 | **Mile Stone 6** | 2012-05-02 → 2011-09-13 (-232d) | 2013-04-18 → 2012-08-30 (-231d) |  | baseline start none → 2011-08-30; baseline finish none → 2012-08-15 |
| 99 | Copy/Move experiment | 2012-05-02 → 2011-09-13 (-232d) | 2012-05-22 → 2011-10-04 (-231d) |  | baseline start none → 2011-08-30; baseline finish none → 2011-09-19 |
| 100 | Upgrade technology stack as per caBIG | 2012-05-23 → 2011-10-04 (-232d) | 2012-07-24 → 2011-12-06 (-231d) |  | baseline start none → 2011-09-20; baseline finish none → 2011-11-21 |
| 101 | Keyboard support for application | 2012-07-25 → 2011-12-06 (-232d) | 2012-09-25 → 2012-02-07 (-231d) |  | baseline start none → 2011-11-22; baseline finish none → 2012-01-23 |
| 102 | Automatic resize of application UI for all resolution | 2012-09-26 → 2012-02-07 (-232d) | 2012-11-06 → 2012-03-20 (-231d) |  | baseline start none → 2012-01-24; baseline finish none → 2012-03-05 |
| 103 | Defining category group | 2012-11-07 → 2012-03-20 (-232d) | 2012-12-06 → 2012-04-19 (-231d) |  | baseline start none → 2012-03-06; baseline finish none → 2012-04-04 |
| 104 | Advance view | 2012-12-07 → 2012-04-19 (-232d) | 2013-01-24 → 2012-06-07 (-231d) |  | baseline start none → 2012-04-05; baseline finish none → 2012-05-23 |
| 105 | Incorporate pending UE comments | 2013-01-25 → 2012-06-07 (-232d) | 2013-04-18 → 2012-08-30 (-231d) |  | baseline start none → 2012-05-24; baseline finish none → 2012-08-15 |
| 106 | **Documentaion** | 2013-04-19 → 2012-08-30 (-232d) | 2013-09-05 → 2013-01-17 (-231d) |  | baseline start none → 2012-08-16; baseline finish none → 2013-01-02 |
| 107 | User manual | 2013-04-19 → 2012-08-30 (-232d) | 2013-06-06 → 2012-10-18 (-231d) |  | baseline start none → 2012-08-16; baseline finish none → 2012-10-03 |
| 108 | Design document | 2013-06-07 → 2012-10-18 (-232d) | 2013-07-25 → 2012-12-06 (-231d) |  | baseline start none → 2012-10-04; baseline finish none → 2012-11-21 |
| 109 | Lesson learned document | 2013-07-26 → 2012-12-06 (-232d) | 2013-08-15 → 2012-12-27 (-231d) |  | baseline start none → 2012-11-22; baseline finish none → 2012-12-12 |
| 110 | Web site update | 2013-08-16 → 2012-12-27 (-232d) | 2013-09-05 → 2013-01-17 (-231d) |  | baseline start none → 2012-12-13; baseline finish none → 2013-01-02 |
| 111 | **Release activities** |  | 2008-02-08 → 2008-02-11 (+3d) | 1454d → 1287.4d | baseline start none → 2007-08-06; baseline finish none → 2008-02-11 |
| 112 | internal QA cycle |  | 2007-09-17 → 2007-09-18 (+1d) | 1454d → 1287.4d | baseline start none → 2007-08-06; baseline finish none → 2007-09-18 |
| 113 | bug fixing | 2007-09-18 → 2007-09-19 (+1d) | 2007-11-19 → 2007-11-20 (+1d) | 1454d → 1287.4d | baseline start none → 2007-09-19; baseline finish none → 2007-11-20 |
| 114 | beta release | 2007-11-20 → 2007-11-21 (+1d) | 2007-11-28 → 2007-11-29 (+1d) | 1454d → 1287.4d | baseline start none → 2007-11-21; baseline finish none → 2007-11-29 |
| 115 | Testing by end users | 2007-11-28 → 2007-11-29 (+1d) | 2007-11-28 → 2007-11-29 (+1d) | 1454d → 1287.4d | baseline start none → 2007-11-29; baseline finish none → 2007-11-29 |
| 116 | bug fixing (beta and end user bugs) | 2007-11-29 → 2007-11-30 (+1d) | 2008-01-30 → 2008-01-31 (+1d) | 1454d → 1287.4d | baseline start none → 2007-11-30; baseline finish none → 2008-01-31 |
| 117 | final release | 2008-01-31 → 2008-02-01 (+1d) | 2008-02-08 → 2008-02-11 (+3d) | 1454d → 1287.4d | baseline start none → 2008-02-01; baseline finish none → 2008-02-11 |
| 118 | **Performance** |  |  | 1587d → 1420.4d | baseline start none → 2007-08-06; baseline finish none → 2007-08-06 |
| 119 | WS enumeration |  |  | 1558d → 1420.4d | baseline start none → 2007-08-06; baseline finish none → 2007-08-06 |
| 120 | High throughput workgroup |  |  | 1558d → 1420.4d | baseline start none → 2007-08-06; baseline finish none → 2007-08-06 |
| 121 | Explore caGrid FTP |  |  | 1558d → 1420.4d | baseline start none → 2007-08-06; baseline finish none → 2007-08-06 |
| 122 | Develop prototype for compomnets for performance issues |  |  | 1558d → 1420.4d | baseline start none → 2007-08-06; baseline finish none → 2007-08-06 |

## Version 3 (saved 2007-09-26)

Note of the change: 26 sept

Last finish 2013-01-17 → 2011-12-05 (-409d). Complete tasks 16 → 17.

Added:

| ID | Task | Duration | Start | Finish |
| --- | --- | --- | --- | --- |
| 41 | **Ongoing Features** | 28d | 2007-09-24 A | 2007-10-31 |

Removed: 28 caArray support; 29 Investigate to query for large objects; 30 design BDQ to save along with metadata

Changed:

| ID | Task | Start | Finish | Duration | Complete | Total float | Predecessors | Other |
| --- | --- | --- | --- | --- | --- | --- | --- | --- |
| 1 | **caB2B Year 2** |  | 2013-01-17 → 2011-12-05 (-409d) | 1421.4d? → 1128.67d? | 5% → 6% |  |  |  |
| 2 | **Mile Stone 1** |  | 2007-10-24 → 2007-10-22 (-2d) | 55.4d → 53.67d | 38% → 60% |  |  | was named Mile Stone 1 (Aug-Sept) |
| 3 | **Saved Query** |  | 2007-10-03 → 2007-10-11 (+8d) | 41d → 47d | 56% → 65% | 9.4d → 1.67d |  |  |
| 7 | Regenrate UI (DAG etc) from saved query | 2007-09-03 → 2007-09-28 (+25d) | 2007-09-14 → 2007-10-11 (+27d) |  |  | 22.4d → 1.67d | 6 → 6, 13 | resources chetan_patil → deepak_shingan |
| 8 | **Parametrized query** |  |  |  | 46% → 66% | 9.4d → 7.67d |  |  |
| 9 | develop wireframes |  |  |  |  |  |  | resources Rahul Ner → Rahul Ner [50%] |
| 12 | develop screen to define parameterized query |  |  |  | 10% → 75% | 9.4d → 2.27d |  |  |
| 13 | develop screen to execute parameterized query | 2007-09-25 A |  |  | 0% → 20% | 9.4d → 1.67d |  |  |
| 15 | **Create custom data categories** |  | 2007-10-17 → 2007-10-15 (-2d) | 50.4d → 48.67d | 53% → 61% |  |  |  |
| 22 | **By Admin** |  | 2007-10-17 → 2007-10-15 (-2d) | 22.4d → 20.67d | 7% → 21% |  |  |  |
| 23 | develop wireframes |  | 2007-09-17 → 2007-09-18 A (+1d) | 1d → 1.5d | 50% → 100% | 21.4d → none |  |  |
| 24 | deveople screen to create CDC |  |  |  | 20% → 60% | 17.4d → 15.67d |  |  |
| 25 | design backend |  | 2007-09-19 → 2007-09-20 (+1d) | 2d → 3.6d | 20% → 30% |  |  |  |
| 26 | coding for backend | 2007-09-19 → 2007-09-21 (+2d) | 2007-09-27 → 2007-10-08 (+11d) | 6d → 12d |  |  |  | resources hrishikesh_rajpathak → srinath_k [50%] |
| 27 | finding matching CDC while opeing experiment | 2007-09-27 → 2007-10-09 (+12d) | 2007-10-17 → 2007-10-15 (-2d) | 14d → 4.67d |  |  |  | resources srinath_k [50%] → atul_jawale; srinath_k [50%] |
| 28 | **New viewers (metadata based)** |  | 2007-09-21 → 2007-10-04 (+13d) | 33d → 42d | 43% → 48% | 17.4d → 6.67d |  |  |
| 29 | design for generic viewer |  | 2007-08-14 → 2007-09-05 (+22d) | 7d → 13.3d | 10% → 20% | 30.92d → 6.75d |  |  |
| 30 | **Heat Map viewer** |  | 2007-09-21 → 2007-10-04 (+13d) | 26d → 35d | 52% → 59% | 17.4d → 6.67d |  | resources Rahul Ner → none |
| 33 | implement heat map viewer | 2007-09-11 A | 2007-09-21 → 2007-10-04 (+13d) | 9d → 18d | 0% → 40% | 17.4d → 6.67d |  | resources chandrakant_talele → chandrakant_talele [50%] |
| 34 | **Spreadsheet Component** |  | 2007-09-21 → 2007-10-04 (+13d) | 33d → 41.5d | 83% → 76% | 17.4d → 7.17d |  |  |
| 39 | Integrating in cab2b | 2007-09-17 A → 2007-09-18 A (+1d) | 2007-09-21 → 2007-10-04 (+13d) | 5d → 12d | 20% → 40% | 17.4d → 7.17d | 38 → 38, 23 | resources Rahul Ner → Rahul Ner [50%] |
| 40 | QA cycle | 2007-10-17 → 2007-10-15 (-2d) | 2007-10-24 → 2007-10-22 (-2d) |  |  |  | 3, 15, caArray support, 28, 34 → 3, 15, 28, 34 |  |
| 42 | **Providing security credentials for the data services** | 2007-09-18 → 2007-09-24 A (+6d) | 2007-10-19 → 2007-10-25 (+6d) |  | 0% → 13% | 2.4d → 1071.67d |  |  |
| 43 | investigate grid security features | 2007-09-18 → 2007-09-24 A (+6d) | 2007-10-08 → 2007-10-12 (+4d) |  | 0% → 20% | 2.4d → 1071.67d | none → 24 |  |
| 44 | test with catissue | 2007-10-09 → 2007-10-15 (+6d) | 2007-10-19 → 2007-10-25 (+6d) |  |  | 2.4d → 1071.67d |  |  |
| 45 | ICR | 2007-08-06 → 2007-10-04 (+59d) | 2007-09-04 → 2007-10-31 (+57d) |  |  | 33d → 10.67d | none → 14 | resources none → chetan_patil |
| 46 | **Mile Stone 2** | 2007-10-24 → 2007-10-22 (-2d) | 2008-08-20 → 2007-12-21 (-243d) | 215d → 44d |  |  |  |  |
| 47 | **Analytical services for micro array data** | 2007-10-24 → 2007-10-22 (-2d) | 2007-11-22 → 2007-11-20 (-2d) |  |  | 0d → 23d |  | resources Rahul Ner → none |
| 48 | Investigate on AS metadata | 2007-10-24 → 2007-10-22 (-2d) | 2007-11-06 → 2007-11-02 (-4d) |  |  | 0d → 23d |  | resources none → hrishikesh_rajpathak |
| 49 | load input output model for service | 2007-11-06 → 2007-11-02 (-4d) | 2007-11-13 → 2007-11-09 (-4d) |  |  | 0d → 23d |  | resources none → hrishikesh_rajpathak |
| 50 | test the service | 2007-11-13 → 2007-11-09 (-4d) | 2007-11-22 → 2007-11-20 (-2d) |  |  | 0d → 23d |  | resources none → hrishikesh_rajpathak |
| 51 | **Define output view (3rd screen)** | 2007-11-22 → 2007-11-01 (-21d) | 2007-12-28 → 2007-12-06 (-22d) |  |  | 0d → 10.67d | 47 → none | resources Rahul Ner → none |
| 52 | develop wireframes | 2007-11-22 → 2007-11-01 (-21d) | 2007-11-23 → 2007-11-01 (-22d) |  |  | 0d → 13d | none → 45 | resources Rahul Ner → chetan_patil |
| 53 | develop screen | 2007-11-23 → 2007-11-02 (-21d) | 2007-12-07 → 2007-11-15 (-22d) |  |  | 0d → 13d |  | resources Rahul Ner → chetan_patil |
| 54 | chages in query generation | 2007-12-07 → 2007-11-16 (-21d) | 2007-12-28 → 2007-12-06 (-22d) |  |  | 0d → 13d |  | resources Rahul Ner → chetan_patil |
| 55 | Convert 3D to 2D data | 2007-12-28 → 2007-10-22 (-67d) | 2008-01-29 → 2007-12-21 (-39d) | 22d → 44d |  |  | 51 → none | resources Rahul Ner → srinath_k [50%] |
| 56 | Creating and save categories | 2008-01-29 → 2007-10-22 (-99d) | 2008-02-19 → 2007-12-03 (-78d) | 15d → 30d |  | 0d → 14d | 55 → none | resources Rahul Ner → Rahul Ner [50%] |
| 57 | Automated down load of caDSR models | 2008-02-19 → 2007-10-22 (-120d) | 2008-03-20 → 2007-12-21 (-90d) | 22d → 44d |  |  | 56 → none | resources Rahul Ner → chandrakant_talele [50%] |
| 58 | Connecting two categories | 2008-03-20 → 2007-10-22 (-150d) | 2008-03-31 → 2007-10-31 (-152d) |  |  | 0d → 15d | 57 → none | resources Rahul Ner → deepak_shingan |
| 59 | New viewers (metadata based) | 2008-03-31 → 2007-10-31 (-152d) | 2008-04-30 → 2007-11-30 (-152d) |  |  | 0d → 15d |  | resources Rahul Ner → deepak_shingan |
| 60 | ICR | 2008-04-30 → 2007-10-22 (-191d) | 2008-08-20 → 2007-12-17 (-247d) | 80d → 40d |  | 0d → 4d | 59 → none | resources none → atul_jawale; hrishikesh_rajpathak |
| 61 | **Mile Stone 3** | 2008-08-20 → 2007-12-21 (-243d) | 2009-06-12 → 2008-03-18 (-451d) | 212d → 62d |  |  |  |  |
| 62 | configuration of service/instance to query | 2008-08-20 → 2007-12-21 (-243d) | 2008-09-19 → 2008-02-21 (-211d) | 22d → 44d |  | 0d → 18d |  | resources Rahul Ner → chandrakant_talele [50%] |
| 63 | caArray category | 2008-09-19 → 2007-12-21 (-273d) | 2008-11-21 → 2008-02-22 (-273d) |  |  | 0d → 17d | 62 → none | resources Rahul Ner → deepak_shingan |
| 64 | Remove client jar dependency for Analytical services (AS) | 2008-11-21 → 2007-12-21 (-336d) | 2009-01-09 → 2008-02-08 (-336d) |  |  | 0d → 27d | 63 → none | resources Rahul Ner → chetan_patil |
| 65 | Ability to configure the applications used for metadata serach | 2009-01-09 → 2007-12-21 (-385d) | 2009-02-04 → 2008-01-16 (-385d) |  |  |  | 64 → none | resources Rahul Ner → Rahul Ner [50%] |
| 66 | Join data list (data category) | 2009-02-25 → 2007-12-21 (-432d) | 2009-03-18 → 2008-02-01 (-411d) | 15d → 30d |  | 0d → 32d | 71 → none | resources Rahul Ner → srinath_k [50%] |
| 67 | New viewers (metadata based) | 2009-03-18 → 2008-01-16 (-427d) | 2009-04-17 → 2008-03-18 (-395d) | 22d → 44d |  |  | 66 → 65 | resources Rahul Ner → Rahul Ner [50%] |
| 68 | ICR | 2009-04-17 → 2007-12-21 (-483d) | 2009-06-12 → 2008-01-18 (-511d) | 40d → 20d |  | 0d → 42d | 67 → none | resources none → hrishikesh_rajpathak; atul_jawale |
| 69 | **Mile Stone 4** | 2009-06-12 → 2008-03-18 (-451d) | 2010-04-20 → 2009-03-05 (-411d) | 222d → 252d |  |  |  |  |
| 70 | Relevance based searched | 2009-06-12 → 2008-03-18 (-451d) | 2009-07-31 → 2008-05-06 (-451d) |  |  |  |  | resources Rahul Ner → none |
| 71 | pre-defined filters on attributes | 2009-02-04 → 2008-05-06 (-274d) | 2009-02-25 → 2008-06-17 (-253d) | 15d → 30d |  |  | 65 → 70 | resources Rahul Ner → none |
| 72 | Return derived classes when searched for base class | 2009-07-31 → 2008-06-17 (-409d) | 2009-09-11 → 2008-07-29 (-409d) |  |  |  | 70 → 71 | resources Rahul Ner → none |
| 73 | Asynchronous execution of query | 2009-09-11 → 2008-07-29 (-409d) | 2009-11-13 → 2008-09-30 (-409d) |  |  |  |  | resources Rahul Ner → none |
| 74 | Authentication with our own IDP | 2009-11-13 → 2008-09-30 (-409d) | 2009-12-25 → 2008-11-11 (-409d) |  |  |  |  | resources Rahul Ner → none |
| 75 | Curating path | 2009-12-25 → 2008-11-11 (-409d) | 2010-02-05 → 2008-12-23 (-409d) |  |  |  |  | resources Rahul Ner → none |
| 76 | New viewers (metadata based) | 2010-02-05 → 2008-12-23 (-409d) | 2010-03-09 → 2009-01-22 (-411d) |  |  |  |  | resources Rahul Ner → none |
| 77 | Incorporate UE Review comments till date Part 1 | 2010-03-09 → 2009-01-22 (-411d) | 2010-04-06 → 2009-02-19 (-411d) |  |  |  |  |  |
| 78 | Define URLs for selected data for browser window viewer | 2010-04-06 → 2009-02-19 (-411d) | 2010-04-20 → 2009-03-05 (-411d) |  |  |  |  | resources Rahul Ner → none |
| 79 | **Mile Stone 5** | 2010-04-20 → 2009-03-05 (-411d) | 2011-09-13 → 2010-07-29 (-411d) |  |  |  |  |  |
| 80 | View the existing data list | 2010-04-20 → 2009-03-05 (-411d) | 2010-05-20 → 2009-04-06 (-409d) |  |  |  |  | resources Rahul Ner → none |
| 81 | Paths between categories and class | 2010-05-20 → 2009-04-06 (-409d) | 2010-07-08 → 2009-05-25 (-409d) |  |  |  |  | resources Rahul Ner → none |
| 82 | Create Experiments from the multiple existing data list. | 2010-07-08 → 2009-05-25 (-409d) | 2010-07-22 → 2009-06-08 (-409d) |  |  |  |  | resources Rahul Ner → none |
| 83 | User friendly names for records | 2010-07-22 → 2009-06-08 (-409d) | 2010-08-12 → 2009-06-29 (-409d) |  |  |  |  | resources Rahul Ner → none |
| 84 | parenthesis in DAG | 2010-08-12 → 2009-06-29 (-409d) | 2010-09-30 → 2009-08-17 (-409d) |  |  |  |  | resources Rahul Ner → none |
| 85 | Popularity Paths, categories | 2010-09-30 → 2009-08-17 (-409d) | 2010-10-26 → 2009-09-10 (-411d) |  |  |  |  | resources Rahul Ner → none |
| 86 | Edit used path (overriding curated/selected paths) | 2010-10-26 → 2009-09-10 (-411d) | 2010-11-09 → 2009-09-24 (-411d) |  |  |  |  | resources Rahul Ner → none |
| 87 | Define Attribute view | 2010-11-09 → 2009-09-24 (-411d) | 2010-11-23 → 2009-10-08 (-411d) |  |  |  |  | resources Rahul Ner → none |
| 88 | Highlight matched words in search results | 2010-11-23 → 2009-10-08 (-411d) | 2010-12-07 → 2009-10-22 (-411d) |  |  |  |  | resources Rahul Ner → none |
| 89 | Incorporate UE Review comments till date Part 2 | 2010-12-07 → 2009-10-22 (-411d) | 2011-01-18 → 2009-12-03 (-411d) |  |  |  |  |  |

| ID | Task | Start | Finish | Total float | Other |
| --- | --- | --- | --- | --- | --- |
| 90 | Partial auto connect | 2011-01-18 → 2009-12-03 (-411d) | 2011-03-22 → 2010-02-04 (-411d) |  | resources Rahul Ner → none |
| 91 | Authentication with other IDP | 2011-03-22 → 2010-02-04 (-411d) | 2011-04-12 → 2010-02-25 (-411d) |  | resources Rahul Ner → none |
| 92 | Smart metadata search (Merge CDEs across versions of same application) | 2011-04-12 → 2010-02-25 (-411d) | 2011-06-14 → 2010-04-29 (-411d) |  | resources Rahul Ner → none |
| 93 | Delete data to existing experiment | 2011-06-14 → 2010-04-29 (-411d) | 2011-07-05 → 2010-05-20 (-411d) |  | resources Rahul Ner → none |
| 94 | Add data to existing experiment | 2011-07-05 → 2010-05-20 (-411d) | 2011-07-26 → 2010-06-10 (-411d) |  | resources Rahul Ner → none |
| 95 | While creating data list, ability to add only selected attributes of records | 2011-07-26 → 2010-06-10 (-411d) | 2011-09-13 → 2010-07-29 (-411d) |  | resources Rahul Ner → none |
| 96 | **Mile Stone 6** | 2011-09-13 → 2010-07-29 (-411d) | 2012-08-30 → 2011-07-18 (-409d) |  |  |
| 97 | Copy/Move experiment | 2011-09-13 → 2010-07-29 (-411d) | 2011-10-04 → 2010-08-19 (-411d) |  | resources Rahul Ner → none |
| 98 | Upgrade technology stack as per caBIG | 2011-10-04 → 2010-08-19 (-411d) | 2011-12-06 → 2010-10-21 (-411d) |  | resources Rahul Ner → none |
| 99 | Keyboard support for application | 2011-12-06 → 2010-10-21 (-411d) | 2012-02-07 → 2010-12-23 (-411d) |  |  |
| 100 | Automatic resize of application UI for all resolution | 2012-02-07 → 2010-12-23 (-411d) | 2012-03-20 → 2011-02-03 (-411d) |  |  |
| 101 | Defining category group | 2012-03-20 → 2011-02-03 (-411d) | 2012-04-19 → 2011-03-07 (-409d) |  | resources Rahul Ner → none |
| 102 | Advance view | 2012-04-19 → 2011-03-07 (-409d) | 2012-06-07 → 2011-04-25 (-409d) |  | resources Rahul Ner → none |
| 103 | Incorporate pending UE comments | 2012-06-07 → 2011-04-25 (-409d) | 2012-08-30 → 2011-07-18 (-409d) |  | resources Rahul Ner → none |
| 104 | **Documentaion** | 2012-08-30 → 2011-07-18 (-409d) | 2013-01-17 → 2011-12-05 (-409d) |  |  |
| 105 | User manual | 2012-08-30 → 2011-07-18 (-409d) | 2012-10-18 → 2011-09-05 (-409d) |  |  |
| 106 | Design document | 2012-10-18 → 2011-09-05 (-409d) | 2012-12-06 → 2011-10-24 (-409d) |  |  |
| 107 | Lesson learned document | 2012-12-06 → 2011-10-24 (-409d) | 2012-12-27 → 2011-11-14 (-409d) |  |  |
| 108 | Web site update | 2012-12-27 → 2011-11-14 (-409d) | 2013-01-17 → 2011-12-05 (-409d) |  |  |
| 117 | WS enumeration |  |  | 1420.4d → 1130d | resources Rahul Ner → none |
| 118 | High throughput workgroup |  |  | 1420.4d → 1130d | resources Rahul Ner → none |
| 119 | Explore caGrid FTP |  |  | 1420.4d → 1130d | resources Rahul Ner → none |
| 120 | Develop prototype for compomnets for performance issues |  |  | 1420.4d → 1130d | resources Rahul Ner → none |

## Version 4 (saved 2007-10-05)

Note of the change: 5 Oct

Last finish 2011-12-05 → 2011-12-27 (+22d). Complete tasks 17 → 19.

Added:

| ID | Task | Duration | Start | Finish | Predecessors | Constraint | Resources |
| --- | --- | --- | --- | --- | --- | --- | --- |
| 40 | **Bug fixes** | 26.8d | 2007-09-03 A | 2007-10-11 | 34 |  |  |
| 41 | Partial relavance based search | 6d | 2007-09-03 A | 2007-09-10 A |  | start no earlier than 2007-09-03 | Rahul Ner [50%] |
| 42 | Path replication bug | 6d | 2007-09-28 A | 2007-10-11 |  | start no earlier than 2007-09-28 | srinath_k [50%] |
| 49 | **CNAT Analytical service** | 46d | 2007-10-04 | 2007-12-07 |  |  |  |
| 50 | understand input and output of the tool | 4d | 2007-10-04 | 2007-10-10 |  |  | chetan_patil |
| 51 | finalize input / output model | 8d | 2007-10-10 | 2007-10-22 | 50 |  | chetan_patil |
| 52 | deploy the service | 5d | 2007-10-22 | 2007-10-29 | 51 |  | chetan_patil |
| 53 | **Visualizer** | 29d | 2007-10-29 | 2007-12-07 | 52 |  |  |
| 54 | define input model of the visualizer | 4d | 2007-10-29 | 2007-11-02 |  |  | chetan_patil |
| 55 | implementation | 25d | 2007-11-02 | 2007-12-07 | 54 |  | chetan_patil |

Changed:

| ID | Task | Start | Finish | Duration | Complete | Total float | Predecessors | Other |
| --- | --- | --- | --- | --- | --- | --- | --- | --- |
| 1 | **caB2B Year 2** |  | 2011-12-05 → 2011-12-27 (+22d) | 1128.67d? → 1142.6d? | 6% → 8% |  |  |  |
| 2 | **Mile Stone 1** |  | 2007-10-22 → 2007-10-29 (+7d) | 53.67d → 56.67d | 60% → 72% | 0d → 10.93d |  |  |
| 3 | **Saved Query** |  | 2007-10-11 → 2007-10-18 (+7d) | 47d → 49.6d | 65% → 74% | 1.67d → 13d |  |  |
| 7 | Regenrate UI (DAG etc) from saved query | 2007-09-28 → 2007-10-04 (+6d) | 2007-10-11 → 2007-10-18 (+7d) |  |  | 1.67d → 13d | 6, 13 → 6, 14 |  |
| 8 | **Parametrized query** |  | 2007-10-03 → 2007-10-04 (+1d) | 41d → 39.6d | 66% → 86% | 7.67d → 0d |  |  |
| 9 | develop wireframes |  |  |  |  |  |  | resources Rahul Ner [50%] → Rahul Ner |
| 12 | develop screen to define parameterized query |  |  |  | 75% → 85% | 2.27d → 3.55d |  |  |
| 13 | develop screen to execute parameterized query |  |  | 3d → 2d | 20% → 78% | 1.67d → 2d |  | resources deepak_shingan → deepak_shingan [164.5%] |
| 14 | UI changes to integrate and testing | 2007-09-28 A | 2007-10-03 → 2007-10-04 (+1d) | 4d → 3.6d | 0% → 56% | 7.67d → 0d |  | resources chetan_patil → deepak_shingan [120%] |
| 15 | **Create custom data categories** |  | 2007-10-15 → 2007-10-22 (+7d) | 48.67d → 51.67d | 61% → 73% | 0d → 10.93d |  |  |
| 20 | saving CDC |  |  |  |  |  |  | resources hrishikesh_rajpathak → hrishikesh_rajpathak [125%] |
| 21 | populating and fetching data for CDC |  |  |  |  |  |  | resources hrishikesh_rajpathak → hrishikesh_rajpathak [112.5%] |
| 22 | **By Admin** |  | 2007-10-15 → 2007-10-22 (+7d) | 20.67d → 23.67d | 21% → 35% | 0d → 10.93d |  |  |
| 24 | deveople screen to create CDC |  |  |  | 60% → 70% | 15.67d → 29.6d |  |  |
| 25 | design backend |  |  |  | 30% → 45% | 0d → 10.93d |  |  |
| 26 | coding for backend |  | 2007-10-08 → 2007-10-15 (+7d) | 12d → 4d |  | 0d → 10.93d |  | constraint none → start no earlier than 2007-09-21; resources srinath_k [50%] → srinath_k [50%]; atul_jawale |
| 27 | finding matching CDC while opeing experiment | 2007-10-09 → 2007-10-16 (+7d) | 2007-10-15 → 2007-10-22 (+7d) |  |  | 0d → 10.93d |  |  |
| 28 | **New viewers (metadata based)** |  | 2007-10-04 → 2007-10-09 (+5d) | 42d → 43d | 48% → 72% | 6.67d → 19.6d |  |  |
| 29 | design for generic viewer |  |  |  | 20% → 40% | 6.75d → 33.46d |  |  |
| 30 | **Heat Map viewer** |  | 2007-10-04 → 2007-10-09 (+5d) | 35d → 36d | 59% → 85% | 6.67d → 19.6d |  |  |
| 32 | finalize operation to be done on heat map | 2007-09-06 A | 2007-09-10 A |  | 0% → 100% | 13.87d → none |  |  |
| 33 | implement heat map viewer |  | 2007-10-04 → 2007-10-09 (+5d) | 18d → 17d | 40% → 70% | 6.67d → 19.6d |  |  |
| 34 | **Spreadsheet Component** |  | 2007-10-04 → 2007-10-08 (+4d) | 41.5d → 41.2d |  | 7.17d → 16.04d |  |  |
| 38 | Add New ,copy ,paste |  |  |  |  |  |  | resources atul_jawale → atul_jawale [166.7%] |
| 39 | Integrating in cab2b |  | 2007-10-04 → 2007-10-08 (+4d) | 12d → 11.7d | 40% → 38% | 7.17d → 16.04d |  | resources Rahul Ner [50%] → Rahul Ner [53.3%] |
| 43 | QA cycle | 2007-10-15 → 2007-10-22 (+7d) | 2007-10-22 → 2007-10-29 (+7d) |  |  | 0d → 10.93d | 3, 15, 28, 34 → 3, 15, 28, 42 |  |
| 44 | **Ongoing Features** |  | 2007-10-31 → 2007-12-07 (+37d) | 28d → 52.6d |  | 1067.67d → 1057d |  |  |
| 45 | **Providing security credentials for the data services** |  | 2007-10-25 → 2007-10-29 (+4d) |  | 13% → 21% | 1071.67d → 1085.6d |  |  |
| 46 | investigate grid security features |  | 2007-10-12 → 2007-10-16 (+4d) | 15d → 14d | 20% → 35% | 1071.67d → 1085.6d |  |  |
| 47 | test with catissue | 2007-10-15 → 2007-10-17 (+2d) | 2007-10-25 → 2007-10-29 (+4d) |  |  | 1071.67d → 1085.6d |  |  |
| 48 | **ICR** |  | 2007-10-31 → 2007-12-07 (+37d) | 20d → 46d |  | 10.67d → 0d |  | resources chetan_patil → none |
| 56 | **Mile Stone 2** | 2007-10-22 → 2007-10-29 (+7d) | 2007-12-21 → 2008-01-14 (+24d) | 44d → 54.93d |  |  |  |  |
| 57 | **Analytical services for micro array data** | 2007-10-22 → 2007-10-29 (+7d) | 2007-11-20 → 2007-11-27 (+7d) |  |  | 23d → 33.93d |  |  |
| 58 | Investigate on AS metadata | 2007-10-22 → 2007-10-29 (+7d) | 2007-11-02 → 2007-11-09 (+7d) |  |  | 23d → 33.93d |  |  |
| 59 | load input output model for service | 2007-11-02 → 2007-11-09 (+7d) | 2007-11-09 → 2007-11-16 (+7d) |  |  | 23d → 33.93d |  |  |
| 60 | test the service | 2007-11-09 → 2007-11-16 (+7d) | 2007-11-20 → 2007-11-27 (+7d) |  |  | 23d → 33.93d |  |  |
| 61 | **Define output view (3rd screen)** | 2007-11-01 → 2007-12-07 (+36d) | 2007-12-06 → 2008-01-14 (+39d) |  |  | 10.67d → 0d |  |  |
| 62 | develop wireframes | 2007-11-01 → 2007-12-07 (+36d) | 2007-11-01 → 2007-12-10 (+39d) |  |  | 13d → 0d |  |  |
| 63 | develop screen | 2007-11-02 → 2007-12-10 (+38d) | 2007-11-15 → 2007-12-24 (+39d) |  |  | 13d → 0d |  |  |
| 64 | chages in query generation | 2007-11-16 → 2007-12-24 (+38d) | 2007-12-06 → 2008-01-14 (+39d) |  |  | 13d → 0d |  |  |
| 65 | Convert 3D to 2D data | 2007-10-22 → 2007-10-29 (+7d) | 2007-12-21 → 2007-12-28 (+7d) |  |  | 0d → 10.93d |  |  |
| 66 | Creating and save categories | 2007-10-22 → 2007-10-29 (+7d) | 2007-12-03 → 2007-12-10 (+7d) |  |  | 14d → 24.93d |  |  |
| 67 | Automated down load of caDSR models | 2007-10-22 → 2007-10-29 (+7d) | 2007-12-21 → 2007-12-28 (+7d) |  |  | 0d → 10.93d |  |  |
| 68 | Connecting two categories | 2007-10-22 → 2007-10-29 (+7d) | 2007-10-31 → 2007-11-07 (+7d) |  |  | 15d → 25.93d |  |  |
| 69 | New viewers (metadata based) | 2007-10-31 → 2007-11-07 (+7d) | 2007-11-30 → 2007-12-07 (+7d) |  |  | 15d → 25.93d |  |  |
| 70 | ICR | 2007-10-22 → 2007-10-29 (+7d) | 2007-12-17 → 2007-12-24 (+7d) |  |  | 4d → 14.93d |  |  |
| 71 | **Mile Stone 3** | 2007-12-21 → 2008-01-14 (+24d) | 2008-03-18 → 2008-04-09 (+22d) |  |  |  |  |  |
| 72 | configuration of service/instance to query | 2007-12-21 → 2008-01-14 (+24d) | 2008-02-21 → 2008-03-14 (+22d) |  |  |  |  |  |
| 73 | caArray category | 2007-12-21 → 2008-01-14 (+24d) | 2008-02-22 → 2008-03-17 (+24d) |  |  |  |  |  |
| 74 | Remove client jar dependency for Analytical services (AS) | 2007-12-21 → 2008-01-14 (+24d) | 2008-02-08 → 2008-03-03 (+24d) |  |  |  |  |  |
| 75 | Ability to configure the applications used for metadata serach | 2007-12-21 → 2008-01-14 (+24d) | 2008-01-16 → 2008-02-07 (+22d) |  |  |  |  |  |
| 76 | Join data list (data category) | 2007-12-21 → 2008-01-14 (+24d) | 2008-02-01 → 2008-02-25 (+24d) |  |  |  |  |  |
| 77 | New viewers (metadata based) | 2008-01-16 → 2008-02-07 (+22d) | 2008-03-18 → 2008-04-09 (+22d) |  |  |  |  |  |
| 78 | ICR | 2007-12-21 → 2008-01-14 (+24d) | 2008-01-18 → 2008-02-11 (+24d) |  |  |  |  |  |
| 79 | **Mile Stone 4** | 2008-03-18 → 2008-04-09 (+22d) | 2009-03-05 → 2009-03-27 (+22d) |  |  |  |  |  |
| 80 | Relevance based searched | 2008-03-18 → 2008-04-09 (+22d) | 2008-05-06 → 2008-05-28 (+22d) |  |  |  |  |  |
| 81 | pre-defined filters on attributes | 2008-05-06 → 2008-05-28 (+22d) | 2008-06-17 → 2008-07-09 (+22d) |  |  |  |  |  |
| 82 | Return derived classes when searched for base class | 2008-06-17 → 2008-07-09 (+22d) | 2008-07-29 → 2008-08-20 (+22d) |  |  |  |  |  |
| 83 | Asynchronous execution of query | 2008-07-29 → 2008-08-20 (+22d) | 2008-09-30 → 2008-10-22 (+22d) |  |  |  |  |  |
| 84 | Authentication with our own IDP | 2008-09-30 → 2008-10-22 (+22d) | 2008-11-11 → 2008-12-03 (+22d) |  |  |  |  |  |
| 85 | Curating path | 2008-11-11 → 2008-12-03 (+22d) | 2008-12-23 → 2009-01-14 (+22d) |  |  |  |  |  |
| 86 | New viewers (metadata based) | 2008-12-23 → 2009-01-14 (+22d) | 2009-01-22 → 2009-02-13 (+22d) |  |  |  |  |  |
| 87 | Incorporate UE Review comments till date Part 1 | 2009-01-22 → 2009-02-13 (+22d) | 2009-02-19 → 2009-03-13 (+22d) |  |  |  |  |  |
| 88 | Define URLs for selected data for browser window viewer | 2009-02-19 → 2009-03-13 (+22d) | 2009-03-05 → 2009-03-27 (+22d) |  |  |  |  |  |
| 89 | **Mile Stone 5** | 2009-03-05 → 2009-03-27 (+22d) | 2010-07-29 → 2010-08-20 (+22d) |  |  |  |  |  |
| 90 | View the existing data list | 2009-03-05 → 2009-03-27 (+22d) | 2009-04-06 → 2009-04-28 (+22d) |  |  |  |  |  |
| 91 | Paths between categories and class | 2009-04-06 → 2009-04-28 (+22d) | 2009-05-25 → 2009-06-16 (+22d) |  |  |  |  |  |
| 92 | Create Experiments from the multiple existing data list. | 2009-05-25 → 2009-06-16 (+22d) | 2009-06-08 → 2009-06-30 (+22d) |  |  |  |  |  |
| 93 | User friendly names for records | 2009-06-08 → 2009-06-30 (+22d) | 2009-06-29 → 2009-07-21 (+22d) |  |  |  |  |  |
| 94 | parenthesis in DAG | 2009-06-29 → 2009-07-21 (+22d) | 2009-08-17 → 2009-09-08 (+22d) |  |  |  |  |  |

| ID | Task | Start | Finish | Total float |
| --- | --- | --- | --- | --- |
| 95 | Popularity Paths, categories | 2009-08-17 → 2009-09-08 (+22d) | 2009-09-10 → 2009-10-02 (+22d) |  |
| 96 | Edit used path (overriding curated/selected paths) | 2009-09-10 → 2009-10-02 (+22d) | 2009-09-24 → 2009-10-16 (+22d) |  |
| 97 | Define Attribute view | 2009-09-24 → 2009-10-16 (+22d) | 2009-10-08 → 2009-10-30 (+22d) |  |
| 98 | Highlight matched words in search results | 2009-10-08 → 2009-10-30 (+22d) | 2009-10-22 → 2009-11-13 (+22d) |  |
| 99 | Incorporate UE Review comments till date Part 2 | 2009-10-22 → 2009-11-13 (+22d) | 2009-12-03 → 2009-12-25 (+22d) |  |
| 100 | Partial auto connect | 2009-12-03 → 2009-12-25 (+22d) | 2010-02-04 → 2010-02-26 (+22d) |  |
| 101 | Authentication with other IDP | 2010-02-04 → 2010-02-26 (+22d) | 2010-02-25 → 2010-03-19 (+22d) |  |
| 102 | Smart metadata search (Merge CDEs across versions of same application) | 2010-02-25 → 2010-03-19 (+22d) | 2010-04-29 → 2010-05-21 (+22d) |  |
| 103 | Delete data to existing experiment | 2010-04-29 → 2010-05-21 (+22d) | 2010-05-20 → 2010-06-11 (+22d) |  |
| 104 | Add data to existing experiment | 2010-05-20 → 2010-06-11 (+22d) | 2010-06-10 → 2010-07-02 (+22d) |  |
| 105 | While creating data list, ability to add only selected attributes of records | 2010-06-10 → 2010-07-02 (+22d) | 2010-07-29 → 2010-08-20 (+22d) |  |
| 106 | **Mile Stone 6** | 2010-07-29 → 2010-08-20 (+22d) | 2011-07-18 → 2011-08-09 (+22d) |  |
| 107 | Copy/Move experiment | 2010-07-29 → 2010-08-20 (+22d) | 2010-08-19 → 2010-09-10 (+22d) |  |
| 108 | Upgrade technology stack as per caBIG | 2010-08-19 → 2010-09-10 (+22d) | 2010-10-21 → 2010-11-12 (+22d) |  |
| 109 | Keyboard support for application | 2010-10-21 → 2010-11-12 (+22d) | 2010-12-23 → 2011-01-14 (+22d) |  |
| 110 | Automatic resize of application UI for all resolution | 2010-12-23 → 2011-01-14 (+22d) | 2011-02-03 → 2011-02-25 (+22d) |  |
| 111 | Defining category group | 2011-02-03 → 2011-02-25 (+22d) | 2011-03-07 → 2011-03-29 (+22d) |  |
| 112 | Advance view | 2011-03-07 → 2011-03-29 (+22d) | 2011-04-25 → 2011-05-17 (+22d) |  |
| 113 | Incorporate pending UE comments | 2011-04-25 → 2011-05-17 (+22d) | 2011-07-18 → 2011-08-09 (+22d) |  |
| 114 | **Documentaion** | 2011-07-18 → 2011-08-09 (+22d) | 2011-12-05 → 2011-12-27 (+22d) |  |
| 115 | User manual | 2011-07-18 → 2011-08-09 (+22d) | 2011-09-05 → 2011-09-27 (+22d) |  |
| 116 | Design document | 2011-09-05 → 2011-09-27 (+22d) | 2011-10-24 → 2011-11-15 (+22d) |  |
| 117 | Lesson learned document | 2011-10-24 → 2011-11-15 (+22d) | 2011-11-14 → 2011-12-06 (+22d) |  |
| 118 | Web site update | 2011-11-14 → 2011-12-06 (+22d) | 2011-12-05 → 2011-12-27 (+22d) |  |
| 119 | **Release activities** |  | 2008-02-11 → 2008-02-13 (+2d) | 997d → 1008.6d |
| 121 | bug fixing |  | 2007-11-20 → 2007-11-22 (+2d) | 997d → 1008.6d |
| 122 | beta release | 2007-11-21 → 2007-11-23 (+2d) | 2007-11-29 → 2007-12-03 (+4d) | 997d → 1008.6d |
| 123 | Testing by end users | 2007-11-29 → 2007-12-03 (+4d) | 2007-11-29 → 2007-12-03 (+4d) | 997d → 1008.6d |
| 124 | bug fixing (beta and end user bugs) | 2007-11-30 → 2007-12-04 (+4d) | 2008-01-31 → 2008-02-04 (+4d) | 997d → 1008.6d |
| 125 | final release | 2008-02-01 → 2008-02-05 (+4d) | 2008-02-11 → 2008-02-13 (+2d) | 997d → 1008.6d |

## Version 5 (saved 2008-01-02)

Note of the change: Updated Documents

Last finish 2011-12-27 → 2011-10-17 (-71d). Complete tasks 19 → 75.

Added:

| ID | Task | Duration | Start | Finish | Predecessors | Constraint | Resources |
| --- | --- | --- | --- | --- | --- | --- | --- |
| 36 | Deploy release at WashU | 2d | 2007-11-12 A | 2007-11-13 A | 35 | start no earlier than 2007-11-12 | hrishikesh_rajpathak |
| 39 | Service without Security | 10d | 2007-10-03 A | 2007-10-16 A |  | start no earlier than 2007-10-01 | hrishikesh_rajpathak |
| 40 | Investigate secure service + KT | 7d | 2007-10-29 A | 2007-11-07 A |  | start no earlier than 2007-10-29 | hrishikesh_rajpathak |
| 41 | Deploy caTissue 1.2 | 16d | 2007-11-20 A | 2007-12-18 A | 50 |  | hrishikesh_rajpathak |
| 42 | Secure caTissue service | 7d | 2007-12-19 A | 2007-12-27 A |  | start no earlier than 2007-12-20 | chetan_patil |
| 44 | Investigation on secure service + deployment | 7d | 2007-10-30 A | 2007-11-14 A |  | start no earlier than 2007-10-30 | chetan_patil |
| 45 | Making container secure | 3d | 2007-11-15 A | 2007-11-19 A | 44 |  | chetan_patil |
| 46 | Deploy secure service | 4d | 2007-11-20 A | 2007-11-23 A | 45 |  | chetan_patil |
| 47 | Querying secure service | 10d | 2007-11-26 A | 2007-12-07 A | 46 |  | chetan_patil |
| 50 | Verify the mode sytactically (caCORE rules etc) | 4d | 2007-11-14 A | 2007-11-19 A | 36 | start no earlier than 2007-11-19 | hrishikesh_rajpathak |
| 51 | Understand mapping of CNAT model to CNAT cmd line param | 4d | 2007-12-07 A | 2007-12-12 A |  | start no earlier than 2007-12-07 | Jasbir |
| 52 | Convert CNAT service input into files needed by CNAT tool | 3d | 2007-12-13 | 2007-12-17 | 51 |  |  |
| 53 | Call CNAT tool | 2d | 2007-12-18 | 2007-12-19 | 52 |  |  |
| 54 | Understand mapping of CNAT tool op file to CNAT service output | 3d | 2007-12-20 | 2007-12-24 | 53 |  |  |
| 55 | Convert CNAT toold output files to CNAT service output | 3d | 2007-12-25 | 2007-12-27 | 54 |  |  |
| 56 | create service + integrate with tool | 3d | 2008-01-25 | 2008-01-29 | 55, 112 |  | hrishikesh_rajpathak |
| 59 | Design | 2d | 2007-11-15 A | 2007-11-16 A |  | start no earlier than 2007-11-15 | Jasbir |
| 60 | Visualizer design integration | 4d | 2007-11-19 A | 2007-11-22 A | 59 |  |  |
| 61 | Visualizer bug fixes | 5d | 2007-11-23 A | 2007-11-29 A | 60 |  | Rajesh |
| 62 | Design of convert CNAT service output to visualizer input | 6d | 2007-11-30 A | 2007-12-07 A | 61 |  | Rajesh |
| 63 | Coding to convert CNAT service output to visualizer input | 5d | 2007-10-04 | 2007-10-11 |  |  |  |
| 64 | Integration | 2d | 2007-10-04 | 2007-10-08 |  |  |  |
| 66 | **Algorithm Development** | 36d | 2007-10-23 A | 2007-12-13 |  |  |  |
| 67 | Segment Overlap | 4d | 2007-10-23 A | 2007-10-26 A | 92 |  | srinath_k |
| 68 | LOH algorithm | 27d | 2007-10-29 A | 2007-12-13 | 67 | start no earlier than 2007-10-22 | srinath_k |
| 69 | **GenePattern** | 23d | 2007-12-17 A | 2008-01-16 |  |  |  |
| 70 | Install genePattern + understanding | 3d | 2007-12-17 A | 2007-12-19 A | 62 | start no earlier than 2007-12-17 | Rajesh |
| 71 | Run genepattern for sample scenarios (from client and java) | 10d | 2007-12-20 A | 2008-01-09 | 70 |  | Rajesh |
| 72 | Design to convert genepattern service input to tool input | 5d | 2007-12-24 | 2007-12-28 |  | start no earlier than 2007-12-24 | Jasbir |
| 73 | Convert genepattern service input to tool input | 5d | 2008-01-10 | 2008-01-16 | 72, 71 |  | Rajesh |
| 74 | Understanding caGrid analytical service creation | 5d | 2007-12-31 A | 2008-01-04 |  |  | Rajesh |
| 76 | **Knowledge Transfer** | 12d | 2007-10-29 A | 2007-11-15 |  |  |  |
| 77 | Result Screen design + BDQ UI | 0.5d | 2007-10-30 A | 2007-10-30 A |  | start no earlier than 2007-10-30 | Rahul Ner; deepak_shingan |
| 78 | Partial relavance based search | 0.25d | 2007-10-29 A | 2007-10-29 A |  | start no earlier than 2007-10-29 | Rahul Ner; chetan_patil |
| 79 | Java web start | 0.25d | 2007-10-30 A | 2007-10-30 A |  | start no earlier than 2007-10-30 | Rahul Ner [50%]; atul_jawale |
| 81 | Basic CQL query | 2d | 2007-11-14 | 2007-11-15 |  |  | deepak_shingan; srinath_k |
| 82 | **Spreadsheet component** | 38d | 2007-11-12 A | 2008-01-02 A |  |  |  |
| 83 | Spread sheet design | 3d | 2007-11-12 A | 2007-11-14 A |  | start no earlier than 2007-11-05 | Jasbir |
| 84 | Spreadsheet implementation | 4d | 2007-11-19 A | 2007-11-22 A | 59 |  | Jasbir |
| 85 | Incorporate UE review comments | 5d | 2007-11-23 A | 2007-11-29 A | 84 |  | Jasbir |
| 86 | Changes in design | 5d | 2007-11-30 A | 2007-12-06 A | 85 |  | Jasbir |
| 87 | Incorporate comments + resolve bugs | 5d | 2007-12-13 A | 2007-12-21 A | 51 |  | Jasbir |
| 88 | Integration with existing screens | 5d | 2007-12-10 A | 2007-12-14 A | 86 |  | deepak_shingan |
| 89 | UE comments on filters + spreadsheet | 11d | 2007-12-17 A | 2008-01-02 A | 88 |  | deepak_shingan |
| 90 | **Create Data View (CDC by Admin)** | 64d | 2007-10-17 A | 2008-01-16 |  |  |  |
| 93 | coding for backend(category classes changes) | 5d | 2007-10-22 A | 2007-10-26 A | 92 |  | atul_jawale |
| 95 | Integrate with common admin module | 5d | 2008-01-10 | 2008-01-16 | 117 |  | atul_jawale |
| 96 | **Data View** | 49d | 2007-10-31 A | 2008-01-09 |  |  |  |
| 98 | Transform tree to spreadsheet | 1d | 2007-10-31 A | 2007-10-31 A |  |  | atul_jawale |
| 99 | data population for CDC | 5d | 2008-01-03 | 2008-01-09 | 89 |  | deepak_shingan |
| 100 | **Module Setup (Admin)** | 15d | 2007-11-26 A | 2007-12-14 A |  |  |  |
| 101 | Folder structure, Technology, Verify HTML to JSP | 5d | 2007-11-26 A | 2007-11-30 A |  | start no earlier than 2007-11-26 | atul_jawale |
| 102 | Understanding pages, Struts2.0 | 3d | 2007-12-05 A | 2007-12-07 A |  | start no earlier than 2007-12-05 | Lalit |
| 103 | Build script, deployment | 5d | 2007-12-10 A | 2007-12-14 A | 102 |  | Lalit |
| 104 | Bug fixing for Milestone1 | 10d | 2007-11-23 A | 2007-12-28 A |  | start no earlier than 2007-11-23 | deepak_shingan |
| 105 | Migrating to Hibernate-3 DE release | 4d | 2007-12-31 A | 2008-01-03 | 42 | start no earlier than 2007-12-31 | chetan_patil |
| 106 | **Service instance to query (Admin)** | 40d? | 2007-11-30 A | 2008-01-24 |  |  |  |
| 107 | Design | 2d | 2007-11-30 A | 2007-12-03 A |  |  | hrishikesh_rajpathak |
| 108 | UI implementation (JSP) | 5d | 2007-12-03 A | 2007-12-12 A | 107 |  | atul_jawale |
| 109 | Get services using index service | 3d | 2007-12-19 A | 2007-12-21 A | 41 |  | hrishikesh_rajpathak |
| 110 | Pagination component | 3d | 2007-12-13 A | 2007-12-17 A |  | start no earlier than 2007-11-13 | atul_jawale |
| 111 | Design Saving user and admin settings | 2d | 2007-12-24 A | 2007-12-25 A | 107, 109 |  | hrishikesh_rajpathak |
| 112 | Implementation saving user and admin settings | 6d | 2008-01-17 | 2008-01-24 |  | start no earlier than 2008-01-17 | hrishikesh_rajpathak |
| 113 | UE comments + resolution | 5d | 2007-12-18 A | 2007-12-24 A |  | start no earlier than 2007-12-18 | atul_jawale |
| 114 | Changes in existing query building | 1d? | 2008-01-16 | 2008-01-16 |  | start no earlier than 2008-01-14 | hrishikesh_rajpathak |
| 115 | **Creating and save categories (Admin)** | 18d? | 2007-12-25 A | 2008-01-17 |  |  |  |
| 116 | wireframes + understanding | 3d | 2007-12-25 A | 2007-12-27 A | 113 |  | atul_jawale |
| 117 | UI implementation (exception DAG) | 8d | 2007-12-28 A | 2008-01-09 | 116 |  | atul_jawale |
| 118 | Understand Flex based DAG implementation | 10d | 2007-12-25 A | 2008-01-07 | 124 |  | Lalit |
| 119 | Integrate Flex DAG | 8d | 2008-01-08 | 2008-01-17 | 118 |  | Lalit |
| 120 | Understand DE API for category creation | 1d? | 2008-01-07 | 2008-01-07 |  | start no earlier than 2008-01-07 | chetan_patil |
| 121 | Save Category Backend using DE objects | 1d? | 2008-01-08 | 2008-01-08 | 120 |  | chetan_patil |
| 122 | **Loaing caDSR models (Admin)** | 27d | 2007-12-11 A | 2008-01-16 |  |  |  |
| 123 | Wireframes | 1d | 2007-12-17 A | 2007-12-17 A | 103 |  | Lalit |
| 124 | UI Implementation | 5d | 2007-12-18 A | 2007-12-24 A | 123 |  | Lalit |
| 125 | Getting Project Info from caDSR | 4d | 2007-12-11 A | 2008-01-14 | 47 | start no earlier than 2007-12-11 | chetan_patil |
| 126 | Design Interfaces between UI and backend | 2d | 2007-12-26 A | 2007-12-27 A | 111 |  | hrishikesh_rajpathak |
| 127 | Getting model for selected projects | 5d | 2007-12-28 A | 2008-01-04 | 126 |  | hrishikesh_rajpathak |
| 128 | Loading model+ paths (online) | 6d | 2008-01-07 | 2008-01-16 | 127 |  | hrishikesh_rajpathak |
| 129 | **Documentation** | 25d | 2007-11-12 A | 2007-12-14 |  |  |  |
| 130 | Documentation M1 | 8d | 2007-11-14 | 2007-11-23 |  |  |  |
| 131 | Documentation M2 | 15d | 2007-11-26 | 2007-12-14 | 130 |  |  |
| 132 | Save Query Documentation | 1d | 2007-11-12 A | 2007-11-12 A |  | start no earlier than 2007-11-12 | deepak_shingan |
| 133 | **QA tasks** | 48d | 2007-11-21 A | 2008-01-25 |  |  |  |
| 134 | Induction | 3d | 2007-11-21 A | 2007-11-23 A |  |  | Madhumita |
| 135 | QA on milestone 1 | 6d | 2007-11-26 A | 2007-12-03 A | 134 |  | Madhumita |
| 136 | Write Test cases | 12d | 2007-12-10 A | 2008-01-10 | 135 |  | Madhumita |
| 137 | QA cycle | 6d | 2008-01-11 | 2008-01-18 | 136 |  | Madhurima |
| 138 | Bug fixing + deployment | 5d | 2008-01-21 | 2008-01-25 | 137 |  |  |
| 140 | **Home page links** | 1d? | 2007-12-17 | 2007-12-17 |  |  |  |
| 141 | Experiment link | 1d? | 2007-12-17 | 2007-12-17 |  |  |  |
| 142 | Category links | 1d? | 2007-12-17 | 2007-12-17 |  |  |  |
| 143 | Save query | 1d? | 2007-12-17 | 2007-12-17 |  |  |  |
| 144 | **Convert 3D to 2D data** | 1d? | 2007-12-17 | 2007-12-17 |  |  |  |
| 145 | **Admin to specify the transformation** | 1d? | 2007-12-17 | 2007-12-17 |  |  |  |
| 146 | Wireframes | 1d? | 2007-12-17 | 2007-12-17 |  |  |  |
| 147 | UI implementation | 1d? | 2007-12-17 | 2007-12-17 |  |  |  |
| 148 | Save the transformation | 1d? | 2007-12-17 | 2007-12-17 |  |  |  |
| 149 | Transformation backend | 1d? | 2007-12-17 | 2007-12-17 |  |  |  |
| 150 | **Discovering Analytical services dynamically** | 21d | 2007-12-17 | 2008-01-14 |  |  |  |
| 155 | Understand requirement | 1d | 2007-12-17 | 2007-12-17 |  |  |  |
| 166 | Bug fixing | 15d | 2007-12-17 | 2008-01-04 |  |  |  |
| 167 | QA cycle | 5d | 2007-12-17 | 2007-12-21 |  |  |  |

Removed: 16 In experiment context; 22 By Admin; 26 coding for backend; 39 Integrating in cab2b; 47 test with catissue; 50 understand input and output of the tool; 51 finalize input / output model; 54 define input model of the visualizer; 57 Analytical services for micro array data; 65 Convert 3D to 2D data; 66 Creating and save categories; 67 Automated down load of caDSR models; 69 New viewers (metadata based); 72 configuration of service/instance to query; 78 ICR

Changed:

| ID | Task | Start | Finish | Duration | Complete | Total float | Predecessors | Other |
| --- | --- | --- | --- | --- | --- | --- | --- | --- |
| 1 | **caB2B Year 2** |  | 2011-12-27 → 2011-10-17 (-71d) | 1142.6d? → 1090d? | 8% → 22% |  |  |  |
| 2 | **Mile Stone 1** |  | 2007-10-29 → 2007-11-13 (+15d) | 56.67d → 66d | 72% → 98% | 10.93d → 994.87d |  |  |
| 3 | **Saved Query** |  | 2007-10-18 A |  | 74% → 100% | 13d → none |  |  |
| 7 | Regenrate UI (DAG etc) from saved query | 2007-10-04 A | 2007-10-18 A |  | 0% → 100% | 13d → none |  |  |
| 8 | **Parametrized query** |  | 2007-10-04 A |  | 86% → 100% | 0d → none |  |  |
| 12 | develop screen to define parameterized query |  | 2007-09-24 A |  | 85% → 100% | 3.55d → none |  |  |
| 13 | develop screen to execute parameterized query |  | 2007-09-27 A |  | 78% → 100% | 2d → none |  | resources deepak_shingan [164.5%] → deepak_shingan |
| 14 | UI changes to integrate and testing |  | 2007-10-04 A |  | 56% → 100% | 0d → none |  | resources deepak_shingan [120%] → deepak_shingan |
| 15 | **Create Data view (CDCin Experiment)** |  | 2007-10-22 → 2007-09-14 A (-38d) | 51.67d → 28d | 73% → 100% | 10.93d → none |  | was named Create custom data categories |
| 21 | **New viewers (metadata based)** |  | 2007-10-09 A |  | 72% → 100% | 19.6d → none |  |  |
| 22 | design for generic viewer |  | 2007-09-05 A |  | 40% → 100% | 33.46d → none |  |  |
| 23 | **Heat Map viewer** |  | 2007-10-09 A |  | 85% → 100% | 19.6d → none |  |  |
| 26 | implement heat map viewer |  | 2007-10-09 A |  | 70% → 100% | 19.6d → none |  |  |
| 27 | **Spreadsheet Component** |  | 2007-10-08 → 2007-09-03 A (-35d) | 41.2d → 19d | 76% → 100% | 16.04d → none |  |  |
| 35 | QA cycle | 2007-10-22 → 2007-10-29 A (+7d) | 2007-10-29 → 2007-11-02 A (+4d) |  | 0% → 100% | 10.93d → none |  | constraint none → start no earlier than 2007-10-29; resources none → deepak_shingan [50%]; Madhurima [50%] |
| 37 | **Ongoing Features** | 2007-09-24 A → 2007-10-03 A (+9d) | 2007-12-07 → 2008-01-31 (+55d) | 52.6d → 85d | 7% → 66% | 1057d → 967d |  |  |
| 38 | **Providing security credentials fordata services** | 2007-09-24 A → 2007-10-03 A (+9d) | 2007-10-29 → 2007-12-27 A (+59d) | 24d → 60d | 21% → 100% | 1085.6d → none |  | was named Providing security credentials for the data services |
| 43 | **Invoke secure service** | 2007-09-24 A → 2007-10-30 A (+36d) | 2007-10-16 → 2007-12-07 A (+52d) | 14d → 27d | 35% → 100% | 1085.6d → none | 94 → none | was named investigate grid security features; constraint start no earlier than 2007-09-18 → none; resources hrishikesh_rajpathak → none |
| 48 | **ICR** | 2007-10-04 A | 2007-12-07 → 2008-01-31 (+55d) | 46d → 83.4d | 0% → 50% | 0d → 967d |  |  |
| 49 | **CNAT Analytical service** | 2007-10-04 → 2007-11-14 A (+41d) | 2007-12-07 → 2008-01-31 (+55d) | 46d → 57d | 0% → 33% | 0d → 967d |  |  |
| 57 | deploy the service | 2007-10-22 → 2008-01-30 (+100d) | 2007-10-29 → 2008-01-31 (+94d) | 5d → 2d |  | 0d → 967d | finalize input / output model → 56 | resources chetan_patil → hrishikesh_rajpathak |
| 58 | **Visualizer (Copy Number viewer)** | 2007-10-29 → 2007-10-04 A (-25d) |  | 29d → 44.4d | 0% → 35% | 0d → 1006d | 57 → none | was named Visualizer |
| 65 | implementation | 2007-11-02 → 2007-10-04 (-29d) | 2007-12-07 → 2007-11-12 (-25d) |  |  | 0d → 1025.4d | define input model of the visualizer → none | resources chetan_patil → none |
| 75 | **Mile Stone 2** | 2007-10-29 → 2007-10-17 A (-12d) | 2008-01-14 → 2008-01-25 (+11d) | 54.93d → 71d? | 0% → 59% | 0d → 971d |  |  |
| 80 | ICR | 2007-10-29 → 2007-11-02 A (+4d) | 2007-12-24 → 2007-11-02 A (-52d) | 40d → 0.5d | 0% → 100% | 14.93d → none |  | constraint none → start no earlier than 2007-10-31; resources atul_jawale; hrishikesh_rajpathak → Rahul Ner; chandrakant_talele; Jasbir; baseline start 2008-04-16 → none; baseline finish 2008-08-05 → none |
| 91 | develop wireframes | 2007-09-17 A → 2007-11-05 A (+49d) | 2007-09-18 A → 2007-11-13 A (+56d) |  |  |  |  | resources Rahul Ner → chandrakant_talele [50%]; baseline start 2007-09-17 → none; baseline finish 2007-09-17 → none |
| 92 | design backend | 2007-09-17 A → 2007-10-17 A (+30d) | 2007-09-20 → 2007-10-19 A (+29d) | 3.6d → 3d | 45% → 100% | 10.93d → none |  | resources srinath_k → srinath_k [50%]; baseline start 2007-09-17 → none; baseline finish 2007-09-19 → none |
| 94 | deveople screen to create CDC | 2007-09-17 A → 2007-12-13 (+87d) | 2007-09-21 → 2007-12-26 (+96d) | 5d → 10d | 70% → 0% | 29.6d → 993d | none → 108 | constraint none → start no earlier than 2007-12-10; resources hrishikesh_rajpathak → none; baseline start 2007-09-17 → none; baseline finish 2007-09-21 → none |
| 97 | finding matching CDC while opeing experiment | 2007-10-16 → 2007-11-01 A (+16d) | 2007-10-22 → 2007-11-23 A (+32d) | 4.67d → 9d | 0% → 100% | 10.93d → none | coding for backend → none | resources atul_jawale; srinath_k [50%] → atul_jawale; baseline start 2007-09-27 → none; baseline finish 2007-10-08 → none |
| 139 | **Mile Stone 3** | 2008-01-14 → 2007-12-17 (-28d) | 2008-04-09 → 2008-03-11 (-29d) | 62d → 62d? |  |  | 75 → 131 |  |
| 151 | Investigate on AS metadata | 2007-10-29 → 2007-12-17 (+49d) | 2007-11-09 → 2007-12-27 (+48d) |  |  | 33.93d → 41d |  | resources hrishikesh_rajpathak → none |
| 152 | load input output model for service | 2007-11-09 → 2007-12-28 (+49d) | 2007-11-16 → 2008-01-03 (+48d) |  |  | 33.93d → 41d |  | resources hrishikesh_rajpathak → none |
| 153 | test the service | 2007-11-16 → 2008-01-04 (+49d) | 2007-11-27 → 2008-01-14 (+48d) |  |  | 33.93d → 41d |  | resources hrishikesh_rajpathak → none |
| 154 | **Define output view (3rd screen)** | 2007-12-07 → 2007-12-17 (+10d) | 2008-01-14 → 2008-01-23 (+9d) | 26d → 28d |  | 0d → 34d |  |  |
| 156 | develop wireframes | 2007-12-07 → 2007-12-18 (+11d) | 2007-12-10 → 2007-12-19 (+9d) | 1d → 2d |  | 0d → 34d | 48 → 155 | resources chetan_patil → none |
| 157 | develop screen | 2007-12-10 → 2007-12-20 (+10d) | 2007-12-24 → 2008-01-02 (+9d) |  |  | 0d → 34d |  | resources chetan_patil → none |
| 158 | chages in query generation | 2007-12-24 → 2008-01-03 (+10d) | 2008-01-14 → 2008-01-23 (+9d) |  |  | 0d → 34d |  | resources chetan_patil → none |
| 159 | Connecting two categories | 2007-10-29 → 2007-12-17 (+49d) | 2007-11-07 → 2007-12-25 (+48d) |  |  | 25.93d → 55d |  | resources deepak_shingan → none |
| 160 | caArray category | 2008-01-14 → 2007-12-17 (-28d) | 2008-03-17 → 2008-02-15 (-31d) |  |  |  |  | resources deepak_shingan → none |
| 161 | Remove client jar dependency for Analytical services (AS) | 2008-01-14 → 2007-12-17 (-28d) | 2008-03-03 → 2008-02-01 (-31d) |  |  |  |  | resources chetan_patil → none |
| 162 | Ability to configure the applications used for metadata serach | 2008-01-14 → 2007-12-17 (-28d) | 2008-02-07 → 2008-01-09 (-29d) |  |  |  |  | resources Rahul Ner [50%] → none |
| 163 | Join data list (data category) | 2008-01-14 → 2007-12-17 (-28d) | 2008-02-25 → 2008-01-25 (-31d) |  |  |  |  | resources srinath_k [50%] → none |
| 164 | New viewers (metadata based) for ICR | 2008-02-07 → 2008-01-10 (-28d) | 2008-04-09 → 2008-03-11 (-29d) |  |  |  |  | was named New viewers (metadata based); resources Rahul Ner [50%] → none |
| 165 | Authentication with our own IDP | 2008-10-22 → 2007-12-17 (-310d) | 2008-12-03 → 2008-01-25 (-313d) |  |  | 0d → 32d | 172 → none |  |
| 168 | **Mile Stone 4** | 2008-04-09 → 2008-03-12 (-28d) | 2009-03-27 → 2009-01-15 (-71d) | 252d → 222d |  |  |  |  |
| 169 | Relevance based searched | 2008-04-09 → 2008-03-12 (-28d) | 2008-05-28 → 2008-04-29 (-29d) |  |  |  |  |  |
| 170 | pre-defined filters on attributes | 2008-05-28 → 2008-04-30 (-28d) | 2008-07-09 → 2008-06-10 (-29d) |  |  |  |  |  |
| 171 | Return derived classes when searched for base class | 2008-07-09 → 2008-06-11 (-28d) | 2008-08-20 → 2008-07-22 (-29d) |  |  |  |  |  |
| 172 | Asynchronous execution of query | 2008-08-20 → 2008-07-23 (-28d) | 2008-10-22 → 2008-09-23 (-29d) |  |  |  |  |  |
| 173 | Curating path | 2008-12-03 → 2008-09-24 (-70d) | 2009-01-14 → 2008-11-04 (-71d) |  |  |  | 165 → 172 |  |
| 174 | New viewers (metadata based) | 2009-01-14 → 2008-11-05 (-70d) | 2009-02-13 → 2008-12-04 (-71d) |  |  |  |  |  |
| 175 | Incorporate UE Review comments till date Part 1 | 2009-02-13 → 2008-12-05 (-70d) | 2009-03-13 → 2009-01-01 (-71d) |  |  |  |  |  |
| 176 | Define URLs for selected data for browser window viewer | 2009-03-13 → 2009-01-02 (-70d) | 2009-03-27 → 2009-01-15 (-71d) |  |  |  |  |  |
| 177 | **Mile Stone 5** | 2009-03-27 → 2009-01-16 (-70d) | 2010-08-20 → 2010-06-10 (-71d) |  |  |  |  |  |
| 178 | View the existing data list | 2009-03-27 → 2009-01-16 (-70d) | 2009-04-28 → 2009-02-16 (-71d) |  |  |  |  |  |
| 179 | Paths between categories and class | 2009-04-28 → 2009-02-17 (-70d) | 2009-06-16 → 2009-04-06 (-71d) |  |  |  |  |  |
| 180 | Create Experiments from the multiple existing data list. | 2009-06-16 → 2009-04-07 (-70d) | 2009-06-30 → 2009-04-20 (-71d) |  |  |  |  |  |
| 181 | User friendly names for records | 2009-06-30 → 2009-04-21 (-70d) | 2009-07-21 → 2009-05-11 (-71d) |  |  |  |  |  |
| 182 | parenthesis in DAG | 2009-07-21 → 2009-05-12 (-70d) | 2009-09-08 → 2009-06-29 (-71d) |  |  |  |  |  |
| 183 | Popularity Paths, categories | 2009-09-08 → 2009-06-30 (-70d) | 2009-10-02 → 2009-07-23 (-71d) |  |  |  |  |  |
| 184 | Edit used path (overriding curated/selected paths) | 2009-10-02 → 2009-07-24 (-70d) | 2009-10-16 → 2009-08-06 (-71d) |  |  |  |  |  |
| 185 | Define Attribute view | 2009-10-16 → 2009-08-07 (-70d) | 2009-10-30 → 2009-08-20 (-71d) |  |  |  |  |  |
| 186 | Highlight matched words in search results | 2009-10-30 → 2009-08-21 (-70d) | 2009-11-13 → 2009-09-03 (-71d) |  |  |  |  |  |
| 187 | Incorporate UE Review comments till date Part 2 | 2009-11-13 → 2009-09-04 (-70d) | 2009-12-25 → 2009-10-15 (-71d) |  |  |  |  |  |
| 188 | Partial auto connect | 2009-12-25 → 2009-10-16 (-70d) | 2010-02-26 → 2009-12-17 (-71d) |  |  |  |  |  |
| 189 | Authentication with other IDP | 2010-02-26 → 2009-12-18 (-70d) | 2010-03-19 → 2010-01-07 (-71d) |  |  |  |  |  |
| 190 | Smart metadata search (Merge CDEs across versions of same application) | 2010-03-19 → 2010-01-08 (-70d) | 2010-05-21 → 2010-03-11 (-71d) |  |  |  |  |  |
| 191 | Delete data to existing experiment | 2010-05-21 → 2010-03-12 (-70d) | 2010-06-11 → 2010-04-01 (-71d) |  |  |  |  |  |
| 192 | Add data to existing experiment | 2010-06-11 → 2010-04-02 (-70d) | 2010-07-02 → 2010-04-22 (-71d) |  |  |  |  |  |
| 193 | While creating data list, ability to add only selected attributes of records | 2010-07-02 → 2010-04-23 (-70d) | 2010-08-20 → 2010-06-10 (-71d) |  |  |  |  |  |

| ID | Task | Start | Finish | Total float |
| --- | --- | --- | --- | --- |
| 194 | **Mile Stone 6** | 2010-08-20 → 2010-06-11 (-70d) | 2011-08-09 → 2011-05-30 (-71d) |  |
| 195 | Copy/Move experiment | 2010-08-20 → 2010-06-11 (-70d) | 2010-09-10 → 2010-07-01 (-71d) |  |
| 196 | Upgrade technology stack as per caBIG | 2010-09-10 → 2010-07-02 (-70d) | 2010-11-12 → 2010-09-02 (-71d) |  |
| 197 | Keyboard support for application | 2010-11-12 → 2010-09-03 (-70d) | 2011-01-14 → 2010-11-04 (-71d) |  |
| 198 | Automatic resize of application UI for all resolution | 2011-01-14 → 2010-11-05 (-70d) | 2011-02-25 → 2010-12-16 (-71d) |  |
| 199 | Defining category group | 2011-02-25 → 2010-12-17 (-70d) | 2011-03-29 → 2011-01-17 (-71d) |  |
| 200 | Advance view | 2011-03-29 → 2011-01-18 (-70d) | 2011-05-17 → 2011-03-07 (-71d) |  |
| 201 | Incorporate pending UE comments | 2011-05-17 → 2011-03-08 (-70d) | 2011-08-09 → 2011-05-30 (-71d) |  |
| 202 | **Documentaion** | 2011-08-09 → 2011-05-31 (-70d) | 2011-12-27 → 2011-10-17 (-71d) |  |
| 203 | User manual | 2011-08-09 → 2011-05-31 (-70d) | 2011-09-27 → 2011-07-18 (-71d) |  |
| 204 | Design document | 2011-09-27 → 2011-07-19 (-70d) | 2011-11-15 → 2011-09-05 (-71d) |  |
| 205 | Lesson learned document | 2011-11-15 → 2011-09-06 (-70d) | 2011-12-06 → 2011-09-26 (-71d) |  |
| 206 | Web site update | 2011-12-06 → 2011-09-27 (-70d) | 2011-12-27 → 2011-10-17 (-71d) |  |
| 207 | **Release activities** |  | 2008-02-13 → 2008-02-15 (+2d) | 1008.6d → 956d |
| 209 | bug fixing |  | 2007-11-22 → 2007-11-26 (+4d) | 1008.6d → 956d |
| 210 | beta release | 2007-11-23 → 2007-11-27 (+4d) | 2007-12-03 → 2007-12-05 (+2d) | 1008.6d → 956d |
| 211 | Testing by end users | 2007-12-03 → 2007-12-05 (+2d) | 2007-12-03 → 2007-12-05 (+2d) | 1008.6d → 956d |
| 212 | bug fixing (beta and end user bugs) | 2007-12-04 → 2007-12-06 (+2d) | 2008-02-04 → 2008-02-06 (+2d) | 1008.6d → 956d |
| 213 | final release | 2008-02-05 → 2008-02-07 (+2d) | 2008-02-13 → 2008-02-15 (+2d) | 1008.6d → 956d |

## Version 6 (saved 2008-01-15)

Note of the change: Updated till 15 Jan 08

Last finish stays 2011-10-17. Complete tasks 75 → 87.

Added:

| ID | Task | Duration | Start | Finish | Predecessors | Constraint | Resources |
| --- | --- | --- | --- | --- | --- | --- | --- |
| 43 | Deploy Service to Jboss (LSD) | 3d | 2008-01-10 A | 2008-01-14 A |  |  | chetan_patil |
| 91 | Save user columns | 3d | 2008-01-15 | 2008-01-17 | 62 | start no earlier than 2008-01-15 | deepak_shingan |
| 97 | **Update Technology Stack** | 15d | 2007-12-31 A | 2008-01-18 |  |  |  |
| 99 | Test + Report saving Object attributes (Biodatacube) | 2d | 2008-01-08 A | 2008-01-09 A |  | start no earlier than 2008-01-08 | chetan_patil |
| 100 | Jboss 4.0.5 GA | 2d | 2008-01-04 A | 2008-01-07 A |  | start no earlier than 2008-01-04 | chetan_patil |
| 101 | Java 1.6 | 2d | 2008-01-07 A | 2008-01-08 A |  | start no earlier than 2008-01-07 | Lalit |
| 102 | Flex Training | 5d | 2008-01-14 A | 2008-01-18 |  | start no earlier than 2008-01-14 | Lalit [50%] |
| 126 | Search in model UI | 3d | 2008-01-09 A | 2008-01-11 A |  | start no earlier than 2008-01-09 | Lalit |
| 127 | UE Comments + enhancements | 5d | 2008-01-14 A | 2008-01-18 | 126 |  | Lalit [50%] |
| 140 | Requirment Clarification | 3d | 2008-01-08 A | 2008-01-10 A |  |  | deepak_shingan |

Changed:

| ID | Task | Start | Finish | Duration | Complete | Total float | Predecessors | Other |
| --- | --- | --- | --- | --- | --- | --- | --- | --- |
| 1 | **caB2B Year 2** |  |  |  | 22% → 23% |  |  |  |
| 37 | **Ongoing Features** |  |  |  | 66% → 67% |  |  |  |
| 38 | **Providing security credentials fordata services** |  | 2007-12-27 A → 2008-01-14 A (+18d) | 60d → 72d |  |  |  |  |
| 57 | create service + integrate with tool |  |  |  |  |  | 56, 109 → 56, 111 |  |
| 68 | Segment Overlap |  |  |  |  |  | 142 → none |  |
| 75 | Understanding caGrid analytical service creation |  | 2008-01-04 A |  | 60% → 100% | 986d → none |  |  |
| 76 | **Mile Stone 2** | 2007-10-17 A → 2007-10-29 A (+12d) | 2008-01-25 → 2008-01-29 (+4d) | 71d? → 65d | 59% → 66% | 971d → 969d |  |  |
| 77 | **Knowledge Transfer** |  | 2007-11-15 → 2008-01-14 A (+60d) | 12d → 54d | 43% → 100% | 1022d → none |  |  |
| 82 | Basic CQL query | 2007-11-14 → 2008-01-11 A (+58d) | 2007-11-15 → 2008-01-14 A (+60d) |  | 0% → 100% | 1022d → none | none → 140 |  |
| 83 | **Spreadsheet component** |  | 2008-01-02 A → 2008-01-17 (+15d) | 38d → 49d | 100% → 93% | none → 977d |  |  |
| 98 | Migrating to Hibernate-3 DE release |  | 2008-01-03 A |  | 75% → 100% | 987d → none |  |  |
| 103 | **Service instance to query (Admin)** |  |  | 40d? → 40d | 74% → 77% | 972d → 967d |  |  |
| 109 | Implementation saving user and admin settings |  | 2008-01-24 → 2008-01-22 (-2d) | 6d → 4d |  | 967d → 969d | none → 125 |  |
| 111 | Changes in existing query building | 2008-01-16 → 2008-01-23 (+7d) | 2008-01-16 → 2008-01-24 (+8d) | 1d? → 2d |  | 978d → 972d | none → 109 |  |
| 112 | **Creating and save categories (Admin)** |  | 2008-01-17 → 2008-01-29 (+12d) | 18d? → 26d | 45% → 44% | 977d → 969d |  |  |
| 115 | Understand Flex based DAG implementation |  | 2008-01-07 → 2008-01-23 (+16d) | 10d → 12d | 70% → 75% | 977d → 965d |  |  |
| 116 | Integrate Flex DAG | 2008-01-08 → 2008-01-24 (+16d) | 2008-01-17 → 2008-01-29 (+12d) | 8d → 4d |  | 977d → 969d |  |  |
| 117 | Understand DE API for category creation | 2008-01-07 → 2008-01-16 (+9d) | 2008-01-07 → 2008-01-21 (+14d) | 1d? → 4d |  | 984d → 970d |  | constraint start no earlier than 2008-01-07 → start no earlier than 2008-01-16 |
| 118 | Save Category Backend using DE objects | 2008-01-08 → 2008-01-22 (+14d) | 2008-01-08 → 2008-01-28 (+20d) | 1d? → 5d |  | 984d → 970d |  |  |
| 119 | **Loaing caDSR models (Admin)** |  | 2008-01-16 → 2008-01-18 (+2d) | 27d → 29d | 61% → 90% | 978d → 976d |  |  |
| 122 | Getting Project Info from caDSR |  | 2008-01-14 → 2008-01-15 A (+1d) |  | 75% → 100% | 980d → none |  |  |
| 124 | Getting model for selected projects |  | 2008-01-04 A |  | 60% → 100% | 980d → none |  |  |
| 125 | Loading model+ paths (online) | 2008-01-07 A | 2008-01-16 A |  | 0% → 100% | 978d → none |  |  |
| 138 | **Mile Stone 3** | 2007-12-17 → 2007-10-17 A (-61d) |  | 62d? → 103d? | 0% → 7% |  |  |  |
| 139 | **Create Data View (CDC by Admin)** |  |  |  | 39% → 45% | 978d → 39d |  |  |
| 141 | develop wireframes |  |  |  |  |  |  | constraint none → finish no earlier than 2007-11-13 |
| 142 | design backend |  |  |  |  |  |  | constraint none → start no earlier than 2007-10-17 |
| 143 | coding for backend(category classes changes) |  |  |  |  |  |  | constraint none → start no earlier than 2007-10-22 |
| 144 | deveople screen to create CDC | 2007-12-13 → 2007-12-17 (+4d) | 2007-12-26 → 2007-12-28 (+2d) |  |  | 993d → 52d | 105 → none | constraint start no earlier than 2007-12-10 → start no earlier than 2007-12-13 |
| 145 | Integrate with common admin module |  |  |  |  | 978d → 39d | 114 → none | constraint none → start no earlier than 2008-01-10; resources atul_jawale → none |
| 146 | **Data View** |  | 2008-01-09 → 2008-02-01 (+23d) | 49d → 66d |  | 983d → 27d |  |  |
| 147 | finding matching CDC while opeing experiment |  |  |  |  |  |  | constraint none → finish no earlier than 2007-11-23 |
| 148 | Transform tree to spreadsheet |  |  |  |  |  |  | constraint none → start no earlier than 2007-10-31 |
| 149 | data population for CDC | 2008-01-03 → 2008-01-28 (+25d) | 2008-01-09 → 2008-02-01 (+23d) |  |  | 983d → 27d | 90 → none | constraint none → start no earlier than 2008-01-28 |

## Version 7 (saved 2008-01-15)

Note of the change: added task in M3 : Load model offline support

Last finish stays 2011-10-17.

Added:

| ID | Task | Duration | Start | Finish |
| --- | --- | --- | --- | --- |
| 139 | Load model offline support | 1d? | 2007-12-17 | 2007-12-17 |

## Version 8 (saved 2008-01-21)

Note of the change: Updated till 21 Jan 08

Last finish stays 2011-10-17. Complete tasks 87 → 91.

Added:

| ID | Task | Duration | Start | Finish | Predecessors | Constraint | Resources |
| --- | --- | --- | --- | --- | --- | --- | --- |
| 76 | Resolving Introduce model to service conversion issues | 4d | 2008-01-16 A | 2008-01-21 A |  | start no earlier than 2008-01-16 | Rajesh |
| 129 | Wait +feedback page | 7d | 2008-01-10 A | 2008-01-18 A | 115 |  | atul_jawale |

Changed:

| ID | Task | Start | Finish | Duration | Complete | Total float | Other |
| --- | --- | --- | --- | --- | --- | --- | --- |
| 1 | **caB2B Year 2** |  |  |  | 23% → 25% |  |  |
| 37 | **Ongoing Features** |  |  |  | 67% → 70% |  |  |
| 38 | **Providing security credentials fordata services** |  | 2008-01-14 A → 2008-01-22 (+8d) | 72d → 78d | 100% → 99% | none → 974d |  |
| 43 | Deploy Service to Jboss (LSD) |  | 2008-01-14 A → 2008-01-22 (+8d) | 3d → 9d | 100% → 90% | none → 974d |  |
| 49 | **ICR** |  |  |  | 50% → 54% |  |  |
| 70 | **GenePattern** |  | 2008-01-16 → 2008-01-25 (+9d) | 23d → 30d | 43% → 65% | 978d → 971d |  |
| 72 | Run genepattern for sample scenarios (from client and java) |  | 2008-01-09 A |  | 70% → 100% | 978d → none |  |
| 74 | Convert genepattern service input to tool input | 2008-01-10 A | 2008-01-16 → 2008-01-25 (+9d) | 5d → 8d | 0% → 50% | 978d → 971d |  |
| 77 | **Mile Stone 2** |  | 2008-01-29 → 2008-02-04 (+6d) | 65d → 69d | 66% → 71% | 969d → 965d |  |
| 84 | **Spreadsheet component** |  | 2008-01-17 → 2008-01-23 (+6d) | 49d → 53d | 93% → 98% | 977d → 973d |  |
| 92 | Save user columns | 2008-01-15 A | 2008-01-17 → 2008-01-23 (+6d) | 3d → 7d | 0% → 86% | 977d → 973d |  |
| 113 | **Creating and save categories (Admin)** |  | 2008-01-29 → 2008-02-04 (+6d) | 26d → 30d | 44% → 56% | 969d → 965d |  |
| 115 | UI implementation (exception DAG) |  | 2008-01-09 A |  | 50% → 100% | 983d → none |  |
| 118 | Understand DE API for category creation | 2008-01-16 → 2008-01-23 (+7d) | 2008-01-21 → 2008-01-28 (+7d) |  |  | 970d → 965d | constraint start no earlier than 2008-01-16 → start no earlier than 2008-01-23 |
| 119 | Save Category Backend using DE objects | 2008-01-22 → 2008-01-29 (+7d) | 2008-01-28 → 2008-02-04 (+7d) |  |  | 970d → 965d |  |
| 120 | **Loaing caDSR models (Admin)** |  | 2008-01-18 A |  | 90% → 100% | 976d → none |  |
| 128 | UE Comments + enhancements |  | 2008-01-18 A |  | 40% → 100% | 976d → none | resources Lalit [50%] → Lalit |
